task_id,proj_id,wbs_id,clndr_id,phys_complete_pct,rev_fdbk_flag,est_wt,lock_plan_flag,auto_compute_act_flag,complete_pct_type,task_type,duration_type,status_code,task_code,task_name,rsrc_id,total_float_hr_cnt,free_float_hr_cnt,remain_drtn_hr_cnt,act_work_qty,remain_work_qty,target_work_qty,target_drtn_hr_cnt,target_equip_qty,act_equip_qty,remain_equip_qty,cstr_date,act_start_date,act_end_date,late_start_date,late_end_date,expect_end_date,early_start_date,early_end_date,restart_date,reend_date,target_start_date,target_end_date,rem_late_start_date,rem_late_end_date,cstr_type,priority_type,suspend_date,resume_date,float_path,float_path_order,guid,tmpl_guid,cstr_date2,cstr_type2,driving_path_flag,act_this_per_work_qty,act_this_per_equip_qty,external_early_start_date,external_late_end_date,create_date,update_date,create_user,update_user,location_id
141166,27164,54782,178,0,N,1,N,N,CP_Drtn,TT_Task,DT_FixedDUR2,TK_NotStart,SCO1000,Bundling / Phasing of circuits for project sequencing,,0,0,80,0,0,0,80,0,0,0,2023-07-03 00:00,,,2023-07-03 08:00,2023-07-17 16:00,,2023-07-03 08:00,2023-07-17 16:00,2023-07-03 08:00,2023-07-17 16:00,2023-07-03 08:00,2023-07-17 16:00,2023-07-03 08:00,2023-07-17 16:00,CS_MSOA,PT_Normal,,,,,p/G9q1S7XU+OqCyxya5vIA,UJjuaNL6SEi7r5Yn69vahA,,,Y,0,0,,,2023-02-08 18:30,2023-02-08 18:31,NotPrmUser,NotPrmUser,
141167,27164,54782,178,0,N,1,N,N,CP_Drtn,TT_Task,DT_FixedDUR2,TK_NotStart,SCO1010,Constructability Review,,0,0,40,0,0,0,40,0,0,0,,,,2023-07-18 08:00,2023-07-24 16:00,,2023-07-18 08:00,2023-07-24 16:00,2023-07-18 08:00,2023-07-24 16:00,2023-07-18 08:00,2023-07-24 16:00,2023-07-18 08:00,2023-07-24 16:00,,PT_Normal,,,,,ReeSZLqrAk2F8ze/A6S9Kw,CG/UvRRQ0kKwwXtUZSTJZA,,,Y,0,0,,,2023-02-08 18:30,2023-02-08 18:31,NotPrmUser,NotPrmUser,
141168,27164,54782,178,0,N,1,N,N,CP_Drtn,TT_Task,DT_FixedDUR2,TK_NotStart,SCO1020,SDG&E Review,,0,0,16,0,0,0,16,0,0,0,,,,2023-07-25 08:00,2023-07-26 16:00,,2023-07-25 08:00,2023-07-26 16:00,2023-07-25 08:00,2023-07-26 16:00,2023-07-25 08:00,2023-07-26 16:00,2023-07-25 08:00,2023-07-26 16:00,,PT_Normal,,,,,SsGDh3RazE6nrVe5kBxrSA,wAXZeb3RvUWInuZ0vOWywQ,,,Y,0,0,,,2023-02-08 18:30,2023-02-08 18:31,NotPrmUser,NotPrmUser,
141169,27164,54783,178,0,N,1,N,N,CP_Drtn,TT_Task,DT_FixedDUR2,TK_NotStart,PLA1000,Workorder Setup,,0,0,40,0,0,0,40,0,0,0,,,,2023-07-27 08:00,2023-08-02 16:00,,2023-07-27 08:00,2023-08-02 16:00,2023-07-27 08:00,2023-08-02 16:00,2023-07-27 08:00,2023-08-02 16:00,2023-07-27 08:00,2023-08-02 16:00,,PT_Normal,,,,,t4G25SBIQEWa16MhSCFHtg,2nQLorlKHUSlsyRyBzMwLg,,,Y,0,0,,,2023-02-08 18:30,2023-02-08 18:31,NotPrmUser,NotPrmUser,
141170,27164,54786,178,0,N,1,N,N,CP_Drtn,TT_Task,DT_FixedDUR2,TK_NotStart,DES1040,10% Submittal,,0,0,200,0,0,0,200,0,0,0,,,,2023-10-12 08:00,2023-11-15 16:00,,2023-10-12 08:00,2023-11-15 16:00,2023-10-12 08:00,2023-11-15 16:00,2023-10-12 08:00,2023-11-15 16:00,2023-10-12 08:00,2023-11-15 16:00,,PT_Normal,,,,,lhUUbmmlz0qBlW6U2UJ5GQ,lkILpi3jsECEqBMIGWirgQ,,,Y,0,0,,,2023-02-08 18:30,2023-02-08 18:31,NotPrmUser,NotPrmUser,
141171,27164,54786,178,0,N,1,N,N,CP_Drtn,TT_Task,DT_FixedDUR2,TK_NotStart,DES1050,30% Submittal,,0,0,400,0,0,0,400,0,0,0,,,,2023-11-16 08:00,2024-01-31 16:00,,2023-11-16 08:00,2024-01-31 16:00,2023-11-16 08:00,2024-01-31 16:00,2023-11-16 08:00,2024-01-31 16:00,2023-11-16 08:00,2024-01-31 16:00,,PT_Normal,,,,,9Jud0Zi0YUqGxndCJq1nFw,eyVqv558MEyC1wT4hwvUFQ,,,Y,0,0,,,2023-02-08 18:30,2023-02-08 18:31,NotPrmUser,NotPrmUser,
141172,27164,54786,178,0,N,1,N,N,CP_Drtn,TT_Task,DT_FixedDUR2,TK_NotStart,DES1060,30% Review,,0,0,80,0,0,0,80,0,0,0,,,,2024-02-01 08:00,2024-02-14 16:00,,2024-02-01 08:00,2024-02-14 16:00,2024-02-01 08:00,2024-02-14 16:00,2024-02-01 08:00,2024-02-14 16:00,2024-02-01 08:00,2024-02-14 16:00,,PT_Normal,,,,,X0jcY4xucECL2PHOjdzm7Q,3/fAvhn7U0yLjm/7EvavKQ,,,Y,0,0,,,2023-02-08 18:30,2023-02-08 18:31,NotPrmUser,NotPrmUser,
141173,27164,54786,178,0,N,1,N,N,CP_Drtn,TT_Task,DT_FixedDUR2,TK_NotStart,DES1070,60% Submittal (60 taking less tahn 30%),,600,0,560,0,0,0,560,0,0,0,,,,2024-05-30 08:00,2024-09-04 16:00,,2024-02-15 08:00,2024-05-22 16:00,2024-02-15 08:00,2024-05-22 16:00,2024-02-15 08:00,2024-05-22 16:00,2024-05-30 08:00,2024-09-04 16:00,,PT_Normal,,,,,Z79egalxJkuY/4EawqdWUA,CE/72uy8nkGLiZAVDar6aQ,,,N,0,0,,,2023-02-08 18:30,2023-02-08 18:31,NotPrmUser,NotPrmUser,
141174,27164,54786,178,0,N,1,N,N,CP_Drtn,TT_Task,DT_FixedDUR2,TK_NotStart,DES1080,60% Review (check env reviews at 30 and 60),,600,0,80,0,0,0,80,0,0,0,,,,2024-09-05 08:00,2024-09-18 16:00,,2024-05-23 08:00,2024-06-05 16:00,2024-05-23 08:00,2024-06-05 16:00,2024-05-23 08:00,2024-06-05 16:00,2024-09-05 08:00,2024-09-18 16:00,,PT_Normal,,,,,GILGRV1ZekK01ZrkTfAJsQ,DCJwPZ3pzEyb//dCGK++bQ,,,N,0,0,,,2023-02-08 18:30,2023-02-08 18:31,NotPrmUser,NotPrmUser,
141175,27164,54786,178,0,N,1,N,N,CP_Drtn,TT_Task,DT_FixedDUR2,TK_NotStart,DES1090,90% Submittal,,600,0,360,0,0,0,360,0,0,0,,,,2024-09-19 08:00,2024-11-20 16:00,,2024-06-06 08:00,2024-08-07 16:00,2024-06-06 08:00,2024-08-07 16:00,2024-06-06 08:00,2024-08-07 16:00,2024-09-19 08:00,2024-11-20 16:00,,PT_Normal,,,,,swia9onImE20l/KUkPnizA,C2FOBsWNhkC2yDZp5ophyg,,,N,0,0,,,2023-02-08 18:30,2023-02-08 18:31,NotPrmUser,NotPrmUser,
141176,27164,54786,178,0,N,1,N,N,CP_Drtn,TT_Task,DT_FixedDUR2,TK_NotStart,DES1100,90% Review - 20 days review,,600,0,80,0,0,0,80,0,0,0,,,,2024-11-21 08:00,2024-12-04 16:00,,2024-08-08 08:00,2024-08-21 16:00,2024-08-08 08:00,2024-08-21 16:00,2024-08-08 08:00,2024-08-21 16:00,2024-11-21 08:00,2024-12-04 16:00,,PT_Normal,,,,,dG7od/hmzUSLyk/tSj6UUw,oUOWVLVkj0qmk6bbY3JOXQ,,,N,0,0,,,2023-02-08 18:30,2023-02-08 18:31,NotPrmUser,NotPrmUser,
141177,27164,54786,178,0,N,1,N,N,CP_Drtn,TT_Task,DT_FixedDUR2,TK_NotStart,DES1110,100% Submittal,,680,0,160,0,0,0,160,0,0,0,,,,2024-12-19 08:00,2025-01-15 16:00,,2024-08-22 08:00,2024-09-18 16:00,2024-08-22 08:00,2024-09-18 16:00,2024-08-22 08:00,2024-09-18 16:00,2024-12-19 08:00,2025-01-15 16:00,,PT_Normal,,,,,3Bek8gSCzkSpYdNZIMLs8A,057QYhYmf029ZDEs4064Dg,,,N,0,0,,,2023-02-08 18:30,2023-02-08 18:31,NotPrmUser,NotPrmUser,
141178,27164,54786,178,0,N,1,N,N,CP_Drtn,TT_Task,DT_FixedDUR2,TK_NotStart,DES1120,Issue IFC Design Package,,680,680,80,0,0,0,80,0,0,0,,,,2025-01-16 08:00,2025-01-29 16:00,,2024-09-19 08:00,2024-10-02 16:00,2024-09-19 08:00,2024-10-02 16:00,2024-09-19 08:00,2024-10-02 16:00,2025-01-16 08:00,2025-01-29 16:00,,PT_Normal,,,,,Vpc3ATyp9Ui9UxajcxgAUA,mvhJnQnDuUim7+7D4BMMFQ,,,N,0,0,,,2023-02-08 18:30,2023-02-08 18:31,NotPrmUser,NotPrmUser,
141179,27164,54787,178,0,N,1,N,N,CP_Drtn,TT_Task,DT_FixedDUR2,TK_NotStart,DES1130,60% Submittal,,640,0,480,0,0,0,480,0,0,0,,,,2024-05-09 08:00,2024-07-31 16:00,,2024-01-18 08:00,2024-04-10 16:00,2024-01-18 08:00,2024-04-10 16:00,2024-01-18 08:00,2024-04-10 16:00,2024-05-09 08:00,2024-07-31 16:00,,PT_Normal,,,,,DnbhUyj66E2I1QU5bfutig,TGAd8oYBgUOIhfpPX+Z4FA,,,N,0,0,,,2023-02-08 18:30,2023-02-08 18:31,NotPrmUser,NotPrmUser,
141180,27164,54787,178,0,N,1,N,N,CP_Drtn,TT_Task,DT_FixedDUR2,TK_NotStart,DES1140,60% Review,,880,0,80,0,0,0,80,0,0,0,,,,2024-09-12 08:00,2024-09-25 16:00,,2024-04-11 08:00,2024-04-24 16:00,2024-04-11 08:00,2024-04-24 16:00,2024-04-11 08:00,2024-04-24 16:00,2024-09-12 08:00,2024-09-25 16:00,,PT_Normal,,,,,d1LsbePO6UKsS+53PEdzOw,NpUnSl5xf0WyLpp+y8c1Ug,,,N,0,0,,,2023-02-08 18:30,2023-02-08 18:31,NotPrmUser,NotPrmUser,
141181,27164,54787,178,0,N,1,N,N,CP_Drtn,TT_Task,DT_FixedDUR2,TK_NotStart,DES1150,90% Submittal,,1120,0,400,0,0,0,400,0,0,0,,,,2024-11-07 08:00,2025-01-15 16:00,,2024-04-25 08:00,2024-07-03 16:00,2024-04-25 08:00,2024-07-03 16:00,2024-04-25 08:00,2024-07-03 16:00,2024-11-07 08:00,2025-01-15 16:00,,PT_Normal,,,,,5B0KcGy+eE2VHRw/B6tiXA,FiUWsIvI80Gm3KS5x5eG8A,,,N,0,0,,,2023-02-08 18:30,2023-02-08 18:31,NotPrmUser,NotPrmUser,
141182,27164,54787,178,0,N,1,N,N,CP_Drtn,TT_Task,DT_FixedDUR2,TK_NotStart,DES1160,90% Review,,1120,0,80,0,0,0,80,0,0,0,,,,2025-01-16 08:00,2025-01-29 16:00,,2024-07-04 08:00,2024-07-17 16:00,2024-07-04 08:00,2024-07-17 16:00,2024-07-04 08:00,2024-07-17 16:00,2025-01-16 08:00,2025-01-29 16:00,,PT_Normal,,,,,/ObyqQvtlUaIU8VuWeqT3A,73ox+ebTiUOBx0He+BfE7A,,,N,0,0,,,2023-02-08 18:30,2023-02-08 18:31,NotPrmUser,NotPrmUser,
141183,27164,54787,178,0,N,1,N,N,CP_Drtn,TT_Task,DT_FixedDUR2,TK_NotStart,DES1170,100% Submittal,,1120,880,160,0,0,0,160,0,0,0,,,,2025-01-30 08:00,2025-02-26 16:00,,2024-07-18 08:00,2024-08-14 16:00,2024-07-18 08:00,2024-08-14 16:00,2024-07-18 08:00,2024-08-14 16:00,2025-01-30 08:00,2025-02-26 16:00,,PT_Normal,,,,,tzyhE0XTYU2H79qIyR30Gg,Q2j9Pd8RWkmmMLuOuxgptQ,,,N,0,0,,,2023-02-08 18:30,2023-02-08 18:31,NotPrmUser,NotPrmUser,
141184,27164,54787,178,0,N,1,N,N,CP_Drtn,TT_Task,DT_FixedDUR2,TK_NotStart,DES1180,Issue IFC Design Package,,240,0,80,0,0,0,80,0,0,0,,,,2025-02-27 08:00,2025-03-12 16:00,,2025-01-16 08:00,2025-01-29 16:00,2025-01-16 08:00,2025-01-29 16:00,2025-01-16 08:00,2025-01-29 16:00,2025-02-27 08:00,2025-03-12 16:00,,PT_Normal,,,,,OTJde+SzSEOo0GdAo6w18g,3/adxHRWBUOshsFYhPVL4Q,,,N,0,0,,,2023-02-08 18:30,2023-02-08 18:31,NotPrmUser,NotPrmUser,
141185,27164,54788,178,0,N,1,N,N,CP_Drtn,TT_Task,DT_FixedDUR2,TK_NotStart,DES1190,Issue Services Worksheet to Design Firms,,640,0,160,0,0,0,160,0,0,0,,,,2024-03-14 08:00,2024-04-10 16:00,,2023-11-16 08:00,2023-12-15 16:00,2023-11-16 08:00,2023-12-15 16:00,2023-11-16 08:00,2023-12-15 16:00,2024-03-14 08:00,2024-04-10 16:00,,PT_Normal,,,,,fbrBQpYKPEGKojkWpi+PQw,jWBa0INtYEqNs2DdNn4DVg,,,N,0,0,,,2023-02-08 18:30,2023-02-08 18:31,NotPrmUser,NotPrmUser,
141186,27164,54789,178,0,N,1,N,N,CP_Drtn,TT_Task,DT_FixedDUR2,TK_NotStart,DES1220,SED Design,,6376,0,240,0,0,0,240,0,0,0,,,,2026-11-09 08:00,2026-12-18 16:00,,2023-10-12 08:00,2023-11-22 16:00,2023-10-12 08:00,2023-11-22 16:00,2023-10-12 08:00,2023-11-22 16:00,2026-11-09 08:00,2026-12-18 16:00,,PT_Normal,,,,,ukey+VR1SUKORbVWm1Dttw,ZcFgUGOIukmcE0okTudoYg,,,N,0,0,,,2023-02-08 18:30,2023-02-08 18:31,NotPrmUser,NotPrmUser,
141187,27164,54789,178,0,N,1,N,N,CP_Drtn,TT_Task,DT_FixedDUR2,TK_NotStart,DES1230,Issue IFC Design Package,,6376,5320,160,0,0,0,160,0,0,0,,,,2026-12-21 08:00,2027-01-15 16:00,,2023-11-27 08:00,2023-12-26 16:00,2023-11-27 08:00,2023-12-26 16:00,2023-11-27 08:00,2023-12-26 16:00,2026-12-21 08:00,2027-01-15 16:00,,PT_Normal,,,,,tpcjCv4HnUyYdROiYYSo8Q,mToT1AWCAU2o/bfgxafLEw,,,N,0,0,,,2023-02-08 18:30,2023-02-08 18:31,NotPrmUser,NotPrmUser,
141188,27164,54791,178,0,N,1,N,N,CP_Drtn,TT_Task,DT_FixedDUR2,TK_NotStart,PRO1000,Civil BOM - Long Lead @ 30%,,680,0,120,0,0,0,120,0,0,0,,,,2024-06-13 08:00,2024-07-03 16:00,,2024-02-15 08:00,2024-03-06 16:00,2024-02-15 08:00,2024-03-06 16:00,2024-02-15 08:00,2024-03-06 16:00,2024-06-13 08:00,2024-07-03 16:00,,PT_Normal,,,,,eS30vz+jk06G2qGmFlprnQ,gSQ37bNl2kipoID5Adq4Eg,,,N,0,0,,,2023-02-08 18:30,2023-02-08 18:31,NotPrmUser,NotPrmUser,
141189,27164,54791,178,0,N,1,N,N,CP_Drtn,TT_Task,DT_FixedDUR2,TK_NotStart,PRO1020,Electrical BOM - Long Lead @ 60%,,920,0,120,0,0,0,120,0,0,0,,,,2024-10-03 08:00,2024-10-23 16:00,,2024-04-25 08:00,2024-05-15 16:00,2024-04-25 08:00,2024-05-15 16:00,2024-04-25 08:00,2024-05-15 16:00,2024-10-03 08:00,2024-10-23 16:00,,PT_Normal,,,,,Uw/nVPxUb06uidkpf+igKw,lL62srRvUkece6pvohjT0w,,,N,0,0,,,2023-02-08 18:30,2023-02-08 18:31,NotPrmUser,NotPrmUser,
141190,27164,54791,178,0,N,1,N,N,CP_Drtn,TT_Task,DT_FixedDUR2,TK_NotStart,PRO1040,BOM - Short Lead @ 60%,,600,0,120,0,0,0,120,0,0,0,,,,2024-12-05 08:00,2024-12-25 16:00,,2024-08-22 08:00,2024-09-11 16:00,2024-08-22 08:00,2024-09-11 16:00,2024-08-22 08:00,2024-09-11 16:00,2024-12-05 08:00,2024-12-25 16:00,,PT_Normal,,,,,BkKvK6cao0eMioghvgqT9g,EhasyDNjnE+RctaYiwqWXw,,,N,0,0,,,2023-02-08 18:30,2023-02-08 18:31,NotPrmUser,NotPrmUser,
141191,27164,54792,178,0,N,1,N,N,CP_Drtn,TT_Task,DT_FixedDUR2,TK_NotStart,PER1000,CalTrans Permit,,0,0,2000,0,0,0,2000,0,0,0,,,,2024-02-15 08:00,2025-01-29 16:00,,2024-02-15 08:00,2025-01-29 16:00,2024-02-15 08:00,2025-01-29 16:00,2024-02-15 08:00,2025-01-29 16:00,2024-02-15 08:00,2025-01-29 16:00,,PT_Normal,,,,,ESYN0jjb6E+OUeYe9XLQIw,FUsJTnrLZ06TpXqZgF7zKQ,,,Y,0,0,,,2023-02-08 18:30,2023-02-08 18:31,NotPrmUser,NotPrmUser,
141192,27164,54792,178,0,N,1,N,N,CP_Drtn,TT_Task,DT_FixedDUR2,TK_NotStart,PER1010,City & County Permits,,1200,1200,800,0,0,0,800,0,0,0,,,,2024-09-12 08:00,2025-01-29 16:00,,2024-02-15 08:00,2024-07-03 16:00,2024-02-15 08:00,2024-07-03 16:00,2024-02-15 08:00,2024-07-03 16:00,2024-09-12 08:00,2025-01-29 16:00,,PT_Normal,,,,,t71jms8qZUW6IrZQ1DCfQw,Q2gS6QDsNU2rbVuW/TeQ6A,,,N,0,0,,,2023-02-08 18:30,2023-02-08 18:31,NotPrmUser,NotPrmUser,
141193,27164,54792,178,0,N,1,N,N,CP_Drtn,TT_Task,DT_FixedDUR2,TK_NotStart,PER1020,Other Permit (TBD),,1200,1200,800,0,0,0,800,0,0,0,,,,2024-09-12 08:00,2025-01-29 16:00,,2024-02-15 08:00,2024-07-03 16:00,2024-02-15 08:00,2024-07-03 16:00,2024-02-15 08:00,2024-07-03 16:00,2024-09-12 08:00,2025-01-29 16:00,,PT_Normal,,,,,3T7bjPC5MEarU4p/SFnL+Q,TqdJVLrO/0m5/rVsRs5ebw,,,N,0,0,,,2023-02-08 18:30,2023-02-08 18:31,NotPrmUser,NotPrmUser,
141194,27164,54793,178,0,N,1,N,N,CP_Drtn,TT_Task,DT_FixedDUR2,TK_NotStart,PUB1000,Public Affairs / Community Outreach,,6216,6216,800,0,0,0,800,0,0,0,,,,2027-05-17 08:00,2027-10-01 16:00,,2024-05-23 08:00,2024-10-09 16:00,2024-05-23 08:00,2024-10-09 16:00,2024-05-23 08:00,2024-10-09 16:00,2027-05-17 08:00,2027-10-01 16:00,,PT_Normal,,,,,jGZNxu42nUGaDnPdxWv/+w,VKME7MsMKk+2RLdXS/ejaA,,,N,0,0,,,2023-02-08 18:30,2023-02-08 18:31,NotPrmUser,NotPrmUser,
141195,27164,54794,178,0,N,1,N,N,CP_Drtn,TT_Task,DT_FixedDUR2,TK_NotStart,LAN1000,Land Rights and Easement Acquisition,,880,880,1200,0,0,0,1200,0,0,0,,,,2024-07-04 08:00,2025-01-29 16:00,,2024-02-01 08:00,2024-08-28 16:00,2024-02-01 08:00,2024-08-28 16:00,2024-02-01 08:00,2024-08-28 16:00,2024-07-04 08:00,2025-01-29 16:00,,PT_Normal,,,,,zTHboeDX3U+t+PQRzbWHxA,d0ulyl+IkUubuk6NcP7LGQ,,,N,0,0,,,2023-02-08 18:30,2023-02-08 18:31,NotPrmUser,NotPrmUser,
141196,27164,54794,178,0,N,1,N,N,CP_Drtn,TT_Task,DT_FixedDUR2,TK_NotStart,LAN1010,Tribal Land Rights,,880,880,1200,0,0,0,1200,0,0,0,,,,2024-07-04 08:00,2025-01-29 16:00,,2024-02-01 08:00,2024-08-28 16:00,2024-02-01 08:00,2024-08-28 16:00,2024-02-01 08:00,2024-08-28 16:00,2024-07-04 08:00,2025-01-29 16:00,,PT_Normal,,,,,Vdf0E9WdoUm3z24durOJGA,i+m/5q7//0+rplY/gxOfnw,,,N,0,0,,,2023-02-08 18:30,2023-02-08 18:31,NotPrmUser,NotPrmUser,
141197,27164,54794,178,0,N,1,N,N,CP_Drtn,TT_Task,DT_FixedDUR2,TK_NotStart,LAN1020,Laydown Yards,,880,880,1200,0,0,0,1200,0,0,0,,,,2024-07-04 08:00,2025-01-29 16:00,,2024-02-01 08:00,2024-08-28 16:00,2024-02-01 08:00,2024-08-28 16:00,2024-02-01 08:00,2024-08-28 16:00,2024-07-04 08:00,2025-01-29 16:00,,PT_Normal,,,,,nWDWN2EjYEmG0XXpPdRo4A,Kws3n0LR0UaiXcZ6gJldlA,,,N,0,0,,,2023-02-08 18:30,2023-02-08 18:31,NotPrmUser,NotPrmUser,
141198,27164,54795,178,0,N,1,N,N,CP_Drtn,TT_Task,DT_FixedDUR2,TK_NotStart,ENV1000,10% Environmental Submittal,,680,0,200,0,0,0,200,0,0,0,,,,2024-02-15 08:00,2024-03-20 16:00,,2023-10-12 08:00,2023-11-15 16:00,2023-10-12 08:00,2023-11-15 16:00,2023-10-12 08:00,2023-11-15 16:00,2024-02-15 08:00,2024-03-20 16:00,,PT_Normal,,,,,ZdAlVpjfREyTRZd8/4oRmg,FFmY8xmRwUW/Yxv+CerpbQ,,,N,0,0,,,2023-02-08 18:30,2023-02-08 18:31,NotPrmUser,NotPrmUser,
141199,27164,54795,178,0,N,1,N,N,CP_Drtn,TT_Task,DT_FixedDUR2,TK_NotStart,ENV1010,10% Environmental Review,,680,0,120,0,0,0,120,0,0,0,,,,2024-03-21 08:00,2024-04-10 16:00,,2023-11-16 08:00,2023-12-08 16:00,2023-11-16 08:00,2023-12-08 16:00,2023-11-16 08:00,2023-12-08 16:00,2024-03-21 08:00,2024-04-10 16:00,,PT_Normal,,,,,N1d8HQtNYkGDREGQ1vVx0A,RBa0ZN3FXEaLJSmtH1lgow,,,N,0,0,,,2023-02-08 18:30,2023-02-08 18:31,NotPrmUser,NotPrmUser,
141200,27164,54795,178,0,N,1,N,N,CP_Drtn,TT_Task,DT_FixedDUR2,TK_NotStart,ENV1020,30% Environmental Submittal,,640,0,200,0,0,0,200,0,0,0,,,,2024-08-01 08:00,2024-09-04 16:00,,2024-04-11 08:00,2024-05-15 16:00,2024-04-11 08:00,2024-05-15 16:00,2024-04-11 08:00,2024-05-15 16:00,2024-08-01 08:00,2024-09-04 16:00,,PT_Normal,,,,,vQJW3CYtJEm3hdUOZL3brw,jwPTBZ4PPUmnapBHIW/lMA,,,N,0,0,,,2023-02-08 18:30,2023-02-08 18:31,NotPrmUser,NotPrmUser,
141201,27164,54795,178,0,N,1,N,N,CP_Drtn,TT_Task,DT_FixedDUR2,TK_NotStart,ENV1030,30% Environmental Review,,640,0,120,0,0,0,120,0,0,0,,,,2024-09-05 08:00,2024-09-25 16:00,,2024-05-16 08:00,2024-06-05 16:00,2024-05-16 08:00,2024-06-05 16:00,2024-05-16 08:00,2024-06-05 16:00,2024-09-05 08:00,2024-09-25 16:00,,PT_Normal,,,,,RYav382GXE+WUXOfTZ/tUQ,Fw9H/eSbxEOrOHXY3R8NcA,,,N,0,0,,,2023-02-08 18:30,2023-02-08 18:31,NotPrmUser,NotPrmUser,
141202,27164,54795,178,0,N,1,N,N,CP_Drtn,TT_Task,DT_FixedDUR2,TK_NotStart,ENV1040,60% Environmental Submittal,,640,0,280,0,0,0,280,0,0,0,,,,2024-09-26 08:00,2024-11-13 16:00,,2024-06-06 08:00,2024-07-24 16:00,2024-06-06 08:00,2024-07-24 16:00,2024-06-06 08:00,2024-07-24 16:00,2024-09-26 08:00,2024-11-13 16:00,,PT_Normal,,,,,3rot5+4TWEiaZwZG70RxDg,RNxVHlHdkUWghJkt3fOWWw,,,N,0,0,,,2023-02-08 18:30,2023-02-08 18:31,NotPrmUser,NotPrmUser,
141203,27164,54795,178,0,N,1,N,N,CP_Drtn,TT_Task,DT_FixedDUR2,TK_NotStart,ENV1050,60% Environmental Review,,640,0,120,0,0,0,120,0,0,0,,,,2024-11-14 08:00,2024-12-04 16:00,,2024-07-25 08:00,2024-08-14 16:00,2024-07-25 08:00,2024-08-14 16:00,2024-07-25 08:00,2024-08-14 16:00,2024-11-14 08:00,2024-12-04 16:00,,PT_Normal,,,,,bb3MIr/75keb+HqSmMbRSw,wKDbpmEOb0+SkQQUK6CYNw,,,N,0,0,,,2023-02-08 18:30,2023-02-08 18:31,NotPrmUser,NotPrmUser,
141204,27164,54795,178,0,N,1,N,N,CP_Drtn,TT_Task,DT_FixedDUR2,TK_NotStart,ENV1060,BIA NEPA Submittal,,640,0,160,0,0,0,160,0,0,0,,,,2024-12-05 08:00,2025-01-01 16:00,,2024-08-15 08:00,2024-09-11 16:00,2024-08-15 08:00,2024-09-11 16:00,2024-08-15 08:00,2024-09-11 16:00,2024-12-05 08:00,2025-01-01 16:00,,PT_Normal,,,,,feQ76NE8okGk2m/Zyx1gcQ,DU72mjcJR0WN+C5bqrdlQw,,,N,0,0,,,2023-02-08 18:30,2023-02-08 18:31,NotPrmUser,NotPrmUser,
141205,27164,54795,178,0,N,1,N,N,CP_Drtn,TT_Task,DT_FixedDUR2,TK_NotStart,ENV1070,"BIA Received (Add 250 days, if needed)",,640,640,160,0,0,0,160,0,0,0,,,,2025-01-02 08:00,2025-01-29 16:00,,2024-09-12 08:00,2024-10-09 16:00,2024-09-12 08:00,2024-10-09 16:00,2024-09-12 08:00,2024-10-09 16:00,2025-01-02 08:00,2025-01-29 16:00,,PT_Normal,,,,,AK+ufR3rx0KaEGrccXVvDw,W+9L7Yenr0OVzxCMI6f6Tg,,,N,0,0,,,2023-02-08 18:30,2023-02-08 18:31,NotPrmUser,NotPrmUser,
141206,27164,54785,178,0,N,1,N,N,CP_Drtn,TT_Task,DT_FixedDUR2,TK_NotStart,DES1010,Seismic / Geotech Submittal (60-90 for BIA) - Avg 45 days,,680,0,200,0,0,0,200,0,0,0,,,,2024-04-11 08:00,2024-05-15 16:00,,2023-12-11 08:00,2024-01-17 16:00,2023-12-11 08:00,2024-01-17 16:00,2023-12-11 08:00,2024-01-17 16:00,2024-04-11 08:00,2024-05-15 16:00,,PT_Normal,,,,,cM664K6KfUCziA5+IhSEMg,tNXmnehY1ESsp9RSEnnunQ,,,N,0,0,,,2023-02-08 18:30,2023-02-08 18:31,NotPrmUser,NotPrmUser,
141207,27164,54785,178,0,N,1,N,N,CP_Drtn,TT_Task,DT_FixedDUR2,TK_NotStart,DES1020,Potholing Submittal,,680,40,200,0,0,0,200,0,0,0,,,,2024-05-16 08:00,2024-06-19 16:00,,2024-01-18 08:00,2024-02-21 16:00,2024-01-18 08:00,2024-02-21 16:00,2024-01-18 08:00,2024-02-21 16:00,2024-05-16 08:00,2024-06-19 16:00,,PT_Normal,,,,,Kr0P/wahWEeTR7QP7NyaOg,WYlXlTk3DUmU9nqmEo9wSA,,,N,0,0,,,2023-02-08 18:30,2023-02-08 18:31,NotPrmUser,NotPrmUser,
141208,27164,54785,178,0,N,1,N,N,CP_Drtn,TT_Task,DT_FixedDUR2,TK_NotStart,DES1030,Potholing Release /Perform Potholing,,640,0,240,0,0,0,240,0,0,0,,,,2024-06-20 08:00,2024-07-31 16:00,,2024-02-29 08:00,2024-04-10 16:00,2024-02-29 08:00,2024-04-10 16:00,2024-02-29 08:00,2024-04-10 16:00,2024-06-20 08:00,2024-07-31 16:00,,PT_Normal,,,,,RTGf6LxJLkebAHRtef4x4g,0H1DvFwoNUC8Cqg89ktvmQ,,,N,0,0,,,2023-02-08 18:30,2023-02-08 18:31,NotPrmUser,NotPrmUser,
141209,27164,54797,178,0,N,1,N,N,CP_Drtn,TT_Task,DT_FixedDUR2,TK_NotStart,PCON100,Initiate Performance Partnering Process @ 60%,,1000,0,40,0,0,0,40,0,0,0,,,,2024-11-28 08:00,2024-12-04 16:00,,2024-06-06 08:00,2024-06-12 16:00,2024-06-06 08:00,2024-06-12 16:00,2024-06-06 08:00,2024-06-12 16:00,2024-11-28 08:00,2024-12-04 16:00,,PT_Normal,,,,,P904/aqsNka7gha5XST85Q,uO2EEJC+QEG7hDBueb3HJA,,,N,0,0,,,2023-02-08 18:30,2023-02-08 18:31,NotPrmUser,NotPrmUser,
141210,27164,54797,178,0,N,1,N,N,CP_Drtn,TT_Task,DT_FixedDUR2,TK_NotStart,PCON110,Receive Estimate from Contractor,,1000,0,120,0,0,0,120,0,0,0,,,,2024-12-05 08:00,2024-12-25 16:00,,2024-06-13 08:00,2024-07-03 16:00,2024-06-13 08:00,2024-07-03 16:00,2024-06-13 08:00,2024-07-03 16:00,2024-12-05 08:00,2024-12-25 16:00,,PT_Normal,,,,,9qteq56uCEqtKI9Dv32Hww,0+Pf5T3kLkG6BjUThtnC6g,,,N,0,0,,,2023-02-08 18:30,2023-02-08 18:31,NotPrmUser,NotPrmUser,
141211,27164,54797,178,0,N,1,N,N,CP_Drtn,TT_Task,DT_FixedDUR2,TK_NotStart,PCON120,Bid Estimate Negotiations,,1000,0,80,0,0,0,80,0,0,0,,,,2024-12-26 08:00,2025-01-08 16:00,,2024-07-04 08:00,2024-07-17 16:00,2024-07-04 08:00,2024-07-17 16:00,2024-07-04 08:00,2024-07-17 16:00,2024-12-26 08:00,2025-01-08 16:00,,PT_Normal,,,,,3fbF8bNFjk6RhrdR6mlrVA,nbXSNCFlZ0SHqCtgC+n3Aw,,,N,0,0,,,2023-02-08 18:30,2023-02-08 18:31,NotPrmUser,NotPrmUser,
141212,27164,54797,178,0,N,1,N,N,CP_Drtn,TT_Task,DT_FixedDUR2,TK_NotStart,PCON130,Revise Estimate based on IFC,,1000,0,40,0,0,0,40,0,0,0,,,,2025-01-09 08:00,2025-01-15 16:00,,2024-07-18 08:00,2024-07-24 16:00,2024-07-18 08:00,2024-07-24 16:00,2024-07-18 08:00,2024-07-24 16:00,2025-01-09 08:00,2025-01-15 16:00,,PT_Normal,,,,,lLrOS4SMyEG+oV29+VgM4Q,Of1eNmH8bU+1jPFgWfIL9Q,,,N,0,0,,,2023-02-08 18:30,2023-02-08 18:31,NotPrmUser,NotPrmUser,
141213,27164,54797,178,0,N,1,N,N,CP_Drtn,TT_Task,DT_FixedDUR2,TK_NotStart,PCON140,Issue Release (add milestone bid award),,1000,1000,80,0,0,0,80,0,0,0,,,,2025-01-16 08:00,2025-01-29 16:00,,2024-07-25 08:00,2024-08-07 16:00,2024-07-25 08:00,2024-08-07 16:00,2024-07-25 08:00,2024-08-07 16:00,2025-01-16 08:00,2025-01-29 16:00,,PT_Normal,,,,,Sw4Q587fqkG1EyFB2ARRgA,9QgtBnbMc06eVKyZcrEptA,,,N,0,0,,,2023-02-08 18:30,2023-02-08 18:31,NotPrmUser,NotPrmUser,
141214,27164,54799,178,0,N,1,N,N,CP_Drtn,TT_Task,DT_FixedDUR2,TK_NotStart,PCON200,Civil Pre-Construction Meeting (Civil Construction Ready),,0,0,40,0,0,0,40,0,0,0,,,,2025-01-30 08:00,2025-02-05 16:00,,2025-01-30 08:00,2025-02-05 16:00,2025-01-30 08:00,2025-02-05 16:00,2025-01-30 08:00,2025-02-05 16:00,2025-01-30 08:00,2025-02-05 16:00,,PT_Normal,,,,,j22m1Y1FnU25Ppe/WHvliQ,kubzUe+l7EiT8DoExw5ddA,,,Y,0,0,,,2023-02-08 18:30,2023-02-08 18:31,NotPrmUser,NotPrmUser,
141215,27164,54799,178,0,N,1,N,N,CP_Drtn,TT_Task,DT_FixedDUR2,TK_NotStart,PCON210,Electrical - Pre-Construction Meeting (Electical Construction Ready),,240,0,40,0,0,0,40,0,0,0,,,,2025-03-13 08:00,2025-03-19 16:00,,2025-01-30 08:00,2025-02-05 16:00,2025-01-30 08:00,2025-02-05 16:00,2025-01-30 08:00,2025-02-05 16:00,2025-03-13 08:00,2025-03-19 16:00,,PT_Normal,,,,,Np0sZfDnaEejU0Zcwk6UHQ,KTAOr72RjU6/GE099WDT3A,,,N,0,0,,,2023-02-08 18:30,2023-02-08 18:31,NotPrmUser,NotPrmUser,
141216,27164,54798,178,0,N,1,N,N,CP_Drtn,TT_Task,DT_FixedDUR2,TK_NotStart,PCON150,Initiate Performance Partnering Process @ 60%,,1480,0,40,0,0,0,40,0,0,0,,,,2025-01-09 08:00,2025-01-15 16:00,,2024-04-25 08:00,2024-05-01 16:00,2024-04-25 08:00,2024-05-01 16:00,2024-04-25 08:00,2024-05-01 16:00,2025-01-09 08:00,2025-01-15 16:00,,PT_Normal,,,,,HF+WWA9WMUqGDQ9YBi+PLg,wZ0KyWAvX0C2Rg6hFCIYIA,,,N,0,0,,,2023-02-08 18:30,2023-02-08 18:31,NotPrmUser,NotPrmUser,
141217,27164,54798,178,0,N,1,N,N,CP_Drtn,TT_Task,DT_FixedDUR2,TK_NotStart,PCON160,Receive Estimate from Contractor,,1480,0,120,0,0,0,120,0,0,0,,,,2025-01-16 08:00,2025-02-05 16:00,,2024-05-02 08:00,2024-05-22 16:00,2024-05-02 08:00,2024-05-22 16:00,2024-05-02 08:00,2024-05-22 16:00,2025-01-16 08:00,2025-02-05 16:00,,PT_Normal,,,,,IUttpZ+Ze0yt/hc2aXV9kg,z5AL9q9Je0mEhJn9pJ/USQ,,,N,0,0,,,2023-02-08 18:30,2023-02-08 18:31,NotPrmUser,NotPrmUser,
141218,27164,54798,178,0,N,1,N,N,CP_Drtn,TT_Task,DT_FixedDUR2,TK_NotStart,PCON170,Bid Estimate Negotiations,,1480,0,80,0,0,0,80,0,0,0,,,,2025-02-06 08:00,2025-02-19 16:00,,2024-05-23 08:00,2024-06-05 16:00,2024-05-23 08:00,2024-06-05 16:00,2024-05-23 08:00,2024-06-05 16:00,2025-02-06 08:00,2025-02-19 16:00,,PT_Normal,,,,,YYZSA0LCmUm4eSyuRnVKFA,L/jwNpSJ90aUQ86fF33Vew,,,N,0,0,,,2023-02-08 18:30,2023-02-08 18:31,NotPrmUser,NotPrmUser,
141219,27164,54798,178,0,N,1,N,N,CP_Drtn,TT_Task,DT_FixedDUR2,TK_NotStart,PCON180,Revise Estimate based on IFC,,1480,0,40,0,0,0,40,0,0,0,,,,2025-02-20 08:00,2025-02-26 16:00,,2024-06-06 08:00,2024-06-12 16:00,2024-06-06 08:00,2024-06-12 16:00,2024-06-06 08:00,2024-06-12 16:00,2025-02-20 08:00,2025-02-26 16:00,,PT_Normal,,,,,XE3Wuw7ulUqkNz0nJL6Bzw,9PYrFVrwZkaC9i+erGHGcA,,,N,0,0,,,2023-02-08 18:30,2023-02-08 18:31,NotPrmUser,NotPrmUser,
141220,27164,54798,178,0,N,1,N,N,CP_Drtn,TT_Task,DT_FixedDUR2,TK_NotStart,PCON190,Issue Release,,1480,1240,80,0,0,0,80,0,0,0,,,,2025-02-27 08:00,2025-03-12 16:00,,2024-06-13 08:00,2024-06-26 16:00,2024-06-13 08:00,2024-06-26 16:00,2024-06-13 08:00,2024-06-26 16:00,2025-02-27 08:00,2025-03-12 16:00,,PT_Normal,,,,,wns30Sl88EW6bMej5ZuQ8w,ypRi9fJdjEGJXJWmRSOXsQ,,,N,0,0,,,2023-02-08 18:30,2023-02-08 18:31,NotPrmUser,NotPrmUser,
141221,27164,54791,178,0,N,1,N,N,CP_Drtn,TT_Task,DT_FixedDUR2,TK_NotStart,PRO1010,Order Long Lead Civil Material,,680,680,1200,0,0,0,1200,0,0,0,,,,2024-07-04 08:00,2025-01-29 16:00,,2024-03-07 08:00,2024-10-02 16:00,2024-03-07 08:00,2024-10-02 16:00,2024-03-07 08:00,2024-10-02 16:00,2024-07-04 08:00,2025-01-29 16:00,,PT_Normal,,,,,tMVj+GhiqEaidYZF/T1OaA,iqrqKFIso0SZ/9KtNKHQSw,,,N,0,0,,,2023-02-08 18:30,2023-02-08 18:31,NotPrmUser,NotPrmUser,
141222,27164,54791,178,0,N,1,N,N,CP_Drtn,TT_Task,DT_FixedDUR2,TK_NotStart,PRO1050,Order Short Lead Materials,,600,600,200,0,0,0,200,0,0,0,,,,2024-12-26 08:00,2025-01-29 16:00,,2024-09-12 08:00,2024-10-16 16:00,2024-09-12 08:00,2024-10-16 16:00,2024-09-12 08:00,2024-10-16 16:00,2024-12-26 08:00,2025-01-29 16:00,,PT_Normal,,,,,zHpGORC8wEGvwPykrP/4Zw,HG8HkqlHsUiMbyFiLqs79g,,,N,0,0,,,2023-02-08 18:30,2023-02-08 18:31,NotPrmUser,NotPrmUser,
141223,27164,54791,178,0,N,1,N,N,CP_Drtn,TT_Task,DT_FixedDUR2,TK_NotStart,PRO1030,Order Long Lead Electrical Materials,,920,680,800,0,0,0,800,0,0,0,,,,2024-10-24 08:00,2025-03-12 16:00,,2024-05-16 08:00,2024-10-02 16:00,2024-05-16 08:00,2024-10-02 16:00,2024-05-16 08:00,2024-10-02 16:00,2024-10-24 08:00,2025-03-12 16:00,,PT_Normal,,,,,PpyIm9zo9E+rwssTHtfPrg,Ot03DPCAqEqUOxDSdUjRFA,,,N,0,0,,,2023-02-08 18:30,2023-02-08 18:31,NotPrmUser,NotPrmUser,
141224,27164,54801,178,0,N,1,N,N,CP_Drtn,TT_Task,DT_FixedDUR2,TK_NotStart,CON2000,Civil Construction (Trenching 300 feet/day),7730,0,0,3520,0,10728,10728,3520,0,0,0,,,,2025-02-06 08:00,2026-10-14 16:00,,2025-02-06 08:00,2026-10-14 16:00,2025-02-06 08:00,2026-10-14 16:00,2025-02-06 08:00,2026-10-14 16:00,2025-02-06 08:00,2026-10-14 16:00,,PT_Normal,,,,,lhQzBb5VlkOyfJ1BaeSrLg,Cc7w20P8f0utwLryIKqDzA,,,Y,0,0,,,2023-02-08 18:30,2023-02-08 19:10,NotPrmUser,NotPrmUser,
141225,27164,54802,178,0,N,1,N,N,CP_Drtn,TT_Task,DT_FixedDUR2,TK_NotStart,CON3000,Electrical Construction,7786,0,0,3280,0,1640,1640,3280,0,0,0,,,,2025-03-20 08:00,2026-10-14 16:00,,2025-03-20 08:00,2026-10-14 16:00,2025-03-20 08:00,2026-10-14 16:00,2025-03-20 08:00,2026-10-14 16:00,2025-03-20 08:00,2026-10-14 16:00,,PT_Normal,,,,,F4yejunl0EC/i9HTvH7FJw,eL9RTWVJH06rISvJK83jKA,,,Y,0,0,,,2023-02-08 18:30,2023-02-08 19:35,NotPrmUser,NotPrmUser,
141226,27164,54803,178,0,N,1,N,N,CP_Drtn,TT_Task,DT_FixedDUR2,TK_NotStart,CON4000,Service Cutover,,1056,0,2920,0,0,0,2920,0,0,0,,,,2025-11-24 08:00,2027-04-16 16:00,,2025-05-22 08:00,2026-10-14 16:00,2025-05-22 08:00,2026-10-14 16:00,2025-05-22 08:00,2026-10-14 16:00,2025-11-24 08:00,2027-04-16 16:00,,PT_Normal,,,,,MUXcMvpw7UCZxfEfkdMGQA,3AgEpr76m0CqqKE2VKijgA,,,N,0,0,,,2023-02-08 18:30,2023-02-08 18:31,NotPrmUser,NotPrmUser,
141227,27164,54804,178,0,N,1,N,N,CP_Drtn,TT_Task,DT_FixedDUR2,TK_NotStart,CON5000,Scada Construction,,1056,0,520,0,0,0,520,0,0,0,,,,2027-01-18 08:00,2027-04-16 16:00,,2026-07-16 08:00,2026-10-14 16:00,2026-07-16 08:00,2026-10-14 16:00,2026-07-16 08:00,2026-10-14 16:00,2027-01-18 08:00,2027-04-16 16:00,,PT_Normal,,,,,DqZ5cS2LFU2VV/RJxEAm1g,GoyHULsbG0axNtmLSoRstw,,,N,0,0,,,2023-02-08 18:30,2023-02-08 18:31,NotPrmUser,NotPrmUser,
141228,27164,54805,178,0,N,1,N,N,CP_Drtn,TT_Task,DT_FixedDUR2,TK_NotStart,CON6000,Substation Construction,,1056,0,520,0,0,0,520,0,0,0,,,,2027-01-18 08:00,2027-04-16 16:00,,2026-07-16 08:00,2026-10-14 16:00,2026-07-16 08:00,2026-10-14 16:00,2026-07-16 08:00,2026-10-14 16:00,2027-01-18 08:00,2027-04-16 16:00,,PT_Normal,,,,,tNlRA6+8NU+NH80zlhYA0A,HxNOt/ChV0qIpddPYwKJ2Q,,,N,0,0,,,2023-02-08 18:30,2023-02-08 18:31,NotPrmUser,NotPrmUser,
141229,27164,54806,178,0,N,1,N,N,CP_Drtn,TT_Task,DT_FixedDrtn,TK_NotStart,CON7000,Overhead RFS (1000 feet per day),7785,0,0,1056,0,1056,1056,1056,0,0,0,,,,2026-10-15 08:00,2027-04-16 16:00,,2026-10-15 08:00,2027-04-16 16:00,2026-10-15 08:00,2027-04-16 16:00,2026-10-15 08:00,2027-04-16 16:00,2026-10-15 08:00,2027-04-16 16:00,,PT_Normal,,,,,+NoPX+TalEWyIr/UkxfFkg,GTug5VQymUiil1f+PGPbQQ,,,Y,0,0,,,2023-02-08 18:30,2023-02-08 18:31,NotPrmUser,NotPrmUser,
141230,27164,54800,178,0,N,1,N,N,CP_Drtn,TT_Task,DT_FixedDUR2,TK_NotStart,ISD1000,ISD - Energize - Put in service,,2008,2008,8,0,0,0,8,25,0,25,,,,2027-10-01 08:00,2027-10-01 16:00,,2026-10-15 08:00,2026-10-15 16:00,2026-10-15 08:00,2026-10-15 16:00,2026-10-15 08:00,2026-10-15 16:00,2027-10-01 08:00,2027-10-01 16:00,,PT_Normal,,,,,5V4U6LRJFk+CqYilm6sOqA,YEeYplFmpk6MD8b5pL75EQ,,,N,0,0,,,2023-02-08 18:30,2023-02-08 18:31,NotPrmUser,NotPrmUser,
141231,27164,54783,178,0,N,1,N,N,CP_Drtn,TT_Task,DT_FixedDUR2,TK_NotStart,SUR1000,Survey and LiDAR,7385,0,0,400,0,9182,9182,400,0,0,0,,,,2023-08-03 08:00,2023-10-11 16:00,,2023-08-03 08:00,2023-10-11 16:00,2023-08-03 08:00,2023-10-11 16:00,2023-08-03 08:00,2023-10-11 16:00,2023-08-03 08:00,2023-10-11 16:00,,PT_Normal,,,,,38NzRbykAUCBPd0E52XABg,HMqLrquq4UyNgK32EbaSOQ,,,Y,0,0,,,2023-02-08 18:30,2023-02-08 18:31,NotPrmUser,NotPrmUser,
141232,27164,54788,178,0,N,1,N,N,CP_Drtn,TT_Task,DT_FixedDUR2,TK_NotStart,DES1200,Receive Services Worksheet and Cable Info from Design Firms,,640,0,160,0,0,0,160,0,0,0,,,,2024-04-11 08:00,2024-05-08 16:00,,2023-12-18 08:00,2024-01-17 16:00,2023-12-18 08:00,2024-01-17 16:00,2023-12-18 08:00,2024-01-17 16:00,2024-04-11 08:00,2024-05-08 16:00,,PT_Normal,,,,,YH/bkQ92BEKyaBGayI0PEA,vZxKQP6vz06Lt+Q+aHtf1A,,,N,0,0,,,2023-02-08 18:30,2023-02-08 18:31,NotPrmUser,NotPrmUser,
141233,27164,54788,178,0,N,1,N,N,CP_Drtn,TT_Task,DT_FixedDUR2,TK_NotStart,DES1210,Issue to Trench Inspectors,,2376,1320,80,0,0,0,80,0,0,0,,,,2025-11-10 08:00,2025-11-21 16:00,,2024-09-19 08:00,2024-10-02 16:00,2024-09-19 08:00,2024-10-02 16:00,2024-09-19 08:00,2024-10-02 16:00,2025-11-10 08:00,2025-11-21 16:00,,PT_Normal,,,,,5kKC4gBwmkeqqLEJdwHLWA,jDSUvCUDBE20vcnnUrcpTA,,,N,0,0,,,2023-02-08 18:30,2023-02-08 18:31,NotPrmUser,NotPrmUser,
141234,27164,54800,178,0,N,1,N,N,CP_Drtn,TT_FinMile,DT_FixedDrtn,TK_NotStart,CON1020,Construction Complete,,0,0,0,0,0,0,0,0,0,0,,,,2027-04-16 16:00,2027-04-16 16:00,,2027-04-16 16:00,2027-04-16 16:00,2027-04-16 16:00,2027-04-16 16:00,2027-04-16 16:00,2027-04-16 16:00,2027-04-16 16:00,2027-04-16 16:00,,PT_Normal,,,,,V0EXV4Ycf0m/qlCVMUUzIQ,Jpm8Jlf0zUe3mbcFiZnPOA,,,Y,0,0,,,2023-02-08 18:30,2023-02-08 18:31,NotPrmUser,NotPrmUser,
141235,27164,54800,178,0,N,1,N,N,CP_Drtn,TT_Mile,DT_FixedDrtn,TK_NotStart,CON1010,Construction Start,,5536,5536,0,0,0,0,0,0,0,0,,,,2027-10-01 16:00,2027-10-01 16:00,,2025-02-06 08:00,2025-02-06 08:00,2025-02-06 08:00,2025-02-06 08:00,2025-02-06 08:00,2025-02-06 08:00,2027-10-01 16:00,2027-10-01 16:00,,PT_Normal,,,,,vASNw5ZcmE2QmbdnmjloqQ,jrN70TGxMUenH8TL8Xp3mg,,,N,0,0,,,2023-02-08 18:30,2023-02-08 18:31,NotPrmUser,NotPrmUser,
141236,27164,54809,178,0,N,1,N,N,CP_Drtn,TT_Task,DT_FixedDUR2,TK_NotStart,CLO1020,GIS/As-Built and Records Complete,,480,480,480,0,0,0,480,0,0,0,,,,2027-07-12 08:00,2027-10-01 16:00,,2027-04-19 08:00,2027-07-09 16:00,2027-04-19 08:00,2027-07-09 16:00,2027-04-19 08:00,2027-07-09 16:00,2027-07-12 08:00,2027-10-01 16:00,,PT_Normal,,,,,dUiP9OaOeEyvtJbVC2j1nQ,Mc32FHt2XUObI28baj4acg,,,N,0,0,,,2023-02-08 18:30,2023-02-08 18:31,NotPrmUser,NotPrmUser,
141237,27164,54810,178,0,N,1,N,N,CP_Drtn,TT_Task,DT_FixedDUR2,TK_NotStart,CLO1030,"PO's complete, Work Order Reconcilled and Closed",,0,0,960,0,0,0,960,0,0,0,,,,2027-04-19 08:00,2027-10-01 16:00,,2027-04-19 08:00,2027-10-01 16:00,2027-04-19 08:00,2027-10-01 16:00,2027-04-19 08:00,2027-10-01 16:00,2027-04-19 08:00,2027-10-01 16:00,,PT_Normal,,,,,mcHza9ZBL0GuRuc2lzHvNw,97tKFORzCUeml3WsPGtYTw,,,Y,0,0,,,2023-02-08 18:30,2023-02-08 18:31,NotPrmUser,NotPrmUser,
141238,27164,54808,178,0,N,1,N,N,CP_Drtn,TT_FinMile,DT_FixedDrtn,TK_NotStart,CLO1010,Project Complete,,0,0,0,0,0,0,0,0,0,0,,,,2027-10-01 16:00,2027-10-01 16:00,,2027-10-01 16:00,2027-10-01 16:00,2027-10-01 16:00,2027-10-01 16:00,2027-10-01 16:00,2027-10-01 16:00,2027-10-01 16:00,2027-10-01 16:00,,PT_Normal,,,,,CPOV5mrJsESBlDNN+ME0cg,H37c9Z88FkyCtn2XtTIToQ,,,Y,0,0,,,2023-02-08 18:30,2023-02-08 18:31,NotPrmUser,NotPrmUser,
141239,27164,54784,178,0,N,1,N,N,CP_Drtn,TT_LOE,DT_FixedDUR2,TK_NotStart,DES1000,Design Summary,7257,4096,0,2680,0,16233,16233,2680,0,0,0,,,,2023-10-12 08:00,2027-01-15 16:00,,2023-10-12 08:00,2025-01-29 16:00,2023-10-12 08:00,2025-01-29 16:00,2023-10-12 08:00,2025-01-29 16:00,2023-10-12 08:00,2027-01-15 16:00,,PT_Normal,,,,,NLze2Mdc00u+d++pE8PXzQ,WVuX6dMydkmJglQCEWXAvw,,,N,0,0,,,2023-02-08 18:30,2023-02-08 18:31,NotPrmUser,NotPrmUser,
141240,27164,54800,178,0,N,1,N,N,CP_Drtn,TT_LOE,DT_FixedDUR2,TK_NotStart,CON1000,Construction Summary,7385,0,0,4576,0,9972,9972,4576,25,0,25,,,,2027-04-16 16:00,2027-04-16 16:00,,2025-02-06 08:00,2027-04-16 16:00,2025-02-06 08:00,2027-04-16 16:00,2025-02-06 08:00,2027-04-16 16:00,2027-04-16 16:00,2027-04-16 16:00,,PT_Normal,,,,,BzuX5nfwq0WlrWRKuqijvQ,Yw6WQQUY+0iBV1+IkMDynA,,,N,0,0,,,2023-02-08 18:30,2023-02-08 18:31,NotPrmUser,NotPrmUser,
141241,27164,54808,178,0,N,1,N,N,CP_Drtn,TT_LOE,DT_FixedDUR2,TK_NotStart,CLO1000,Close Out Summary,7385,0,0,960,0,4482,4482,960,0,0,0,,,,2027-04-19 08:00,2027-10-01 16:00,,2027-04-19 08:00,2027-10-01 16:00,2027-04-19 08:00,2027-10-01 16:00,2027-04-19 08:00,2027-10-01 16:00,2027-04-19 08:00,2027-10-01 16:00,,PT_Normal,,,,,kN1XiVMG/EmaHMWHp1Fzfg,3a1/sR4xTUiRY/Bl0a9Q0Q,,,Y,0,0,,,2023-02-08 18:30,2023-02-08 18:31,NotPrmUser,NotPrmUser,
141242,27164,54781,178,0,N,1,N,N,CP_Drtn,TT_LOE,DT_FixedDUR2,TK_NotStart,PCON1000,Pre-Construction Summary,,0,0,3296,0,0,0,3296,0,0,0,,,,2023-07-03 08:00,2025-02-05 16:00,,2023-07-03 08:00,2025-02-05 16:00,2023-07-03 08:00,2025-02-05 16:00,2023-07-03 08:00,2025-02-05 16:00,2023-07-03 08:00,2025-02-05 16:00,,PT_Normal,,,,,DM9o6rtfHUC76y8aSRXUaA,C08Jzy7azES2bx6XkNtiMw,,,Y,0,0,,,2023-02-08 18:30,2023-02-08 18:31,NotPrmUser,NotPrmUser,
141243,27165,54812,178,0,N,1,N,N,CP_Drtn,TT_Task,DT_FixedDUR2,TK_NotStart,SCO1000,Bundling / Phasing of circuits for project sequencing,,0,0,80,0,0,0,80,0,0,0,2023-07-17 00:00,,,2023-07-17 08:00,2023-07-28 16:00,,2023-07-17 08:00,2023-07-28 16:00,2023-07-17 08:00,2023-07-28 16:00,2023-07-17 08:00,2023-07-28 16:00,2023-07-17 08:00,2023-07-28 16:00,CS_MSOA,PT_Normal,,,,,fIZHKB+zlkCyfa/9ooXB0Q,XPismLZwLE2lAyMthfBOyQ,,,Y,0,0,,,2023-02-08 18:30,2023-02-08 18:31,NotPrmUser,NotPrmUser,
141244,27165,54812,178,0,N,1,N,N,CP_Drtn,TT_Task,DT_FixedDUR2,TK_NotStart,SCO1010,Constructability Review,,0,0,40,0,0,0,40,0,0,0,,,,2023-07-31 08:00,2023-08-04 16:00,,2023-07-31 08:00,2023-08-04 16:00,2023-07-31 08:00,2023-08-04 16:00,2023-07-31 08:00,2023-08-04 16:00,2023-07-31 08:00,2023-08-04 16:00,,PT_Normal,,,,,dLxOnU+cvEOwpNqtXR/z5Q,PqwQ4MVviEi/yxpO6YsLmA,,,Y,0,0,,,2023-02-08 18:30,2023-02-08 18:31,NotPrmUser,NotPrmUser,
141245,27165,54812,178,0,N,1,N,N,CP_Drtn,TT_Task,DT_FixedDUR2,TK_NotStart,SCO1020,SDG&E Review,,0,0,16,0,0,0,16,0,0,0,,,,2023-08-07 08:00,2023-08-08 16:00,,2023-08-07 08:00,2023-08-08 16:00,2023-08-07 08:00,2023-08-08 16:00,2023-08-07 08:00,2023-08-08 16:00,2023-08-07 08:00,2023-08-08 16:00,,PT_Normal,,,,,E0nmlH+g4EOdbYhHEjKokQ,osVCXxJB7Umxk2FC7XOgNw,,,Y,0,0,,,2023-02-08 18:30,2023-02-08 18:31,NotPrmUser,NotPrmUser,
141246,27165,54813,178,0,N,1,N,N,CP_Drtn,TT_Task,DT_FixedDUR2,TK_NotStart,PLA1000,Workorder Setup,,0,0,40,0,0,0,40,0,0,0,,,,2023-08-09 08:00,2023-08-15 16:00,,2023-08-09 08:00,2023-08-15 16:00,2023-08-09 08:00,2023-08-15 16:00,2023-08-09 08:00,2023-08-15 16:00,2023-08-09 08:00,2023-08-15 16:00,,PT_Normal,,,,,8WmITI/09EuO8C7Wri5u2w,N7g/X6L8eEi5ZncUwy82bg,,,Y,0,0,,,2023-02-08 18:30,2023-02-08 18:31,NotPrmUser,NotPrmUser,
141247,27165,54816,178,0,N,1,N,N,CP_Drtn,TT_Task,DT_FixedDUR2,TK_NotStart,DES1040,10% Submittal,,0,0,200,0,0,0,200,0,0,0,,,,2023-10-25 08:00,2023-11-30 16:00,,2023-10-25 08:00,2023-11-30 16:00,2023-10-25 08:00,2023-11-30 16:00,2023-10-25 08:00,2023-11-30 16:00,2023-10-25 08:00,2023-11-30 16:00,,PT_Normal,,,,,E2LsOSWRl0WUkSqL+koliQ,3pmM6b59sUyj/T2iFP984A,,,Y,0,0,,,2023-02-08 18:30,2023-02-08 18:31,NotPrmUser,NotPrmUser,
141248,27165,54816,178,0,N,1,N,N,CP_Drtn,TT_Task,DT_FixedDUR2,TK_NotStart,DES1050,30% Submittal,,0,0,400,0,0,0,400,0,0,0,,,,2023-12-01 08:00,2024-02-13 16:00,,2023-12-01 08:00,2024-02-13 16:00,2023-12-01 08:00,2024-02-13 16:00,2023-12-01 08:00,2024-02-13 16:00,2023-12-01 08:00,2024-02-13 16:00,,PT_Normal,,,,,cQHl36M10EC1r8TF8zyMdg,CS7IuqexSEWrAPB1GDIBXQ,,,Y,0,0,,,2023-02-08 18:30,2023-02-08 18:31,NotPrmUser,NotPrmUser,
141249,27165,54816,178,0,N,1,N,N,CP_Drtn,TT_Task,DT_FixedDUR2,TK_NotStart,DES1060,30% Review,,0,0,80,0,0,0,80,0,0,0,,,,2024-02-14 08:00,2024-02-27 16:00,,2024-02-14 08:00,2024-02-27 16:00,2024-02-14 08:00,2024-02-27 16:00,2024-02-14 08:00,2024-02-27 16:00,2024-02-14 08:00,2024-02-27 16:00,,PT_Normal,,,,,GwpAWpNelUWBx9azxRf5AQ,wJlZgMrFaUSRNGBL8ymEaA,,,Y,0,0,,,2023-02-08 18:30,2023-02-08 18:31,NotPrmUser,NotPrmUser,
141250,27165,54816,178,0,N,1,N,N,CP_Drtn,TT_Task,DT_FixedDUR2,TK_NotStart,DES1070,60% Submittal,,600,0,560,0,0,0,560,0,0,0,,,,2024-06-12 08:00,2024-09-17 16:00,,2024-02-28 08:00,2024-06-04 16:00,2024-02-28 08:00,2024-06-04 16:00,2024-02-28 08:00,2024-06-04 16:00,2024-06-12 08:00,2024-09-17 16:00,,PT_Normal,,,,,jXjW3Da6+EaA1Nbvpk3YcA,4qRBtyfLsEWVHR8XEA8k6g,,,N,0,0,,,2023-02-08 18:30,2023-02-08 18:31,NotPrmUser,NotPrmUser,
141251,27165,54816,178,0,N,1,N,N,CP_Drtn,TT_Task,DT_FixedDUR2,TK_NotStart,DES1080,60% Review,,600,0,80,0,0,0,80,0,0,0,,,,2024-09-18 08:00,2024-10-01 16:00,,2024-06-05 08:00,2024-06-18 16:00,2024-06-05 08:00,2024-06-18 16:00,2024-06-05 08:00,2024-06-18 16:00,2024-09-18 08:00,2024-10-01 16:00,,PT_Normal,,,,,9negded020ybLiCPdnCJFA,ZA0APMnfwUiJUgF0d14gIA,,,N,0,0,,,2023-02-08 18:30,2023-02-08 18:31,NotPrmUser,NotPrmUser,
141252,27165,54816,178,0,N,1,N,N,CP_Drtn,TT_Task,DT_FixedDUR2,TK_NotStart,DES1090,90% Submittal,,600,0,360,0,0,0,360,0,0,0,,,,2024-10-02 08:00,2024-12-03 16:00,,2024-06-19 08:00,2024-08-20 16:00,2024-06-19 08:00,2024-08-20 16:00,2024-06-19 08:00,2024-08-20 16:00,2024-10-02 08:00,2024-12-03 16:00,,PT_Normal,,,,,mOVK2imFREyky7xXSXitqg,H1TpZ9CBYEa+5BXIHtiyFA,,,N,0,0,,,2023-02-08 18:30,2023-02-08 18:31,NotPrmUser,NotPrmUser,
141253,27165,54816,178,0,N,1,N,N,CP_Drtn,TT_Task,DT_FixedDUR2,TK_NotStart,DES1100,90% Review,,600,0,80,0,0,0,80,0,0,0,,,,2024-12-04 08:00,2024-12-17 16:00,,2024-08-21 08:00,2024-09-03 16:00,2024-08-21 08:00,2024-09-03 16:00,2024-08-21 08:00,2024-09-03 16:00,2024-12-04 08:00,2024-12-17 16:00,,PT_Normal,,,,,xnb8Gj/pTEeE4PUV2ZykTw,wyx6XLYzxESuN7/hqj8smQ,,,N,0,0,,,2023-02-08 18:30,2023-02-08 18:31,NotPrmUser,NotPrmUser,
141254,27165,54816,178,0,N,1,N,N,CP_Drtn,TT_Task,DT_FixedDUR2,TK_NotStart,DES1110,100% Submittal,,680,0,160,0,0,0,160,0,0,0,,,,2025-01-01 08:00,2025-01-28 16:00,,2024-09-04 08:00,2024-10-01 16:00,2024-09-04 08:00,2024-10-01 16:00,2024-09-04 08:00,2024-10-01 16:00,2025-01-01 08:00,2025-01-28 16:00,,PT_Normal,,,,,96+jIWPZqkiXrbxAtj6vdQ,AcQ+I5YmPk+yDiHWU1yB+Q,,,N,0,0,,,2023-02-08 18:30,2023-02-08 18:31,NotPrmUser,NotPrmUser,
141255,27165,54816,178,0,N,1,N,N,CP_Drtn,TT_Task,DT_FixedDUR2,TK_NotStart,DES1120,Issue IFC Design Package,,680,680,80,0,0,0,80,0,0,0,,,,2025-01-29 08:00,2025-02-11 16:00,,2024-10-02 08:00,2024-10-15 16:00,2024-10-02 08:00,2024-10-15 16:00,2024-10-02 08:00,2024-10-15 16:00,2025-01-29 08:00,2025-02-11 16:00,,PT_Normal,,,,,Nn1BWxSv6kawmy+V4DSIbQ,DAMYmyZAmkqlE0sLKwjdKg,,,N,0,0,,,2023-02-08 18:30,2023-02-08 18:31,NotPrmUser,NotPrmUser,
141256,27165,54817,178,0,N,1,N,N,CP_Drtn,TT_Task,DT_FixedDUR2,TK_NotStart,DES1130,60% Submittal,,840,0,480,0,0,0,480,0,0,0,,,,2024-06-26 08:00,2024-09-17 16:00,,2024-01-31 08:00,2024-04-23 16:00,2024-01-31 08:00,2024-04-23 16:00,2024-01-31 08:00,2024-04-23 16:00,2024-06-26 08:00,2024-09-17 16:00,,PT_Normal,,,,,QPcaGOz210CVzx2+HP1gQA,hDvlwV5Rlk6vGQaPpoGsGw,,,N,0,0,,,2023-02-08 18:30,2023-02-08 18:31,NotPrmUser,NotPrmUser,
141257,27165,54817,178,0,N,1,N,N,CP_Drtn,TT_Task,DT_FixedDUR2,TK_NotStart,DES1140,60% Review,,920,0,80,0,0,0,80,0,0,0,,,,2024-10-02 08:00,2024-10-15 16:00,,2024-04-24 08:00,2024-05-07 16:00,2024-04-24 08:00,2024-05-07 16:00,2024-04-24 08:00,2024-05-07 16:00,2024-10-02 08:00,2024-10-15 16:00,,PT_Normal,,,,,7W1SvvQ6fE2BkDXRd+7Lpg,3JC+RN9Dd0SOp86LXGBrug,,,N,0,0,,,2023-02-08 18:30,2023-02-08 18:31,NotPrmUser,NotPrmUser,
141258,27165,54817,178,0,N,1,N,N,CP_Drtn,TT_Task,DT_FixedDUR2,TK_NotStart,DES1150,90% Submittal,,1120,0,400,0,0,0,400,0,0,0,,,,2024-11-20 08:00,2025-01-28 16:00,,2024-05-08 08:00,2024-07-16 16:00,2024-05-08 08:00,2024-07-16 16:00,2024-05-08 08:00,2024-07-16 16:00,2024-11-20 08:00,2025-01-28 16:00,,PT_Normal,,,,,4CV4wK1nL0GQFp6s89OOig,/CcaKOeWskCxmOSbFEFXNg,,,N,0,0,,,2023-02-08 18:30,2023-02-08 18:31,NotPrmUser,NotPrmUser,
141259,27165,54817,178,0,N,1,N,N,CP_Drtn,TT_Task,DT_FixedDUR2,TK_NotStart,DES1160,90% Review,,1120,0,80,0,0,0,80,0,0,0,,,,2025-01-29 08:00,2025-02-11 16:00,,2024-07-17 08:00,2024-07-30 16:00,2024-07-17 08:00,2024-07-30 16:00,2024-07-17 08:00,2024-07-30 16:00,2025-01-29 08:00,2025-02-11 16:00,,PT_Normal,,,,,gEbgx3jbIU64+mZYrqc5Qw,Zy1vMy9pdE+UdLldMMzzcQ,,,N,0,0,,,2023-02-08 18:30,2023-02-08 18:31,NotPrmUser,NotPrmUser,
141260,27165,54817,178,0,N,1,N,N,CP_Drtn,TT_Task,DT_FixedDUR2,TK_NotStart,DES1170,100% Submittal,,1120,880,160,0,0,0,160,0,0,0,,,,2025-02-12 08:00,2025-03-11 16:00,,2024-07-31 08:00,2024-08-27 16:00,2024-07-31 08:00,2024-08-27 16:00,2024-07-31 08:00,2024-08-27 16:00,2025-02-12 08:00,2025-03-11 16:00,,PT_Normal,,,,,1bSPcv1/oEmdwJ1Q1oz6/g,vmwnpKBPyke8uiNWPgrF1g,,,N,0,0,,,2023-02-08 18:30,2023-02-08 18:31,NotPrmUser,NotPrmUser,
141261,27165,54817,178,0,N,1,N,N,CP_Drtn,TT_Task,DT_FixedDUR2,TK_NotStart,DES1180,Issue IFC Design Package,,240,0,80,0,0,0,80,0,0,0,,,,2025-03-12 08:00,2025-03-25 16:00,,2025-01-29 08:00,2025-02-11 16:00,2025-01-29 08:00,2025-02-11 16:00,2025-01-29 08:00,2025-02-11 16:00,2025-03-12 08:00,2025-03-25 16:00,,PT_Normal,,,,,FZ6Wt7py/kWiw931H8JFzw,SS0Vv6s47ESrXH1id5qPuw,,,N,0,0,,,2023-02-08 18:30,2023-02-08 18:31,NotPrmUser,NotPrmUser,
141262,27165,54818,178,0,N,1,N,N,CP_Drtn,TT_Task,DT_FixedDUR2,TK_NotStart,DES1190,Issue Services Worksheet to Design Firms,,760,0,160,0,0,0,160,0,0,0,,,,2024-04-17 08:00,2024-05-14 16:00,,2023-12-01 08:00,2024-01-02 16:00,2023-12-01 08:00,2024-01-02 16:00,2023-12-01 08:00,2024-01-02 16:00,2024-04-17 08:00,2024-05-14 16:00,,PT_Normal,,,,,b1p80lcOFkOOVGmkM0lZ2A,UZDWRGUPXUWTxEZIblNzLw,,,N,0,0,,,2023-02-08 18:30,2023-02-08 18:31,NotPrmUser,NotPrmUser,
141263,27165,54819,178,0,N,1,N,N,CP_Drtn,TT_Task,DT_FixedDUR2,TK_NotStart,DES1220,SED Design,,6376,0,240,0,0,0,240,0,0,0,,,,2026-11-20 08:00,2026-12-31 16:00,,2023-10-25 08:00,2023-12-07 16:00,2023-10-25 08:00,2023-12-07 16:00,2023-10-25 08:00,2023-12-07 16:00,2026-11-20 08:00,2026-12-31 16:00,,PT_Normal,,,,,DDi4KY7DQ0eLgWrdhOOSyA,rtgQMUVsVEKI/WSG9CS95g,,,N,0,0,,,2023-02-08 18:30,2023-02-08 18:31,NotPrmUser,NotPrmUser,
141264,27165,54819,178,0,N,1,N,N,CP_Drtn,TT_Task,DT_FixedDUR2,TK_NotStart,DES1230,Issue IFC Design Package,,6376,5320,160,0,0,0,160,0,0,0,,,,2027-01-01 08:00,2027-01-28 16:00,,2023-12-08 08:00,2024-01-09 16:00,2023-12-08 08:00,2024-01-09 16:00,2023-12-08 08:00,2024-01-09 16:00,2027-01-01 08:00,2027-01-28 16:00,,PT_Normal,,,,,SjHaMFdGVUe8GjnqUH51aw,oZTaRdRVjEScG0tDzSsHhQ,,,N,0,0,,,2023-02-08 18:30,2023-02-08 18:31,NotPrmUser,NotPrmUser,
141265,27165,54821,178,0,N,1,N,N,CP_Drtn,TT_Task,DT_FixedDUR2,TK_NotStart,PRO1000,Civil BOM - Long Lead @ 30%,,680,0,120,0,0,0,120,0,0,0,,,,2024-06-26 08:00,2024-07-16 16:00,,2024-02-28 08:00,2024-03-19 16:00,2024-02-28 08:00,2024-03-19 16:00,2024-02-28 08:00,2024-03-19 16:00,2024-06-26 08:00,2024-07-16 16:00,,PT_Normal,,,,,crlj2cC0RkOVM2xSERLACA,tXpt2Vij90SBF0DIlnhbvw,,,N,0,0,,,2023-02-08 18:30,2023-02-08 18:31,NotPrmUser,NotPrmUser,
141266,27165,54821,178,0,N,1,N,N,CP_Drtn,TT_Task,DT_FixedDUR2,TK_NotStart,PRO1020,Electrical BOM - Long Lead @ 60%,,920,0,120,0,0,0,120,0,0,0,,,,2024-10-16 08:00,2024-11-05 16:00,,2024-05-08 08:00,2024-05-28 16:00,2024-05-08 08:00,2024-05-28 16:00,2024-05-08 08:00,2024-05-28 16:00,2024-10-16 08:00,2024-11-05 16:00,,PT_Normal,,,,,pms1/kdFHkqK8ruakXlIIg,2JATKe6Xck2jFVnUh4Vi+w,,,N,0,0,,,2023-02-08 18:30,2023-02-08 18:31,NotPrmUser,NotPrmUser,
141267,27165,54821,178,0,N,1,N,N,CP_Drtn,TT_Task,DT_FixedDUR2,TK_NotStart,PRO1040,BOM - Short Lead @ 60%,,600,0,120,0,0,0,120,0,0,0,,,,2024-12-18 08:00,2025-01-07 16:00,,2024-09-04 08:00,2024-09-24 16:00,2024-09-04 08:00,2024-09-24 16:00,2024-09-04 08:00,2024-09-24 16:00,2024-12-18 08:00,2025-01-07 16:00,,PT_Normal,,,,,iZzU2SY3Kk+zA8DPAbve0g,1Mjf82QTgk6u6uomoUF3gw,,,N,0,0,,,2023-02-08 18:30,2023-02-08 18:31,NotPrmUser,NotPrmUser,
141268,27165,54822,178,0,N,1,N,N,CP_Drtn,TT_Task,DT_FixedDUR2,TK_NotStart,PER1000,CalTrans Permit,,0,0,2000,0,0,0,2000,0,0,0,,,,2024-02-28 08:00,2025-02-11 16:00,,2024-02-28 08:00,2025-02-11 16:00,2024-02-28 08:00,2025-02-11 16:00,2024-02-28 08:00,2025-02-11 16:00,2024-02-28 08:00,2025-02-11 16:00,,PT_Normal,,,,,LqISQz/jnUakLXiAXeVC5Q,ariT9ohpkkasMAymInVCLQ,,,Y,0,0,,,2023-02-08 18:30,2023-02-08 18:31,NotPrmUser,NotPrmUser,
141269,27165,54822,178,0,N,1,N,N,CP_Drtn,TT_Task,DT_FixedDUR2,TK_NotStart,PER1010,City & County Permits,,1200,1200,800,0,0,0,800,0,0,0,,,,2024-09-25 08:00,2025-02-11 16:00,,2024-02-28 08:00,2024-07-16 16:00,2024-02-28 08:00,2024-07-16 16:00,2024-02-28 08:00,2024-07-16 16:00,2024-09-25 08:00,2025-02-11 16:00,,PT_Normal,,,,,7oVXlScl50WZfVeyd4iHPw,1YzkNUyDuEKHeHYhCQ+ojQ,,,N,0,0,,,2023-02-08 18:30,2023-02-08 18:31,NotPrmUser,NotPrmUser,
141270,27165,54822,178,0,N,1,N,N,CP_Drtn,TT_Task,DT_FixedDUR2,TK_NotStart,PER1020,Other Permit (TBD),,1200,1200,800,0,0,0,800,0,0,0,,,,2024-09-25 08:00,2025-02-11 16:00,,2024-02-28 08:00,2024-07-16 16:00,2024-02-28 08:00,2024-07-16 16:00,2024-02-28 08:00,2024-07-16 16:00,2024-09-25 08:00,2025-02-11 16:00,,PT_Normal,,,,,9HxtQX3n4k6azoODe2qWhQ,yrW3Z2e/4Emq7R27uXRXsA,,,N,0,0,,,2023-02-08 18:30,2023-02-08 18:31,NotPrmUser,NotPrmUser,
141271,27165,54823,178,0,N,1,N,N,CP_Drtn,TT_Task,DT_FixedDUR2,TK_NotStart,PUB1000,Public Affairs / Community Outreach,,6216,6216,800,0,0,0,800,0,0,0,,,,2027-05-28 08:00,2027-10-14 16:00,,2024-06-05 08:00,2024-10-22 16:00,2024-06-05 08:00,2024-10-22 16:00,2024-06-05 08:00,2024-10-22 16:00,2027-05-28 08:00,2027-10-14 16:00,,PT_Normal,,,,,pKHb6sR05EyK/TwbKMYcsA,0SaChRI/L0+lVu9mURqvAQ,,,N,0,0,,,2023-02-08 18:30,2023-02-08 18:31,NotPrmUser,NotPrmUser,
141272,27165,54824,178,0,N,1,N,N,CP_Drtn,TT_Task,DT_FixedDUR2,TK_NotStart,LAN1000,Land Rights and Easement Acquisition,,880,880,1200,0,0,0,1200,0,0,0,,,,2024-07-17 08:00,2025-02-11 16:00,,2024-02-14 08:00,2024-09-10 16:00,2024-02-14 08:00,2024-09-10 16:00,2024-02-14 08:00,2024-09-10 16:00,2024-07-17 08:00,2025-02-11 16:00,,PT_Normal,,,,,LRNvGxo82k295FidaMLSZw,mvtv5o72oUq3oCUbvlLIXg,,,N,0,0,,,2023-02-08 18:30,2023-02-08 18:31,NotPrmUser,NotPrmUser,
141273,27165,54824,178,0,N,1,N,N,CP_Drtn,TT_Task,DT_FixedDUR2,TK_NotStart,LAN1010,Tribal Land Rights,,880,880,1200,0,0,0,1200,0,0,0,,,,2024-07-17 08:00,2025-02-11 16:00,,2024-02-14 08:00,2024-09-10 16:00,2024-02-14 08:00,2024-09-10 16:00,2024-02-14 08:00,2024-09-10 16:00,2024-07-17 08:00,2025-02-11 16:00,,PT_Normal,,,,,7LOBNjMzlEy6tk6cBgYwNw,hJHRPvjOdEGvG630CdAA6w,,,N,0,0,,,2023-02-08 18:30,2023-02-08 18:31,NotPrmUser,NotPrmUser,
141274,27165,54824,178,0,N,1,N,N,CP_Drtn,TT_Task,DT_FixedDUR2,TK_NotStart,LAN1020,Laydown Yards,,880,880,1200,0,0,0,1200,0,0,0,,,,2024-07-17 08:00,2025-02-11 16:00,,2024-02-14 08:00,2024-09-10 16:00,2024-02-14 08:00,2024-09-10 16:00,2024-02-14 08:00,2024-09-10 16:00,2024-07-17 08:00,2025-02-11 16:00,,PT_Normal,,,,,sl9jhDZnqU2mUbvs1HwfSw,zQArQ8Gcu0S/8MqfpOd4bw,,,N,0,0,,,2023-02-08 18:30,2023-02-08 18:31,NotPrmUser,NotPrmUser,
141275,27165,54825,178,0,N,1,N,N,CP_Drtn,TT_Task,DT_FixedDUR2,TK_NotStart,ENV1000,10% Environmental Submittal,,880,0,200,0,0,0,200,0,0,0,,,,2024-04-03 08:00,2024-05-07 16:00,,2023-10-25 08:00,2023-11-30 16:00,2023-10-25 08:00,2023-11-30 16:00,2023-10-25 08:00,2023-11-30 16:00,2024-04-03 08:00,2024-05-07 16:00,,PT_Normal,,,,,NZBkhHQXhEahxL/PTH5iYw,2osvXl0JoUK6XhmtJgOP8g,,,N,0,0,,,2023-02-08 18:30,2023-02-08 18:31,NotPrmUser,NotPrmUser,
141276,27165,54825,178,0,N,1,N,N,CP_Drtn,TT_Task,DT_FixedDUR2,TK_NotStart,ENV1010,10% Environmental Review,,880,0,120,0,0,0,120,0,0,0,,,,2024-05-08 08:00,2024-05-28 16:00,,2023-12-01 08:00,2023-12-21 16:00,2023-12-01 08:00,2023-12-21 16:00,2023-12-01 08:00,2023-12-21 16:00,2024-05-08 08:00,2024-05-28 16:00,,PT_Normal,,,,,O6GcQE+4dUKD6oSSvIGs7A,po/TSPh8x0iI6lWBHTekFg,,,N,0,0,,,2023-02-08 18:30,2023-02-08 18:31,NotPrmUser,NotPrmUser,
141277,27165,54825,178,0,N,1,N,N,CP_Drtn,TT_Task,DT_FixedDUR2,TK_NotStart,ENV1020,30% Environmental Submittal,,840,0,200,0,0,0,200,0,0,0,,,,2024-09-18 08:00,2024-10-22 16:00,,2024-04-24 08:00,2024-05-28 16:00,2024-04-24 08:00,2024-05-28 16:00,2024-04-24 08:00,2024-05-28 16:00,2024-09-18 08:00,2024-10-22 16:00,,PT_Normal,,,,,247kxwpAjE+Xt5ooPfBiog,jQHtrpktuUyfPYJSEchhUg,,,N,0,0,,,2023-02-08 18:30,2023-02-08 18:31,NotPrmUser,NotPrmUser,
141278,27165,54825,178,0,N,1,N,N,CP_Drtn,TT_Task,DT_FixedDUR2,TK_NotStart,ENV1030,30% Environmental Review,,840,0,120,0,0,0,120,0,0,0,,,,2024-10-23 08:00,2024-11-12 16:00,,2024-05-29 08:00,2024-06-18 16:00,2024-05-29 08:00,2024-06-18 16:00,2024-05-29 08:00,2024-06-18 16:00,2024-10-23 08:00,2024-11-12 16:00,,PT_Normal,,,,,QksvTYnIkEe5bGivC8aRGg,r2L+n6h9w02EU4atZHPqFQ,,,N,0,0,,,2023-02-08 18:30,2023-02-08 18:31,NotPrmUser,NotPrmUser,
141279,27165,54825,178,0,N,1,N,N,CP_Drtn,TT_Task,DT_FixedDUR2,TK_NotStart,ENV1040,60% Environmental Submittal,,840,0,280,0,0,0,280,0,0,0,,,,2024-11-13 08:00,2024-12-31 16:00,,2024-06-19 08:00,2024-08-06 16:00,2024-06-19 08:00,2024-08-06 16:00,2024-06-19 08:00,2024-08-06 16:00,2024-11-13 08:00,2024-12-31 16:00,,PT_Normal,,,,,AsioxjJUSUaHjKv898HDLA,LBUX2rLyjE2yuBDA6dpJiA,,,N,0,0,,,2023-02-08 18:30,2023-02-08 18:31,NotPrmUser,NotPrmUser,
141280,27165,54825,178,0,N,1,N,N,CP_Drtn,TT_Task,DT_FixedDUR2,TK_NotStart,ENV1050,60% Environmental Release,,960,960,120,0,0,0,120,0,0,0,,,,2025-01-22 08:00,2025-02-11 16:00,,2024-08-07 08:00,2024-08-27 16:00,2024-08-07 08:00,2024-08-27 16:00,2024-08-07 08:00,2024-08-27 16:00,2025-01-22 08:00,2025-02-11 16:00,,PT_Normal,,,,,6i8sDnwkHEeu2We3gJpS2A,hUsUnc7oWEe/oSzOnKOEdw,,,N,0,0,,,2023-02-08 18:30,2023-02-08 18:31,NotPrmUser,NotPrmUser,
141281,27165,54825,178,0,N,1,N,N,CP_Drtn,TT_Task,DT_FixedDUR2,TK_NotStart,ENV1060,BIA NEPA Submittal,,840,0,80,0,0,0,80,0,0,0,,,,2025-01-01 08:00,2025-01-14 16:00,,2024-08-07 08:00,2024-08-20 16:00,2024-08-07 08:00,2024-08-20 16:00,2024-08-07 08:00,2024-08-20 16:00,2025-01-01 08:00,2025-01-14 16:00,,PT_Normal,,,,,m7U7Xa03JU2H7zEe8Aa5lA,koWLggYKMEa+A2RlOo9cmQ,,,N,0,0,,,2023-02-08 18:30,2023-02-08 18:31,NotPrmUser,NotPrmUser,
141282,27165,54825,178,0,N,1,N,N,CP_Drtn,TT_Task,DT_FixedDUR2,TK_NotStart,ENV1070,"BIA Received (Add 250 days, if needed)",,840,840,160,0,0,0,160,0,0,0,,,,2025-01-15 08:00,2025-02-11 16:00,,2024-08-21 08:00,2024-09-17 16:00,2024-08-21 08:00,2024-09-17 16:00,2024-08-21 08:00,2024-09-17 16:00,2025-01-15 08:00,2025-02-11 16:00,,PT_Normal,,,,,7PLRiXzu20aZM8qrmFYo5A,jmRMowjQQUKW4zejGRy+bg,,,N,0,0,,,2023-02-08 18:30,2023-02-08 18:31,NotPrmUser,NotPrmUser,
141283,27165,54815,178,0,N,1,N,N,CP_Drtn,TT_Task,DT_FixedDUR2,TK_NotStart,DES1010,Seismic / Geotech Submittal,,880,0,200,0,0,0,200,0,0,0,,,,2024-05-29 08:00,2024-07-02 16:00,,2023-12-26 08:00,2024-01-30 16:00,2023-12-26 08:00,2024-01-30 16:00,2023-12-26 08:00,2024-01-30 16:00,2024-05-29 08:00,2024-07-02 16:00,,PT_Normal,,,,,yi87ZY624k2qkiPphqYAyA,pvZ8VL//aUKA6qGPnxCaeA,,,N,0,0,,,2023-02-08 18:30,2023-02-08 18:31,NotPrmUser,NotPrmUser,
141284,27165,54815,178,0,N,1,N,N,CP_Drtn,TT_Task,DT_FixedDUR2,TK_NotStart,DES1020,Potholing Submittal,,880,40,200,0,0,0,200,0,0,0,,,,2024-07-03 08:00,2024-08-06 16:00,,2024-01-31 08:00,2024-03-05 16:00,2024-01-31 08:00,2024-03-05 16:00,2024-01-31 08:00,2024-03-05 16:00,2024-07-03 08:00,2024-08-06 16:00,,PT_Normal,,,,,tPrNA5it/k6Lsi1alFadCg,JB1lknNRHkeX0/kmUf2bcg,,,N,0,0,,,2023-02-08 18:30,2023-02-08 18:31,NotPrmUser,NotPrmUser,
141285,27165,54815,178,0,N,1,N,N,CP_Drtn,TT_Task,DT_FixedDUR2,TK_NotStart,DES1030,Potholing Release /Perform Potholing,,840,0,240,0,0,0,240,0,0,0,,,,2024-08-07 08:00,2024-09-17 16:00,,2024-03-13 08:00,2024-04-23 16:00,2024-03-13 08:00,2024-04-23 16:00,2024-03-13 08:00,2024-04-23 16:00,2024-08-07 08:00,2024-09-17 16:00,,PT_Normal,,,,,YfN6ud189UWz4VEKyWRm6w,jC0KKLxIl0SuepwfQGD/gg,,,N,0,0,,,2023-02-08 18:30,2023-02-08 18:31,NotPrmUser,NotPrmUser,
141286,27165,54827,178,0,N,1,N,N,CP_Drtn,TT_Task,DT_FixedDUR2,TK_NotStart,PCON100,Initiate Performance Partnering Process @ 60%,,1000,0,40,0,0,0,40,0,0,0,,,,2024-12-11 08:00,2024-12-17 16:00,,2024-06-19 08:00,2024-06-25 16:00,2024-06-19 08:00,2024-06-25 16:00,2024-06-19 08:00,2024-06-25 16:00,2024-12-11 08:00,2024-12-17 16:00,,PT_Normal,,,,,pqwYqj8PRUCZl/cDewSolg,oGT34T5FpUWIsF4gv7I/nQ,,,N,0,0,,,2023-02-08 18:30,2023-02-08 18:31,NotPrmUser,NotPrmUser,
141287,27165,54827,178,0,N,1,N,N,CP_Drtn,TT_Task,DT_FixedDUR2,TK_NotStart,PCON110,Receive Estimate from Contractor,,1000,0,120,0,0,0,120,0,0,0,,,,2024-12-18 08:00,2025-01-07 16:00,,2024-06-26 08:00,2024-07-16 16:00,2024-06-26 08:00,2024-07-16 16:00,2024-06-26 08:00,2024-07-16 16:00,2024-12-18 08:00,2025-01-07 16:00,,PT_Normal,,,,,2vbcxTdUskCh7NDKy7yHlA,FgGXstq9Bk+05ak1QrLaZQ,,,N,0,0,,,2023-02-08 18:30,2023-02-08 18:31,NotPrmUser,NotPrmUser,
141288,27165,54827,178,0,N,1,N,N,CP_Drtn,TT_Task,DT_FixedDUR2,TK_NotStart,PCON120,Bid Estimate Negotiations,,1000,0,80,0,0,0,80,0,0,0,,,,2025-01-08 08:00,2025-01-21 16:00,,2024-07-17 08:00,2024-07-30 16:00,2024-07-17 08:00,2024-07-30 16:00,2024-07-17 08:00,2024-07-30 16:00,2025-01-08 08:00,2025-01-21 16:00,,PT_Normal,,,,,wHIY2Hffr0OLkFJPXZk6WA,dRAJsoQC0kSlEzZlgmi/hA,,,N,0,0,,,2023-02-08 18:30,2023-02-08 18:31,NotPrmUser,NotPrmUser,
141289,27165,54827,178,0,N,1,N,N,CP_Drtn,TT_Task,DT_FixedDUR2,TK_NotStart,PCON130,Revise Estimate based on IFC,,1000,0,40,0,0,0,40,0,0,0,,,,2025-01-22 08:00,2025-01-28 16:00,,2024-07-31 08:00,2024-08-06 16:00,2024-07-31 08:00,2024-08-06 16:00,2024-07-31 08:00,2024-08-06 16:00,2025-01-22 08:00,2025-01-28 16:00,,PT_Normal,,,,,PvNc1aQRQk6B2Ls2iUdB8Q,bFdokqt86UeH8GCPDC3K3g,,,N,0,0,,,2023-02-08 18:30,2023-02-08 18:31,NotPrmUser,NotPrmUser,
141290,27165,54827,178,0,N,1,N,N,CP_Drtn,TT_Task,DT_FixedDUR2,TK_NotStart,PCON140,Issue Release,,1000,1000,80,0,0,0,80,0,0,0,,,,2025-01-29 08:00,2025-02-11 16:00,,2024-08-07 08:00,2024-08-20 16:00,2024-08-07 08:00,2024-08-20 16:00,2024-08-07 08:00,2024-08-20 16:00,2025-01-29 08:00,2025-02-11 16:00,,PT_Normal,,,,,T4fStNY0x0eqm7k9QSoL7A,F/jQrRDqrUaN4zJ0eNMF7g,,,N,0,0,,,2023-02-08 18:30,2023-02-08 18:31,NotPrmUser,NotPrmUser,
141291,27165,54829,178,0,N,1,N,N,CP_Drtn,TT_Task,DT_FixedDUR2,TK_NotStart,PCON200,Civil Pre-Construction Meeting (Civil Construction Ready),,0,0,40,0,0,0,40,0,0,0,,,,2025-02-12 08:00,2025-02-18 16:00,,2025-02-12 08:00,2025-02-18 16:00,2025-02-12 08:00,2025-02-18 16:00,2025-02-12 08:00,2025-02-18 16:00,2025-02-12 08:00,2025-02-18 16:00,,PT_Normal,,,,,7UirdxxlQ0GN1JT0FAzvfg,juMbLly8ok6NgFcrjFkK9Q,,,Y,0,0,,,2023-02-08 18:30,2023-02-08 18:31,NotPrmUser,NotPrmUser,
141292,27165,54829,178,0,N,1,N,N,CP_Drtn,TT_Task,DT_FixedDUR2,TK_NotStart,PCON210,Electrical - Pre-Construction Meeting (Electical Construction Ready),,240,0,40,0,0,0,40,0,0,0,,,,2025-03-26 08:00,2025-04-01 16:00,,2025-02-12 08:00,2025-02-18 16:00,2025-02-12 08:00,2025-02-18 16:00,2025-02-12 08:00,2025-02-18 16:00,2025-03-26 08:00,2025-04-01 16:00,,PT_Normal,,,,,s+hActd6yEicrU5HPOS2vg,dtlRB/etBUWyPtRrqmcy7g,,,N,0,0,,,2023-02-08 18:30,2023-02-08 18:31,NotPrmUser,NotPrmUser,
141293,27165,54828,178,0,N,1,N,N,CP_Drtn,TT_Task,DT_FixedDUR2,TK_NotStart,PCON150,Initiate Performance Partnering Process @ 60%,,1480,0,40,0,0,0,40,0,0,0,,,,2025-01-22 08:00,2025-01-28 16:00,,2024-05-08 08:00,2024-05-14 16:00,2024-05-08 08:00,2024-05-14 16:00,2024-05-08 08:00,2024-05-14 16:00,2025-01-22 08:00,2025-01-28 16:00,,PT_Normal,,,,,FgDWNHPKL0KGxaNbIlQRKA,s/8BCdvU+UiQgxMmy2r1ng,,,N,0,0,,,2023-02-08 18:30,2023-02-08 18:31,NotPrmUser,NotPrmUser,
141294,27165,54828,178,0,N,1,N,N,CP_Drtn,TT_Task,DT_FixedDUR2,TK_NotStart,PCON160,Receive Estimate from Contractor,,1480,0,120,0,0,0,120,0,0,0,,,,2025-01-29 08:00,2025-02-18 16:00,,2024-05-15 08:00,2024-06-04 16:00,2024-05-15 08:00,2024-06-04 16:00,2024-05-15 08:00,2024-06-04 16:00,2025-01-29 08:00,2025-02-18 16:00,,PT_Normal,,,,,BI8I/PKuXUqO98etaKcvLw,chj/h1Sj+Ui7u1xpxRPGMA,,,N,0,0,,,2023-02-08 18:30,2023-02-08 18:31,NotPrmUser,NotPrmUser,
141295,27165,54828,178,0,N,1,N,N,CP_Drtn,TT_Task,DT_FixedDUR2,TK_NotStart,PCON170,Bid Estimate Negotiations,,1480,0,80,0,0,0,80,0,0,0,,,,2025-02-19 08:00,2025-03-04 16:00,,2024-06-05 08:00,2024-06-18 16:00,2024-06-05 08:00,2024-06-18 16:00,2024-06-05 08:00,2024-06-18 16:00,2025-02-19 08:00,2025-03-04 16:00,,PT_Normal,,,,,c0knXM69l0i1jeTwD+yb8A,G55OZmof3U2UP4y+sJLb/A,,,N,0,0,,,2023-02-08 18:30,2023-02-08 18:31,NotPrmUser,NotPrmUser,
141296,27165,54828,178,0,N,1,N,N,CP_Drtn,TT_Task,DT_FixedDUR2,TK_NotStart,PCON180,Revise Estimate based on IFC,,1480,0,40,0,0,0,40,0,0,0,,,,2025-03-05 08:00,2025-03-11 16:00,,2024-06-19 08:00,2024-06-25 16:00,2024-06-19 08:00,2024-06-25 16:00,2024-06-19 08:00,2024-06-25 16:00,2025-03-05 08:00,2025-03-11 16:00,,PT_Normal,,,,,oL3bIESt20eSL9PkbYiuDw,yo5rPGLC6E+BHys7PO4rfg,,,N,0,0,,,2023-02-08 18:30,2023-02-08 18:31,NotPrmUser,NotPrmUser,
141297,27165,54828,178,0,N,1,N,N,CP_Drtn,TT_Task,DT_FixedDUR2,TK_NotStart,PCON190,Issue Release,,1480,1240,80,0,0,0,80,0,0,0,,,,2025-03-12 08:00,2025-03-25 16:00,,2024-06-26 08:00,2024-07-09 16:00,2024-06-26 08:00,2024-07-09 16:00,2024-06-26 08:00,2024-07-09 16:00,2025-03-12 08:00,2025-03-25 16:00,,PT_Normal,,,,,Snhv06HZ9ESJnVGsXiJIrA,S6NgR83aiU2ojl+dckob+w,,,N,0,0,,,2023-02-08 18:30,2023-02-08 18:31,NotPrmUser,NotPrmUser,
141298,27165,54821,178,0,N,1,N,N,CP_Drtn,TT_Task,DT_FixedDUR2,TK_NotStart,PRO1010,Order Long Lead Civil Material,,680,680,1200,0,0,0,1200,0,0,0,,,,2024-07-17 08:00,2025-02-11 16:00,,2024-03-20 08:00,2024-10-15 16:00,2024-03-20 08:00,2024-10-15 16:00,2024-03-20 08:00,2024-10-15 16:00,2024-07-17 08:00,2025-02-11 16:00,,PT_Normal,,,,,kGkBWcW2gkOUT1lYEjynyA,jwoW+p1CEUWpQuYKjGY/Qg,,,N,0,0,,,2023-02-08 18:30,2023-02-08 18:31,NotPrmUser,NotPrmUser,
141299,27165,54821,178,0,N,1,N,N,CP_Drtn,TT_Task,DT_FixedDUR2,TK_NotStart,PRO1050,Order Short Lead Materials,,600,600,200,0,0,0,200,0,0,0,,,,2025-01-08 08:00,2025-02-11 16:00,,2024-09-25 08:00,2024-10-29 16:00,2024-09-25 08:00,2024-10-29 16:00,2024-09-25 08:00,2024-10-29 16:00,2025-01-08 08:00,2025-02-11 16:00,,PT_Normal,,,,,8ekdHnEl5kCtWlGTt3d0Tw,uF7S6Tq0dkm2nRYewbgYBw,,,N,0,0,,,2023-02-08 18:30,2023-02-08 18:31,NotPrmUser,NotPrmUser,
141300,27165,54821,178,0,N,1,N,N,CP_Drtn,TT_Task,DT_FixedDUR2,TK_NotStart,PRO1030,Order Long Lead Electrical Materials,,920,680,800,0,0,0,800,0,0,0,,,,2024-11-06 08:00,2025-03-25 16:00,,2024-05-29 08:00,2024-10-15 16:00,2024-05-29 08:00,2024-10-15 16:00,2024-05-29 08:00,2024-10-15 16:00,2024-11-06 08:00,2025-03-25 16:00,,PT_Normal,,,,,ms81pf52k0Gir9xXTy0ogA,miuoHwVtdUGi9t8t1Zjoxg,,,N,0,0,,,2023-02-08 18:30,2023-02-08 18:31,NotPrmUser,NotPrmUser,
141301,27165,54831,178,0,N,1,N,N,CP_Drtn,TT_Task,DT_FixedDUR2,TK_NotStart,CON2000,Civil Construction (Trenching 300 feet/day),7730,0,0,3520,0,7208,7208,3520,0,0,0,,,,2025-02-19 08:00,2026-10-27 16:00,,2025-02-19 08:00,2026-10-27 16:00,2025-02-19 08:00,2026-10-27 16:00,2025-02-19 08:00,2026-10-27 16:00,2025-02-19 08:00,2026-10-27 16:00,,PT_Normal,,,,,nFaeMRFEk02sL1f2ydh8kQ,izRPxXObLEaj+P9C1Z8iDw,,,Y,0,0,,,2023-02-08 18:30,2023-02-08 19:11,NotPrmUser,NotPrmUser,
141302,27165,54832,178,0,N,1,N,N,CP_Drtn,TT_Task,DT_FixedDUR2,TK_NotStart,CON3000,Electrical Construction,7786,0,0,3280,0,1640,1640,3280,0,0,0,,,,2025-04-02 08:00,2026-10-27 16:00,,2025-04-02 08:00,2026-10-27 16:00,2025-04-02 08:00,2026-10-27 16:00,2025-04-02 08:00,2026-10-27 16:00,2025-04-02 08:00,2026-10-27 16:00,,PT_Normal,,,,,2/lCslpPl0aRjVh6qCOEzQ,y9Iwhx/tc0ucQiB1lXFE0w,,,Y,0,0,,,2023-02-08 18:30,2023-02-08 19:35,NotPrmUser,NotPrmUser,
141303,27165,54833,178,0,N,1,N,N,CP_Drtn,TT_Task,DT_FixedDUR2,TK_NotStart,CON4000,Service Cutover,,1056,0,2920,0,0,0,2920,0,0,0,,,,2025-12-05 08:00,2027-04-29 16:00,,2025-06-04 08:00,2026-10-27 16:00,2025-06-04 08:00,2026-10-27 16:00,2025-06-04 08:00,2026-10-27 16:00,2025-12-05 08:00,2027-04-29 16:00,,PT_Normal,,,,,hLwK+/TDkUqtmNIP4uaQ0A,KIKOcr8aTEaIHnCGP87TMA,,,N,0,0,,,2023-02-08 18:30,2023-02-08 18:31,NotPrmUser,NotPrmUser,
141304,27165,54834,178,0,N,1,N,N,CP_Drtn,TT_Task,DT_FixedDUR2,TK_NotStart,CON5000,Scada Construction,,1056,0,520,0,0,0,520,0,0,0,,,,2027-01-29 08:00,2027-04-29 16:00,,2026-07-29 08:00,2026-10-27 16:00,2026-07-29 08:00,2026-10-27 16:00,2026-07-29 08:00,2026-10-27 16:00,2027-01-29 08:00,2027-04-29 16:00,,PT_Normal,,,,,7DNO6t2Pk0+6DFMPIkq6+g,1RCvoO47TUKEMEDWkIsfuw,,,N,0,0,,,2023-02-08 18:30,2023-02-08 18:31,NotPrmUser,NotPrmUser,
141305,27165,54835,178,0,N,1,N,N,CP_Drtn,TT_Task,DT_FixedDUR2,TK_NotStart,CON6000,Substation Construction,,1056,0,520,0,0,0,520,0,0,0,,,,2027-01-29 08:00,2027-04-29 16:00,,2026-07-29 08:00,2026-10-27 16:00,2026-07-29 08:00,2026-10-27 16:00,2026-07-29 08:00,2026-10-27 16:00,2027-01-29 08:00,2027-04-29 16:00,,PT_Normal,,,,,HLL/ItBjV0CifhfxLQLROg,tKndsYJcxEi9QmdMWnRCgA,,,N,0,0,,,2023-02-08 18:30,2023-02-08 18:31,NotPrmUser,NotPrmUser,
141306,27165,54836,178,0,N,1,N,N,CP_Drtn,TT_Task,DT_FixedDrtn,TK_NotStart,CON7000,Overhead RFS (1000 feet per day),7785,0,0,1056,0,1056,1056,1056,0,0,0,,,,2026-10-28 08:00,2027-04-29 16:00,,2026-10-28 08:00,2027-04-29 16:00,2026-10-28 08:00,2027-04-29 16:00,2026-10-28 08:00,2027-04-29 16:00,2026-10-28 08:00,2027-04-29 16:00,,PT_Normal,,,,,/lzIBrIXhkSdBqSZOZ2JFA,r0En7xRxHU+HobocNNcMLw,,,Y,0,0,,,2023-02-08 18:30,2023-02-08 18:31,NotPrmUser,NotPrmUser,
141307,27165,54830,178,0,N,1,N,N,CP_Drtn,TT_Task,DT_FixedDUR2,TK_NotStart,ISD1000,ISD - Energize - Put in service,,2008,2008,8,0,0,0,8,25,0,25,,,,2027-10-14 08:00,2027-10-14 16:00,,2026-10-28 08:00,2026-10-28 16:00,2026-10-28 08:00,2026-10-28 16:00,2026-10-28 08:00,2026-10-28 16:00,2027-10-14 08:00,2027-10-14 16:00,,PT_Normal,,,,,UCRlgXMgREeoP+G/fyghUg,nsvPWRLK502vlLRGcpvTrg,,,N,0,0,,,2023-02-08 18:30,2023-02-08 18:31,NotPrmUser,NotPrmUser,
141308,27165,54813,178,0,N,1,N,N,CP_Drtn,TT_Task,DT_FixedDUR2,TK_NotStart,SUR1000,Survey and LiDAR,7385,0,0,400,0,9182,9182,400,0,0,0,,,,2023-08-16 08:00,2023-10-24 16:00,,2023-08-16 08:00,2023-10-24 16:00,2023-08-16 08:00,2023-10-24 16:00,2023-08-16 08:00,2023-10-24 16:00,2023-08-16 08:00,2023-10-24 16:00,,PT_Normal,,,,,bc6968ZB60WGNqBPXZKCjg,nUKOJXdkiE26W4C1Qt6izQ,,,Y,0,0,,,2023-02-08 18:30,2023-02-08 18:31,NotPrmUser,NotPrmUser,
141309,27165,54818,178,0,N,1,N,N,CP_Drtn,TT_Task,DT_FixedDUR2,TK_NotStart,DES1200,Receive Services Worksheet and Cable Info from Design Firms,,760,0,160,0,0,0,160,0,0,0,,,,2024-05-15 08:00,2024-06-11 16:00,,2024-01-03 08:00,2024-01-30 16:00,2024-01-03 08:00,2024-01-30 16:00,2024-01-03 08:00,2024-01-30 16:00,2024-05-15 08:00,2024-06-11 16:00,,PT_Normal,,,,,0IJxKArKNkmlm8CUXjJZOw,xIsoQ7psCUeU4qc28r3CIA,,,N,0,0,,,2023-02-08 18:30,2023-02-08 18:31,NotPrmUser,NotPrmUser,
141310,27165,54818,178,0,N,1,N,N,CP_Drtn,TT_Task,DT_FixedDUR2,TK_NotStart,DES1210,Issue to Trench Inspectors,,2376,1320,80,0,0,0,80,0,0,0,,,,2025-11-21 08:00,2025-12-04 16:00,,2024-10-02 08:00,2024-10-15 16:00,2024-10-02 08:00,2024-10-15 16:00,2024-10-02 08:00,2024-10-15 16:00,2025-11-21 08:00,2025-12-04 16:00,,PT_Normal,,,,,Fy00GcL4cE2iTINyUeIMoA,+MBcsClLl0OidSYSBENRLw,,,N,0,0,,,2023-02-08 18:30,2023-02-08 18:31,NotPrmUser,NotPrmUser,
141311,27165,54830,178,0,N,1,N,N,CP_Drtn,TT_FinMile,DT_FixedDrtn,TK_NotStart,CON1020,Construction Complete,,0,0,0,0,0,0,0,0,0,0,,,,2027-04-29 16:00,2027-04-29 16:00,,2027-04-29 16:00,2027-04-29 16:00,2027-04-29 16:00,2027-04-29 16:00,2027-04-29 16:00,2027-04-29 16:00,2027-04-29 16:00,2027-04-29 16:00,,PT_Normal,,,,,vzXDD/biukefieTxvems3w,IuS1iappUkGu+QS1Z4UaiA,,,Y,0,0,,,2023-02-08 18:30,2023-02-08 18:31,NotPrmUser,NotPrmUser,
141312,27165,54830,178,0,N,1,N,N,CP_Drtn,TT_Mile,DT_FixedDrtn,TK_NotStart,CON1010,Construction Start,,5536,5536,0,0,0,0,0,0,0,0,,,,2027-10-14 16:00,2027-10-14 16:00,,2025-02-19 08:00,2025-02-19 08:00,2025-02-19 08:00,2025-02-19 08:00,2025-02-19 08:00,2025-02-19 08:00,2027-10-14 16:00,2027-10-14 16:00,,PT_Normal,,,,,Ynzvza9T4ESLDvGYBoLLSQ,ercxJNhpHkKvoybTx2IvoQ,,,N,0,0,,,2023-02-08 18:30,2023-02-08 18:31,NotPrmUser,NotPrmUser,
141313,27165,54839,178,0,N,1,N,N,CP_Drtn,TT_Task,DT_FixedDUR2,TK_NotStart,CLO1020,GIS/As-Built and Records Complete,,480,480,480,0,0,0,480,0,0,0,,,,2027-07-23 08:00,2027-10-14 16:00,,2027-04-30 08:00,2027-07-22 16:00,2027-04-30 08:00,2027-07-22 16:00,2027-04-30 08:00,2027-07-22 16:00,2027-07-23 08:00,2027-10-14 16:00,,PT_Normal,,,,,S/+1tGM290mU7nO+inR7FA,2f5+eOwByUmxOS7D6TqoOw,,,N,0,0,,,2023-02-08 18:30,2023-02-08 18:31,NotPrmUser,NotPrmUser,
141314,27165,54840,178,0,N,1,N,N,CP_Drtn,TT_Task,DT_FixedDUR2,TK_NotStart,CLO1030,"PO's complete, Work Order Reconcilled and Closed",,0,0,960,0,0,0,960,0,0,0,,,,2027-04-30 08:00,2027-10-14 16:00,,2027-04-30 08:00,2027-10-14 16:00,2027-04-30 08:00,2027-10-14 16:00,2027-04-30 08:00,2027-10-14 16:00,2027-04-30 08:00,2027-10-14 16:00,,PT_Normal,,,,,xA3bW8Lph0uBCb8Iq8j4sQ,FVmahLBF40+HbveTX+cSPw,,,Y,0,0,,,2023-02-08 18:30,2023-02-08 18:31,NotPrmUser,NotPrmUser,
141315,27165,54838,178,0,N,1,N,N,CP_Drtn,TT_FinMile,DT_FixedDrtn,TK_NotStart,CLO1010,Project Complete,,0,0,0,0,0,0,0,0,0,0,,,,2027-10-14 16:00,2027-10-14 16:00,,2027-10-14 16:00,2027-10-14 16:00,2027-10-14 16:00,2027-10-14 16:00,2027-10-14 16:00,2027-10-14 16:00,2027-10-14 16:00,2027-10-14 16:00,,PT_Normal,,,,,qVBLganMZkqfIk3Nx6Ugpw,mKxWG2H6hk+8/FgQ4rD8Tg,,,Y,0,0,,,2023-02-08 18:30,2023-02-08 18:31,NotPrmUser,NotPrmUser,
141316,27165,54814,178,0,N,1,N,N,CP_Drtn,TT_LOE,DT_FixedDUR2,TK_NotStart,DES1000,Design Summary,7257,4096,0,2680,0,16233,16233,2680,0,0,0,,,,2023-10-25 08:00,2027-01-28 16:00,,2023-10-25 08:00,2025-02-11 16:00,2023-10-25 08:00,2025-02-11 16:00,2023-10-25 08:00,2025-02-11 16:00,2023-10-25 08:00,2027-01-28 16:00,,PT_Normal,,,,,qOVqLkMqJUWS30l1TsNYzw,ftpFlIcob0mj4p7xjFO9kg,,,N,0,0,,,2023-02-08 18:30,2023-02-08 18:31,NotPrmUser,NotPrmUser,
141317,27165,54830,178,0,N,1,N,N,CP_Drtn,TT_LOE,DT_FixedDUR2,TK_NotStart,CON1000,Construction Summary,7385,0,0,4576,0,9972,9972,4576,25,0,25,,,,2027-04-29 16:00,2027-04-29 16:00,,2025-02-19 08:00,2027-04-29 16:00,2025-02-19 08:00,2027-04-29 16:00,2025-02-19 08:00,2027-04-29 16:00,2027-04-29 16:00,2027-04-29 16:00,,PT_Normal,,,,,2FrfNiRMr0yJPCKacsr6Vw,DM0XQa435U6rlecqTcwSbw,,,N,0,0,,,2023-02-08 18:30,2023-02-08 18:31,NotPrmUser,NotPrmUser,
141318,27165,54838,178,0,N,1,N,N,CP_Drtn,TT_LOE,DT_FixedDUR2,TK_NotStart,CLO1000,Close Out Summary,7385,0,0,960,0,4482,4482,960,0,0,0,,,,2027-04-30 08:00,2027-10-14 16:00,,2027-04-30 08:00,2027-10-14 16:00,2027-04-30 08:00,2027-10-14 16:00,2027-04-30 08:00,2027-10-14 16:00,2027-04-30 08:00,2027-10-14 16:00,,PT_Normal,,,,,OtnwneYwq0+WtsXY7/s1wg,Y2YkEPgoekS5s7QEF4dHzw,,,Y,0,0,,,2023-02-08 18:30,2023-02-08 18:31,NotPrmUser,NotPrmUser,
141319,27165,54811,178,0,N,1,N,N,CP_Drtn,TT_LOE,DT_FixedDUR2,TK_NotStart,PCON1000,Pre-Construction Summary,,0,0,3296,0,0,0,3296,0,0,0,,,,2023-07-17 08:00,2025-02-18 16:00,,2023-07-17 08:00,2025-02-18 16:00,2023-07-17 08:00,2025-02-18 16:00,2023-07-17 08:00,2025-02-18 16:00,2023-07-17 08:00,2025-02-18 16:00,,PT_Normal,,,,,aTFI/XYRykyM7YZEEIMuXw,GL54AdoME0+kFu+Ctp2HtA,,,Y,0,0,,,2023-02-08 18:30,2023-02-08 18:31,NotPrmUser,NotPrmUser,
141320,27166,54842,178,0,N,1,N,N,CP_Drtn,TT_Task,DT_FixedDUR2,TK_NotStart,SCO1000,Bundling / Phasing of circuits for project sequencing,,0,0,80,0,0,0,80,0,0,0,2023-07-31 00:00,,,2023-07-31 08:00,2023-08-11 16:00,,2023-07-31 08:00,2023-08-11 16:00,2023-07-31 08:00,2023-08-11 16:00,2023-07-31 08:00,2023-08-11 16:00,2023-07-31 08:00,2023-08-11 16:00,CS_MSOA,PT_Normal,,,,,0AGaDP5NMUCCv0rUQzduLg,dSUfImZZdU6DIdcyIrVTAQ,,,Y,0,0,,,2023-02-08 18:30,2023-02-08 18:31,NotPrmUser,NotPrmUser,
141321,27166,54842,178,0,N,1,N,N,CP_Drtn,TT_Task,DT_FixedDUR2,TK_NotStart,SCO1010,Constructability Review,,0,0,40,0,0,0,40,0,0,0,,,,2023-08-14 08:00,2023-08-18 16:00,,2023-08-14 08:00,2023-08-18 16:00,2023-08-14 08:00,2023-08-18 16:00,2023-08-14 08:00,2023-08-18 16:00,2023-08-14 08:00,2023-08-18 16:00,,PT_Normal,,,,,RZRKkR01RUOWgXleZ52+iA,iI9H53rYlUydzSkwy5guIw,,,Y,0,0,,,2023-02-08 18:30,2023-02-08 18:31,NotPrmUser,NotPrmUser,
141322,27166,54842,178,0,N,1,N,N,CP_Drtn,TT_Task,DT_FixedDUR2,TK_NotStart,SCO1020,SDG&E Review,,0,0,16,0,0,0,16,0,0,0,,,,2023-08-21 08:00,2023-08-22 16:00,,2023-08-21 08:00,2023-08-22 16:00,2023-08-21 08:00,2023-08-22 16:00,2023-08-21 08:00,2023-08-22 16:00,2023-08-21 08:00,2023-08-22 16:00,,PT_Normal,,,,,gVjK0yZSmEKHkNm+2YKABg,af8yQu2U9Umn80kaBDbwuQ,,,Y,0,0,,,2023-02-08 18:30,2023-02-08 18:31,NotPrmUser,NotPrmUser,
141323,27166,54843,178,0,N,1,N,N,CP_Drtn,TT_Task,DT_FixedDUR2,TK_NotStart,PLA1000,Workorder Setup,,0,0,40,0,0,0,40,0,0,0,,,,2023-08-23 08:00,2023-08-29 16:00,,2023-08-23 08:00,2023-08-29 16:00,2023-08-23 08:00,2023-08-29 16:00,2023-08-23 08:00,2023-08-29 16:00,2023-08-23 08:00,2023-08-29 16:00,,PT_Normal,,,,,XVpp6HVJkEOi7P65llZBHw,eQePiRJekU+PbxmK2a21BQ,,,Y,0,0,,,2023-02-08 18:30,2023-02-08 18:31,NotPrmUser,NotPrmUser,
141324,27166,54846,178,0,N,1,N,N,CP_Drtn,TT_Task,DT_FixedDUR2,TK_NotStart,DES1040,10% Submittal,,0,0,200,0,0,0,200,0,0,0,,,,2023-11-08 08:00,2023-12-14 16:00,,2023-11-08 08:00,2023-12-14 16:00,2023-11-08 08:00,2023-12-14 16:00,2023-11-08 08:00,2023-12-14 16:00,2023-11-08 08:00,2023-12-14 16:00,,PT_Normal,,,,,c0TWwKIy60a08q3IUdzMWA,XuCu17StC0a0QL5e4sWIPA,,,Y,0,0,,,2023-02-08 18:30,2023-02-08 18:31,NotPrmUser,NotPrmUser,
141325,27166,54846,178,0,N,1,N,N,CP_Drtn,TT_Task,DT_FixedDUR2,TK_NotStart,DES1050,30% Submittal,,0,0,400,0,0,0,400,0,0,0,,,,2023-12-15 08:00,2024-02-27 16:00,,2023-12-15 08:00,2024-02-27 16:00,2023-12-15 08:00,2024-02-27 16:00,2023-12-15 08:00,2024-02-27 16:00,2023-12-15 08:00,2024-02-27 16:00,,PT_Normal,,,,,cNE/9yUwIky7wEXTTiOmXA,gVghrf2ZVUeVYxGm0vj35w,,,Y,0,0,,,2023-02-08 18:30,2023-02-08 18:31,NotPrmUser,NotPrmUser,
141326,27166,54846,178,0,N,1,N,N,CP_Drtn,TT_Task,DT_FixedDUR2,TK_NotStart,DES1060,30% Review,,0,0,80,0,0,0,80,0,0,0,,,,2024-02-28 08:00,2024-03-12 16:00,,2024-02-28 08:00,2024-03-12 16:00,2024-02-28 08:00,2024-03-12 16:00,2024-02-28 08:00,2024-03-12 16:00,2024-02-28 08:00,2024-03-12 16:00,,PT_Normal,,,,,CCISpMhx8E2wdWgCoFz9Cg,t+sP+Y5K+km/purisizBpQ,,,Y,0,0,,,2023-02-08 18:30,2023-02-08 18:31,NotPrmUser,NotPrmUser,
141327,27166,54846,178,0,N,1,N,N,CP_Drtn,TT_Task,DT_FixedDUR2,TK_NotStart,DES1070,60% Submittal,,600,0,560,0,0,0,560,0,0,0,,,,2024-06-26 08:00,2024-10-01 16:00,,2024-03-13 08:00,2024-06-18 16:00,2024-03-13 08:00,2024-06-18 16:00,2024-03-13 08:00,2024-06-18 16:00,2024-06-26 08:00,2024-10-01 16:00,,PT_Normal,,,,,LC1FAUPZGk22ilfc0JX5Iw,zKEnzRXamESFJ97qtDkoNg,,,N,0,0,,,2023-02-08 18:30,2023-02-08 18:31,NotPrmUser,NotPrmUser,
141328,27166,54846,178,0,N,1,N,N,CP_Drtn,TT_Task,DT_FixedDUR2,TK_NotStart,DES1080,60% Review,,600,0,80,0,0,0,80,0,0,0,,,,2024-10-02 08:00,2024-10-15 16:00,,2024-06-19 08:00,2024-07-02 16:00,2024-06-19 08:00,2024-07-02 16:00,2024-06-19 08:00,2024-07-02 16:00,2024-10-02 08:00,2024-10-15 16:00,,PT_Normal,,,,,PvINtbBR0UykiEJV8pYVRw,7e9ptkcAH02QeUEiEvUmsQ,,,N,0,0,,,2023-02-08 18:30,2023-02-08 18:31,NotPrmUser,NotPrmUser,
141329,27166,54846,178,0,N,1,N,N,CP_Drtn,TT_Task,DT_FixedDUR2,TK_NotStart,DES1090,90% Submittal,,600,0,360,0,0,0,360,0,0,0,,,,2024-10-16 08:00,2024-12-17 16:00,,2024-07-03 08:00,2024-09-03 16:00,2024-07-03 08:00,2024-09-03 16:00,2024-07-03 08:00,2024-09-03 16:00,2024-10-16 08:00,2024-12-17 16:00,,PT_Normal,,,,,bOs3dtxOt0yhCNDQvnVSSw,5tUK4C37JkuN0L+nVyxOwg,,,N,0,0,,,2023-02-08 18:30,2023-02-08 18:31,NotPrmUser,NotPrmUser,
141330,27166,54846,178,0,N,1,N,N,CP_Drtn,TT_Task,DT_FixedDUR2,TK_NotStart,DES1100,90% Review,,600,0,80,0,0,0,80,0,0,0,,,,2024-12-18 08:00,2024-12-31 16:00,,2024-09-04 08:00,2024-09-17 16:00,2024-09-04 08:00,2024-09-17 16:00,2024-09-04 08:00,2024-09-17 16:00,2024-12-18 08:00,2024-12-31 16:00,,PT_Normal,,,,,2Gpg8MhlXEGDd0OymT0+TQ,EM0J/NHTPkmQZY4ZkEjxFA,,,N,0,0,,,2023-02-08 18:30,2023-02-08 18:31,NotPrmUser,NotPrmUser,
141331,27166,54846,178,0,N,1,N,N,CP_Drtn,TT_Task,DT_FixedDUR2,TK_NotStart,DES1110,100% Submittal,,680,0,160,0,0,0,160,0,0,0,,,,2025-01-15 08:00,2025-02-11 16:00,,2024-09-18 08:00,2024-10-15 16:00,2024-09-18 08:00,2024-10-15 16:00,2024-09-18 08:00,2024-10-15 16:00,2025-01-15 08:00,2025-02-11 16:00,,PT_Normal,,,,,uOuHsDNxvEK0/yg6xChpUg,ScnvF2pJNUK/1L4dNfGUDA,,,N,0,0,,,2023-02-08 18:30,2023-02-08 18:31,NotPrmUser,NotPrmUser,
141332,27166,54846,178,0,N,1,N,N,CP_Drtn,TT_Task,DT_FixedDUR2,TK_NotStart,DES1120,Issue IFC Design Package,,0,0,80,0,0,0,80,0,0,0,,,,2025-02-12 08:00,2025-02-25 16:00,,2025-02-12 08:00,2025-02-25 16:00,2025-02-12 08:00,2025-02-25 16:00,2025-02-12 08:00,2025-02-25 16:00,2025-02-12 08:00,2025-02-25 16:00,,PT_Normal,,,,,Rv74qHx70kCeDcoz6nbH4w,dmCp7xzZwEqTiLSlt4HTOQ,,,Y,0,0,,,2023-02-08 18:30,2023-02-08 18:31,NotPrmUser,NotPrmUser,
141333,27166,54847,178,0,N,1,N,N,CP_Drtn,TT_Task,DT_FixedDUR2,TK_NotStart,DES1130,60% Submittal,,840,0,480,0,0,0,480,0,0,0,,,,2024-07-10 08:00,2024-10-01 16:00,,2024-02-14 08:00,2024-05-07 16:00,2024-02-14 08:00,2024-05-07 16:00,2024-02-14 08:00,2024-05-07 16:00,2024-07-10 08:00,2024-10-01 16:00,,PT_Normal,,,,,s5JRJt6NtkaD6XrFKlb0bg,ac/kmtPuSkSx8ibYZmrz1g,,,N,0,0,,,2023-02-08 18:30,2023-02-08 18:31,NotPrmUser,NotPrmUser,
141334,27166,54847,178,0,N,1,N,N,CP_Drtn,TT_Task,DT_FixedDUR2,TK_NotStart,DES1140,60% Review,,920,0,80,0,0,0,80,0,0,0,,,,2024-10-16 08:00,2024-10-29 16:00,,2024-05-08 08:00,2024-05-21 16:00,2024-05-08 08:00,2024-05-21 16:00,2024-05-08 08:00,2024-05-21 16:00,2024-10-16 08:00,2024-10-29 16:00,,PT_Normal,,,,,GzeqM4PwFUmKvmXMJSiYjA,i1uazksptUaOoBs9bhpLyA,,,N,0,0,,,2023-02-08 18:30,2023-02-08 18:31,NotPrmUser,NotPrmUser,
141335,27166,54847,178,0,N,1,N,N,CP_Drtn,TT_Task,DT_FixedDUR2,TK_NotStart,DES1150,90% Submittal,,1120,0,400,0,0,0,400,0,0,0,,,,2024-12-04 08:00,2025-02-11 16:00,,2024-05-22 08:00,2024-07-30 16:00,2024-05-22 08:00,2024-07-30 16:00,2024-05-22 08:00,2024-07-30 16:00,2024-12-04 08:00,2025-02-11 16:00,,PT_Normal,,,,,9UVE9aJ2pECRyawGtFohEA,nfC4zNE9VUK6cn+7RCH7aA,,,N,0,0,,,2023-02-08 18:30,2023-02-08 18:31,NotPrmUser,NotPrmUser,
141336,27166,54847,178,0,N,1,N,N,CP_Drtn,TT_Task,DT_FixedDUR2,TK_NotStart,DES1160,90% Review,,1120,0,80,0,0,0,80,0,0,0,,,,2025-02-12 08:00,2025-02-25 16:00,,2024-07-31 08:00,2024-08-13 16:00,2024-07-31 08:00,2024-08-13 16:00,2024-07-31 08:00,2024-08-13 16:00,2025-02-12 08:00,2025-02-25 16:00,,PT_Normal,,,,,94MTFrw4SkSs2jr0jkAE1w,YFiz14cZCk+Qkm8/GNN23w,,,N,0,0,,,2023-02-08 18:30,2023-02-08 18:31,NotPrmUser,NotPrmUser,
141337,27166,54847,178,0,N,1,N,N,CP_Drtn,TT_Task,DT_FixedDUR2,TK_NotStart,DES1170,100% Submittal,,1120,880,160,0,0,0,160,0,0,0,,,,2025-02-26 08:00,2025-03-25 16:00,,2024-08-14 08:00,2024-09-10 16:00,2024-08-14 08:00,2024-09-10 16:00,2024-08-14 08:00,2024-09-10 16:00,2025-02-26 08:00,2025-03-25 16:00,,PT_Normal,,,,,zrs7AdzXe0eh4h67rxDh8w,qZ3KrtsnsUaTKLu/em9Chg,,,N,0,0,,,2023-02-08 18:30,2023-02-08 18:31,NotPrmUser,NotPrmUser,
141338,27166,54847,178,0,N,1,N,N,CP_Drtn,TT_Task,DT_FixedDUR2,TK_NotStart,DES1180,Issue IFC Design Package,,240,0,80,0,0,0,80,0,0,0,,,,2025-03-26 08:00,2025-04-08 16:00,,2025-02-12 08:00,2025-02-25 16:00,2025-02-12 08:00,2025-02-25 16:00,2025-02-12 08:00,2025-02-25 16:00,2025-03-26 08:00,2025-04-08 16:00,,PT_Normal,,,,,p8dzJWwn7U+6Co+qGsYHtw,1ZBnlMrVHkqYYRCP4sSZBw,,,N,0,0,,,2023-02-08 18:30,2023-02-08 18:31,NotPrmUser,NotPrmUser,
141339,27166,54848,178,0,N,1,N,N,CP_Drtn,TT_Task,DT_FixedDUR2,TK_NotStart,DES1190,Issue Services Worksheet to Design Firms,,760,0,160,0,0,0,160,0,0,0,,,,2024-05-01 08:00,2024-05-28 16:00,,2023-12-15 08:00,2024-01-16 16:00,2023-12-15 08:00,2024-01-16 16:00,2023-12-15 08:00,2024-01-16 16:00,2024-05-01 08:00,2024-05-28 16:00,,PT_Normal,,,,,uELORsHmH0qKOQ9wor0YdQ,Kvlsn6xnqkWhwh6WrHvPPw,,,N,0,0,,,2023-02-08 18:30,2023-02-08 18:31,NotPrmUser,NotPrmUser,
141340,27166,54849,178,0,N,1,N,N,CP_Drtn,TT_Task,DT_FixedDUR2,TK_NotStart,DES1220,SED Design,,6376,0,240,0,0,0,240,0,0,0,,,,2026-12-04 08:00,2027-01-14 16:00,,2023-11-08 08:00,2023-12-21 16:00,2023-11-08 08:00,2023-12-21 16:00,2023-11-08 08:00,2023-12-21 16:00,2026-12-04 08:00,2027-01-14 16:00,,PT_Normal,,,,,cwQSm6+M6UmaIpuuBX/NnQ,G0Wlbt7CP0O1ZSidskDevw,,,N,0,0,,,2023-02-08 18:30,2023-02-08 18:31,NotPrmUser,NotPrmUser,
141341,27166,54849,178,0,N,1,N,N,CP_Drtn,TT_Task,DT_FixedDUR2,TK_NotStart,DES1230,Issue IFC Design Package,,6376,5320,160,0,0,0,160,0,0,0,,,,2027-01-15 08:00,2027-02-11 16:00,,2023-12-26 08:00,2024-01-23 16:00,2023-12-26 08:00,2024-01-23 16:00,2023-12-26 08:00,2024-01-23 16:00,2027-01-15 08:00,2027-02-11 16:00,,PT_Normal,,,,,vGMoxDxzyEy2/I8ujSnGog,75sssXLxGkCGqQ+JmPNJWA,,,N,0,0,,,2023-02-08 18:30,2023-02-08 18:31,NotPrmUser,NotPrmUser,
141342,27166,54851,178,0,N,1,N,N,CP_Drtn,TT_Task,DT_FixedDUR2,TK_NotStart,PRO1000,Civil BOM - Long Lead @ 30%,,680,0,120,0,0,0,120,0,0,0,,,,2024-07-10 08:00,2024-07-30 16:00,,2024-03-13 08:00,2024-04-02 16:00,2024-03-13 08:00,2024-04-02 16:00,2024-03-13 08:00,2024-04-02 16:00,2024-07-10 08:00,2024-07-30 16:00,,PT_Normal,,,,,tHvuKBUFTkGpq66uFG/EqQ,JIbmFe9Fs0uWdgqry6scAA,,,N,0,0,,,2023-02-08 18:30,2023-02-08 18:31,NotPrmUser,NotPrmUser,
141343,27166,54851,178,0,N,1,N,N,CP_Drtn,TT_Task,DT_FixedDUR2,TK_NotStart,PRO1020,Electrical BOM - Long Lead @ 60%,,920,0,120,0,0,0,120,0,0,0,,,,2024-10-30 08:00,2024-11-19 16:00,,2024-05-22 08:00,2024-06-11 16:00,2024-05-22 08:00,2024-06-11 16:00,2024-05-22 08:00,2024-06-11 16:00,2024-10-30 08:00,2024-11-19 16:00,,PT_Normal,,,,,dxmdwwrTQkiFxg/UXWRnGg,KNIwd0nzakOwDZLWbsK28A,,,N,0,0,,,2023-02-08 18:30,2023-02-08 18:31,NotPrmUser,NotPrmUser,
141344,27166,54851,178,0,N,1,N,N,CP_Drtn,TT_Task,DT_FixedDUR2,TK_NotStart,PRO1040,BOM - Short Lead @ 60%,,600,0,120,0,0,0,120,0,0,0,,,,2025-01-01 08:00,2025-01-21 16:00,,2024-09-18 08:00,2024-10-08 16:00,2024-09-18 08:00,2024-10-08 16:00,2024-09-18 08:00,2024-10-08 16:00,2025-01-01 08:00,2025-01-21 16:00,,PT_Normal,,,,,mvmx/ENTP0a5cDkh0z8jSQ,OVQ2rEcThU+L8R72vEPwvg,,,N,0,0,,,2023-02-08 18:30,2023-02-08 18:31,NotPrmUser,NotPrmUser,
141345,27166,54852,178,0,N,1,N,N,CP_Drtn,TT_Task,DT_FixedDUR2,TK_NotStart,PER1000,CalTrans Permit,,0,0,2000,0,0,0,2000,0,0,0,,,,2024-03-13 08:00,2025-02-25 16:00,,2024-03-13 08:00,2025-02-25 16:00,2024-03-13 08:00,2025-02-25 16:00,2024-03-13 08:00,2025-02-25 16:00,2024-03-13 08:00,2025-02-25 16:00,,PT_Normal,,,,,vbt2B0K4c06SU6/WzGN4EA,WFFeTIu7HU+59js4ssm2ow,,,Y,0,0,,,2023-02-08 18:30,2023-02-08 18:31,NotPrmUser,NotPrmUser,
141346,27166,54852,178,0,N,1,N,N,CP_Drtn,TT_Task,DT_FixedDUR2,TK_NotStart,PER1010,City & County Permits,,1200,1200,800,0,0,0,800,0,0,0,,,,2024-10-09 08:00,2025-02-25 16:00,,2024-03-13 08:00,2024-07-30 16:00,2024-03-13 08:00,2024-07-30 16:00,2024-03-13 08:00,2024-07-30 16:00,2024-10-09 08:00,2025-02-25 16:00,,PT_Normal,,,,,64CJeHsQ70easikroPuPsg,4DiBWNFhd0uIzXFlGtlRRg,,,N,0,0,,,2023-02-08 18:30,2023-02-08 18:31,NotPrmUser,NotPrmUser,
141347,27166,54852,178,0,N,1,N,N,CP_Drtn,TT_Task,DT_FixedDUR2,TK_NotStart,PER1020,Other Permit (TBD),,1200,1200,800,0,0,0,800,0,0,0,,,,2024-10-09 08:00,2025-02-25 16:00,,2024-03-13 08:00,2024-07-30 16:00,2024-03-13 08:00,2024-07-30 16:00,2024-03-13 08:00,2024-07-30 16:00,2024-10-09 08:00,2025-02-25 16:00,,PT_Normal,,,,,s0ksPjnno028so3CPrbfsg,qBhOJTJXJUCgs7qUUpPP7w,,,N,0,0,,,2023-02-08 18:30,2023-02-08 18:31,NotPrmUser,NotPrmUser,
141348,27166,54853,178,0,N,1,N,N,CP_Drtn,TT_Task,DT_FixedDUR2,TK_NotStart,PUB1000,Public Affairs / Community Outreach,,6216,6216,800,0,0,0,800,0,0,0,,,,2027-06-11 08:00,2027-10-28 16:00,,2024-06-19 08:00,2024-11-05 16:00,2024-06-19 08:00,2024-11-05 16:00,2024-06-19 08:00,2024-11-05 16:00,2027-06-11 08:00,2027-10-28 16:00,,PT_Normal,,,,,jhYyJcONPUid2V1cUHnPxg,UKYj589wyUCjuti1lbhbfg,,,N,0,0,,,2023-02-08 18:30,2023-02-08 18:31,NotPrmUser,NotPrmUser,
141349,27166,54854,178,0,N,1,N,N,CP_Drtn,TT_Task,DT_FixedDUR2,TK_NotStart,LAN1000,Land Rights and Easement Acquisition,,880,880,1200,0,0,0,1200,0,0,0,,,,2024-07-31 08:00,2025-02-25 16:00,,2024-02-28 08:00,2024-09-24 16:00,2024-02-28 08:00,2024-09-24 16:00,2024-02-28 08:00,2024-09-24 16:00,2024-07-31 08:00,2025-02-25 16:00,,PT_Normal,,,,,oV0hzv7tzk+p02M8DBDj/g,I6sotsrthUG8boGjvayvbQ,,,N,0,0,,,2023-02-08 18:30,2023-02-08 18:31,NotPrmUser,NotPrmUser,
141350,27166,54854,178,0,N,1,N,N,CP_Drtn,TT_Task,DT_FixedDUR2,TK_NotStart,LAN1010,Tribal Land Rights,,880,880,1200,0,0,0,1200,0,0,0,,,,2024-07-31 08:00,2025-02-25 16:00,,2024-02-28 08:00,2024-09-24 16:00,2024-02-28 08:00,2024-09-24 16:00,2024-02-28 08:00,2024-09-24 16:00,2024-07-31 08:00,2025-02-25 16:00,,PT_Normal,,,,,nF2zPi3+50+mcevAM5nuzg,IVVwyiwEzE+KbxdDIjLH9g,,,N,0,0,,,2023-02-08 18:30,2023-02-08 18:31,NotPrmUser,NotPrmUser,
141351,27166,54854,178,0,N,1,N,N,CP_Drtn,TT_Task,DT_FixedDUR2,TK_NotStart,LAN1020,Laydown Yards,,880,880,1200,0,0,0,1200,0,0,0,,,,2024-07-31 08:00,2025-02-25 16:00,,2024-02-28 08:00,2024-09-24 16:00,2024-02-28 08:00,2024-09-24 16:00,2024-02-28 08:00,2024-09-24 16:00,2024-07-31 08:00,2025-02-25 16:00,,PT_Normal,,,,,GKOMY7TxIUu0vCO6Nbr4HQ,hO+2z0fIXU2HgMoKl7K9sg,,,N,0,0,,,2023-02-08 18:30,2023-02-08 18:31,NotPrmUser,NotPrmUser,
141352,27166,54855,178,0,N,1,N,N,CP_Drtn,TT_Task,DT_FixedDUR2,TK_NotStart,ENV1000,10% Environmental Submittal,,880,0,200,0,0,0,200,0,0,0,,,,2024-04-17 08:00,2024-05-21 16:00,,2023-11-08 08:00,2023-12-14 16:00,2023-11-08 08:00,2023-12-14 16:00,2023-11-08 08:00,2023-12-14 16:00,2024-04-17 08:00,2024-05-21 16:00,,PT_Normal,,,,,BpBg6HqdWkS6jA0EGgjfng,gHZzplTpvEmXt5grSrI9kA,,,N,0,0,,,2023-02-08 18:30,2023-02-08 18:31,NotPrmUser,NotPrmUser,
141353,27166,54855,178,0,N,1,N,N,CP_Drtn,TT_Task,DT_FixedDUR2,TK_NotStart,ENV1010,10% Environmental Review,,880,0,120,0,0,0,120,0,0,0,,,,2024-05-22 08:00,2024-06-11 16:00,,2023-12-15 08:00,2024-01-09 16:00,2023-12-15 08:00,2024-01-09 16:00,2023-12-15 08:00,2024-01-09 16:00,2024-05-22 08:00,2024-06-11 16:00,,PT_Normal,,,,,gHhgqrLIIEWFXO6ZsctCRg,NaUfUAwmr0SvXZ95Nyt4uQ,,,N,0,0,,,2023-02-08 18:30,2023-02-08 18:31,NotPrmUser,NotPrmUser,
141354,27166,54855,178,0,N,1,N,N,CP_Drtn,TT_Task,DT_FixedDUR2,TK_NotStart,ENV1020,30% Environmental Submittal,,840,0,200,0,0,0,200,0,0,0,,,,2024-10-02 08:00,2024-11-05 16:00,,2024-05-08 08:00,2024-06-11 16:00,2024-05-08 08:00,2024-06-11 16:00,2024-05-08 08:00,2024-06-11 16:00,2024-10-02 08:00,2024-11-05 16:00,,PT_Normal,,,,,PxTfUbc0P02+bdX6zwMzxQ,hOWyG90kK02EMYX1gNRKxA,,,N,0,0,,,2023-02-08 18:30,2023-02-08 18:31,NotPrmUser,NotPrmUser,
141355,27166,54855,178,0,N,1,N,N,CP_Drtn,TT_Task,DT_FixedDUR2,TK_NotStart,ENV1030,30% Environmental Review,,840,0,120,0,0,0,120,0,0,0,,,,2024-11-06 08:00,2024-11-26 16:00,,2024-06-12 08:00,2024-07-02 16:00,2024-06-12 08:00,2024-07-02 16:00,2024-06-12 08:00,2024-07-02 16:00,2024-11-06 08:00,2024-11-26 16:00,,PT_Normal,,,,,IWpyUn0o5UCCOAYKWmPAYw,nF2bNgSYi02gnH9I/NA7Ow,,,N,0,0,,,2023-02-08 18:30,2023-02-08 18:31,NotPrmUser,NotPrmUser,
141356,27166,54855,178,0,N,1,N,N,CP_Drtn,TT_Task,DT_FixedDUR2,TK_NotStart,ENV1040,60% Environmental Submittal,,840,0,280,0,0,0,280,0,0,0,,,,2024-11-27 08:00,2025-01-14 16:00,,2024-07-03 08:00,2024-08-20 16:00,2024-07-03 08:00,2024-08-20 16:00,2024-07-03 08:00,2024-08-20 16:00,2024-11-27 08:00,2025-01-14 16:00,,PT_Normal,,,,,68wI2gxLykKFOkcPgF1xVA,bk9oBjg67k6OaFgnS1fWsg,,,N,0,0,,,2023-02-08 18:30,2023-02-08 18:31,NotPrmUser,NotPrmUser,
141357,27166,54855,178,0,N,1,N,N,CP_Drtn,TT_Task,DT_FixedDUR2,TK_NotStart,ENV1050,60% Environmental Release,,960,960,120,0,0,0,120,0,0,0,,,,2025-02-05 08:00,2025-02-25 16:00,,2024-08-21 08:00,2024-09-10 16:00,2024-08-21 08:00,2024-09-10 16:00,2024-08-21 08:00,2024-09-10 16:00,2025-02-05 08:00,2025-02-25 16:00,,PT_Normal,,,,,RlO7m/RxTE2q52ZNLAFRQQ,1mZ+jTm9jkCz+ujjo+mOqw,,,N,0,0,,,2023-02-08 18:30,2023-02-08 18:31,NotPrmUser,NotPrmUser,
141358,27166,54855,178,0,N,1,N,N,CP_Drtn,TT_Task,DT_FixedDUR2,TK_NotStart,ENV1060,BIA NEPA Submittal,,840,0,80,0,0,0,80,0,0,0,,,,2025-01-15 08:00,2025-01-28 16:00,,2024-08-21 08:00,2024-09-03 16:00,2024-08-21 08:00,2024-09-03 16:00,2024-08-21 08:00,2024-09-03 16:00,2025-01-15 08:00,2025-01-28 16:00,,PT_Normal,,,,,u+CLHjBQS0mIA7kkZzHiPA,w4gyGU3u0kmPLBi63fkvng,,,N,0,0,,,2023-02-08 18:30,2023-02-08 18:31,NotPrmUser,NotPrmUser,
141359,27166,54855,178,0,N,1,N,N,CP_Drtn,TT_Task,DT_FixedDUR2,TK_NotStart,ENV1070,"BIA Received (Add 250 days, if needed)",,840,840,160,0,0,0,160,0,0,0,,,,2025-01-29 08:00,2025-02-25 16:00,,2024-09-04 08:00,2024-10-01 16:00,2024-09-04 08:00,2024-10-01 16:00,2024-09-04 08:00,2024-10-01 16:00,2025-01-29 08:00,2025-02-25 16:00,,PT_Normal,,,,,2F9GqycfqU+KHKut8Sj9hw,GNY6siZ290qZ5eRnqkVbsw,,,N,0,0,,,2023-02-08 18:30,2023-02-08 18:31,NotPrmUser,NotPrmUser,
141360,27166,54845,178,0,N,1,N,N,CP_Drtn,TT_Task,DT_FixedDUR2,TK_NotStart,DES1010,Seismic / Geotech Submittal,,880,0,200,0,0,0,200,0,0,0,,,,2024-06-12 08:00,2024-07-16 16:00,,2024-01-10 08:00,2024-02-13 16:00,2024-01-10 08:00,2024-02-13 16:00,2024-01-10 08:00,2024-02-13 16:00,2024-06-12 08:00,2024-07-16 16:00,,PT_Normal,,,,,l4q0H8trnkWXhX89rhBBfQ,8+mpMf0kJUKWh9ASBNjF7Q,,,N,0,0,,,2023-02-08 18:30,2023-02-08 18:31,NotPrmUser,NotPrmUser,
141361,27166,54845,178,0,N,1,N,N,CP_Drtn,TT_Task,DT_FixedDUR2,TK_NotStart,DES1020,Potholing Submittal,,880,40,200,0,0,0,200,0,0,0,,,,2024-07-17 08:00,2024-08-20 16:00,,2024-02-14 08:00,2024-03-19 16:00,2024-02-14 08:00,2024-03-19 16:00,2024-02-14 08:00,2024-03-19 16:00,2024-07-17 08:00,2024-08-20 16:00,,PT_Normal,,,,,z3swh5ue8kaFdp8m+n/Dcw,wLKpyvoDLEOUm5xEmzE9gA,,,N,0,0,,,2023-02-08 18:30,2023-02-08 18:31,NotPrmUser,NotPrmUser,
141362,27166,54845,178,0,N,1,N,N,CP_Drtn,TT_Task,DT_FixedDUR2,TK_NotStart,DES1030,Potholing Release /Perform Potholing,,840,0,240,0,0,0,240,0,0,0,,,,2024-08-21 08:00,2024-10-01 16:00,,2024-03-27 08:00,2024-05-07 16:00,2024-03-27 08:00,2024-05-07 16:00,2024-03-27 08:00,2024-05-07 16:00,2024-08-21 08:00,2024-10-01 16:00,,PT_Normal,,,,,ujwLcR+s6kykOOH44tY4vg,pfZFpbx8bUmVj387jvjJDQ,,,N,0,0,,,2023-02-08 18:30,2023-02-08 18:31,NotPrmUser,NotPrmUser,
141363,27166,54857,178,0,N,1,N,N,CP_Drtn,TT_Task,DT_FixedDUR2,TK_NotStart,PCON100,Initiate Performance Partnering Process @ 60%,,1000,0,40,0,0,0,40,0,0,0,,,,2024-12-25 08:00,2024-12-31 16:00,,2024-07-03 08:00,2024-07-09 16:00,2024-07-03 08:00,2024-07-09 16:00,2024-07-03 08:00,2024-07-09 16:00,2024-12-25 08:00,2024-12-31 16:00,,PT_Normal,,,,,kzqfaVASyU6ofomfq4EL1A,5n7F78U8+kCSZF665B3djA,,,N,0,0,,,2023-02-08 18:30,2023-02-08 18:31,NotPrmUser,NotPrmUser,
141364,27166,54857,178,0,N,1,N,N,CP_Drtn,TT_Task,DT_FixedDUR2,TK_NotStart,PCON110,Receive Estimate from Contractor,,1000,0,120,0,0,0,120,0,0,0,,,,2025-01-01 08:00,2025-01-21 16:00,,2024-07-10 08:00,2024-07-30 16:00,2024-07-10 08:00,2024-07-30 16:00,2024-07-10 08:00,2024-07-30 16:00,2025-01-01 08:00,2025-01-21 16:00,,PT_Normal,,,,,cW0as5fkh0+O18e/Am5V4A,kEtroe/KK0Sc0UH58DUnvw,,,N,0,0,,,2023-02-08 18:30,2023-02-08 18:31,NotPrmUser,NotPrmUser,
141365,27166,54857,178,0,N,1,N,N,CP_Drtn,TT_Task,DT_FixedDUR2,TK_NotStart,PCON120,Bid Estimate Negotiations,,1000,0,80,0,0,0,80,0,0,0,,,,2025-01-22 08:00,2025-02-04 16:00,,2024-07-31 08:00,2024-08-13 16:00,2024-07-31 08:00,2024-08-13 16:00,2024-07-31 08:00,2024-08-13 16:00,2025-01-22 08:00,2025-02-04 16:00,,PT_Normal,,,,,t2gwzAkd0UuvlBjGyAzmgQ,vVq/A4TvUk2oVFwVkMHIhw,,,N,0,0,,,2023-02-08 18:30,2023-02-08 18:31,NotPrmUser,NotPrmUser,
141366,27166,54857,178,0,N,1,N,N,CP_Drtn,TT_Task,DT_FixedDUR2,TK_NotStart,PCON130,Revise Estimate based on IFC,,1000,0,40,0,0,0,40,0,0,0,,,,2025-02-05 08:00,2025-02-11 16:00,,2024-08-14 08:00,2024-08-20 16:00,2024-08-14 08:00,2024-08-20 16:00,2024-08-14 08:00,2024-08-20 16:00,2025-02-05 08:00,2025-02-11 16:00,,PT_Normal,,,,,8ZRF2VKPiUmjoQfvgcwEVQ,0vcR272FZkKA5cEcJWN59Q,,,N,0,0,,,2023-02-08 18:30,2023-02-08 18:31,NotPrmUser,NotPrmUser,
141367,27166,54857,178,0,N,1,N,N,CP_Drtn,TT_Task,DT_FixedDUR2,TK_NotStart,PCON140,Issue Release,,1000,1000,80,0,0,0,80,0,0,0,,,,2025-02-12 08:00,2025-02-25 16:00,,2024-08-21 08:00,2024-09-03 16:00,2024-08-21 08:00,2024-09-03 16:00,2024-08-21 08:00,2024-09-03 16:00,2025-02-12 08:00,2025-02-25 16:00,,PT_Normal,,,,,kwW2mewBl022bazUNDF8ZA,jvr8LnCGGkKeuzO20qz28Q,,,N,0,0,,,2023-02-08 18:30,2023-02-08 18:31,NotPrmUser,NotPrmUser,
141368,27166,54859,178,0,N,1,N,N,CP_Drtn,TT_Task,DT_FixedDUR2,TK_NotStart,PCON200,Civil Pre-Construction Meeting (Civil Construction Ready),,0,0,40,0,0,0,40,0,0,0,,,,2025-02-26 08:00,2025-03-04 16:00,,2025-02-26 08:00,2025-03-04 16:00,2025-02-26 08:00,2025-03-04 16:00,2025-02-26 08:00,2025-03-04 16:00,2025-02-26 08:00,2025-03-04 16:00,,PT_Normal,,,,,BXPk9vqKkEiSYM2IAlB/ig,TQsJNEkHRkKMKnoIQGsC8g,,,Y,0,0,,,2023-02-08 18:30,2023-02-08 18:31,NotPrmUser,NotPrmUser,
141369,27166,54859,178,0,N,1,N,N,CP_Drtn,TT_Task,DT_FixedDUR2,TK_NotStart,PCON210,Electrical - Pre-Construction Meeting (Electical Construction Ready),,240,0,40,0,0,0,40,0,0,0,,,,2025-04-09 08:00,2025-04-15 16:00,,2025-02-26 08:00,2025-03-04 16:00,2025-02-26 08:00,2025-03-04 16:00,2025-02-26 08:00,2025-03-04 16:00,2025-04-09 08:00,2025-04-15 16:00,,PT_Normal,,,,,Q1yWr/RQ3UCN2XYVJZPVtA,5KEbVXL4WU+NxsWxH+t5Xg,,,N,0,0,,,2023-02-08 18:30,2023-02-08 18:31,NotPrmUser,NotPrmUser,
141370,27166,54858,178,0,N,1,N,N,CP_Drtn,TT_Task,DT_FixedDUR2,TK_NotStart,PCON150,Initiate Performance Partnering Process @ 60%,,1480,0,40,0,0,0,40,0,0,0,,,,2025-02-05 08:00,2025-02-11 16:00,,2024-05-22 08:00,2024-05-28 16:00,2024-05-22 08:00,2024-05-28 16:00,2024-05-22 08:00,2024-05-28 16:00,2025-02-05 08:00,2025-02-11 16:00,,PT_Normal,,,,,eqykVBaMd0OVPiMD0byfQQ,sOd17v5XnUixh6Irqoi+dg,,,N,0,0,,,2023-02-08 18:30,2023-02-08 18:31,NotPrmUser,NotPrmUser,
141371,27166,54858,178,0,N,1,N,N,CP_Drtn,TT_Task,DT_FixedDUR2,TK_NotStart,PCON160,Receive Estimate from Contractor,,1480,0,120,0,0,0,120,0,0,0,,,,2025-02-12 08:00,2025-03-04 16:00,,2024-05-29 08:00,2024-06-18 16:00,2024-05-29 08:00,2024-06-18 16:00,2024-05-29 08:00,2024-06-18 16:00,2025-02-12 08:00,2025-03-04 16:00,,PT_Normal,,,,,LCs/AhCeL0md+9liIXbtDQ,UOs/v5o20EGd5OVsP5VJkw,,,N,0,0,,,2023-02-08 18:30,2023-02-08 18:31,NotPrmUser,NotPrmUser,
141372,27166,54858,178,0,N,1,N,N,CP_Drtn,TT_Task,DT_FixedDUR2,TK_NotStart,PCON170,Bid Estimate Negotiations,,1480,0,80,0,0,0,80,0,0,0,,,,2025-03-05 08:00,2025-03-18 16:00,,2024-06-19 08:00,2024-07-02 16:00,2024-06-19 08:00,2024-07-02 16:00,2024-06-19 08:00,2024-07-02 16:00,2025-03-05 08:00,2025-03-18 16:00,,PT_Normal,,,,,r3dHcsm05Euynqv+DU91wg,LUnF5K5z/0+hUrHK1xj6jQ,,,N,0,0,,,2023-02-08 18:30,2023-02-08 18:31,NotPrmUser,NotPrmUser,
141373,27166,54858,178,0,N,1,N,N,CP_Drtn,TT_Task,DT_FixedDUR2,TK_NotStart,PCON180,Revise Estimate based on IFC,,1480,0,40,0,0,0,40,0,0,0,,,,2025-03-19 08:00,2025-03-25 16:00,,2024-07-03 08:00,2024-07-09 16:00,2024-07-03 08:00,2024-07-09 16:00,2024-07-03 08:00,2024-07-09 16:00,2025-03-19 08:00,2025-03-25 16:00,,PT_Normal,,,,,FvRyJR6r/UW7U67t/6H8iw,ba+EJ9Ama0mCPe+EQnChCw,,,N,0,0,,,2023-02-08 18:30,2023-02-08 18:31,NotPrmUser,NotPrmUser,
141374,27166,54858,178,0,N,1,N,N,CP_Drtn,TT_Task,DT_FixedDUR2,TK_NotStart,PCON190,Issue Release,,1480,1240,80,0,0,0,80,0,0,0,,,,2025-03-26 08:00,2025-04-08 16:00,,2024-07-10 08:00,2024-07-23 16:00,2024-07-10 08:00,2024-07-23 16:00,2024-07-10 08:00,2024-07-23 16:00,2025-03-26 08:00,2025-04-08 16:00,,PT_Normal,,,,,eoOoD4cFnUmmPoAtBnqbkQ,Z+Eo/3hG3EOllYJ7sYIITw,,,N,0,0,,,2023-02-08 18:30,2023-02-08 18:31,NotPrmUser,NotPrmUser,
141375,27166,54851,178,0,N,1,N,N,CP_Drtn,TT_Task,DT_FixedDUR2,TK_NotStart,PRO1010,Order Long Lead Civil Material,,680,680,1200,0,0,0,1200,0,0,0,,,,2024-07-31 08:00,2025-02-25 16:00,,2024-04-03 08:00,2024-10-29 16:00,2024-04-03 08:00,2024-10-29 16:00,2024-04-03 08:00,2024-10-29 16:00,2024-07-31 08:00,2025-02-25 16:00,,PT_Normal,,,,,JQqDjqnYt0irPqMhCVkbDQ,hkrz5MGgeUOiHHxw0KY2wQ,,,N,0,0,,,2023-02-08 18:30,2023-02-08 18:31,NotPrmUser,NotPrmUser,
141376,27166,54851,178,0,N,1,N,N,CP_Drtn,TT_Task,DT_FixedDUR2,TK_NotStart,PRO1050,Order Short Lead Materials,,600,600,200,0,0,0,200,0,0,0,,,,2025-01-22 08:00,2025-02-25 16:00,,2024-10-09 08:00,2024-11-12 16:00,2024-10-09 08:00,2024-11-12 16:00,2024-10-09 08:00,2024-11-12 16:00,2025-01-22 08:00,2025-02-25 16:00,,PT_Normal,,,,,DipoujBMTkyXcjnBJmpknA,rRngoiuYQUG04KRQatRSPw,,,N,0,0,,,2023-02-08 18:30,2023-02-08 18:31,NotPrmUser,NotPrmUser,
141377,27166,54851,178,0,N,1,N,N,CP_Drtn,TT_Task,DT_FixedDUR2,TK_NotStart,PRO1030,Order Long Lead Electrical Materials,,920,680,800,0,0,0,800,0,0,0,,,,2024-11-20 08:00,2025-04-08 16:00,,2024-06-12 08:00,2024-10-29 16:00,2024-06-12 08:00,2024-10-29 16:00,2024-06-12 08:00,2024-10-29 16:00,2024-11-20 08:00,2025-04-08 16:00,,PT_Normal,,,,,CsQU4E7VJ02JKjohI46l1g,T8Y4etYi3EaMipwbHHQrUQ,,,N,0,0,,,2023-02-08 18:30,2023-02-08 18:31,NotPrmUser,NotPrmUser,
141378,27166,54861,178,0,N,1,N,N,CP_Drtn,TT_Task,DT_FixedDUR2,TK_NotStart,CON2000,Civil Construction (Trenching 300 feet/day),7730,0,0,3520,0,14248,14248,3520,0,0,0,,,,2025-03-05 08:00,2026-11-10 16:00,,2025-03-05 08:00,2026-11-10 16:00,2025-03-05 08:00,2026-11-10 16:00,2025-03-05 08:00,2026-11-10 16:00,2025-03-05 08:00,2026-11-10 16:00,,PT_Normal,,,,,YGGNfBrxQE6ntoyUZfzYkw,i63hlLkeHkOVnWRssSkw4w,,,Y,0,0,,,2023-02-08 18:30,2023-02-08 18:37,NotPrmUser,NotPrmUser,
141379,27166,54862,178,0,N,1,N,N,CP_Drtn,TT_Task,DT_FixedDUR2,TK_NotStart,CON3000,Electrical Construction,7786,0,0,3280,0,1640,1640,3280,0,0,0,,,,2025-04-16 08:00,2026-11-10 16:00,,2025-04-16 08:00,2026-11-10 16:00,2025-04-16 08:00,2026-11-10 16:00,2025-04-16 08:00,2026-11-10 16:00,2025-04-16 08:00,2026-11-10 16:00,,PT_Normal,,,,,b01iv6FR0UePd63ti1ZlQw,41xqwjiyA0SspEMd9gmZWA,,,Y,0,0,,,2023-02-08 18:30,2023-02-08 19:35,NotPrmUser,NotPrmUser,
141380,27166,54863,178,0,N,1,N,N,CP_Drtn,TT_Task,DT_FixedDUR2,TK_NotStart,CON4000,Service Cutover,,1056,0,2920,0,0,0,2920,0,0,0,,,,2025-12-19 08:00,2027-05-13 16:00,,2025-06-18 08:00,2026-11-10 16:00,2025-06-18 08:00,2026-11-10 16:00,2025-06-18 08:00,2026-11-10 16:00,2025-12-19 08:00,2027-05-13 16:00,,PT_Normal,,,,,eszLUUMyhEayV5hJGfRNtA,5hYV9VmzEEiiVEF2fJ67aA,,,N,0,0,,,2023-02-08 18:30,2023-02-08 18:31,NotPrmUser,NotPrmUser,
141381,27166,54864,178,0,N,1,N,N,CP_Drtn,TT_Task,DT_FixedDUR2,TK_NotStart,CON5000,Scada Construction,,1056,0,520,0,0,0,520,0,0,0,,,,2027-02-12 08:00,2027-05-13 16:00,,2026-08-12 08:00,2026-11-10 16:00,2026-08-12 08:00,2026-11-10 16:00,2026-08-12 08:00,2026-11-10 16:00,2027-02-12 08:00,2027-05-13 16:00,,PT_Normal,,,,,mEf7enhXak2eXbdPnZLR/g,AFK2YByRvUeJRB9KgPK+5w,,,N,0,0,,,2023-02-08 18:30,2023-02-08 18:31,NotPrmUser,NotPrmUser,
141382,27166,54865,178,0,N,1,N,N,CP_Drtn,TT_Task,DT_FixedDUR2,TK_NotStart,CON6000,Substation Construction,,1056,0,520,0,0,0,520,0,0,0,,,,2027-02-12 08:00,2027-05-13 16:00,,2026-08-12 08:00,2026-11-10 16:00,2026-08-12 08:00,2026-11-10 16:00,2026-08-12 08:00,2026-11-10 16:00,2027-02-12 08:00,2027-05-13 16:00,,PT_Normal,,,,,tcQgHueGREenmc3cFy9RCw,UR1mklZRRE6lmcZx7NC9ag,,,N,0,0,,,2023-02-08 18:30,2023-02-08 18:31,NotPrmUser,NotPrmUser,
141383,27166,54866,178,0,N,1,N,N,CP_Drtn,TT_Task,DT_FixedDrtn,TK_NotStart,CON7000,Overhead RFS (1000 feet per day),7785,0,0,1056,0,1056,1056,1056,0,0,0,,,,2026-11-11 08:00,2027-05-13 16:00,,2026-11-11 08:00,2027-05-13 16:00,2026-11-11 08:00,2027-05-13 16:00,2026-11-11 08:00,2027-05-13 16:00,2026-11-11 08:00,2027-05-13 16:00,,PT_Normal,,,,,KIWina1fxUa+rHi8adJQHA,sBOq5zQ0v0Wnz3T1tJ7v6g,,,Y,0,0,,,2023-02-08 18:30,2023-02-08 18:31,NotPrmUser,NotPrmUser,
141384,27166,54860,178,0,N,1,N,N,CP_Drtn,TT_Task,DT_FixedDUR2,TK_NotStart,ISD1000,ISD - Energize - Put in service,,2008,2008,8,0,0,0,8,25,0,25,,,,2027-10-28 08:00,2027-10-28 16:00,,2026-11-11 08:00,2026-11-11 16:00,2026-11-11 08:00,2026-11-11 16:00,2026-11-11 08:00,2026-11-11 16:00,2027-10-28 08:00,2027-10-28 16:00,,PT_Normal,,,,,dUyL6falXkieotfWAH1C4A,/xrGRgnpCU6U/DjgwAhC5Q,,,N,0,0,,,2023-02-08 18:30,2023-02-08 18:31,NotPrmUser,NotPrmUser,
141385,27166,54843,178,0,N,1,N,N,CP_Drtn,TT_Task,DT_FixedDUR2,TK_NotStart,SUR1000,Survey and LiDAR,7385,0,0,400,0,9182,9182,400,0,0,0,,,,2023-08-30 08:00,2023-11-07 16:00,,2023-08-30 08:00,2023-11-07 16:00,2023-08-30 08:00,2023-11-07 16:00,2023-08-30 08:00,2023-11-07 16:00,2023-08-30 08:00,2023-11-07 16:00,,PT_Normal,,,,,wyDzqmWtlkiDhU7ww4Wpqg,KKJMlVfm70GPaWNIPSiw6Q,,,Y,0,0,,,2023-02-08 18:30,2023-02-08 18:31,NotPrmUser,NotPrmUser,
141386,27166,54848,178,0,N,1,N,N,CP_Drtn,TT_Task,DT_FixedDUR2,TK_NotStart,DES1200,Receive Services Worksheet and Cable Info from Design Firms,,760,0,160,0,0,0,160,0,0,0,,,,2024-05-29 08:00,2024-06-25 16:00,,2024-01-17 08:00,2024-02-13 16:00,2024-01-17 08:00,2024-02-13 16:00,2024-01-17 08:00,2024-02-13 16:00,2024-05-29 08:00,2024-06-25 16:00,,PT_Normal,,,,,5qnJs5qxjky5qPGObdvSVQ,xKr/wxw/Z0mn4vi/GRERHQ,,,N,0,0,,,2023-02-08 18:30,2023-02-08 18:31,NotPrmUser,NotPrmUser,
141387,27166,54848,178,0,N,1,N,N,CP_Drtn,TT_Task,DT_FixedDUR2,TK_NotStart,DES1210,Issue to Trench Inspectors,,2376,1320,80,0,0,0,80,0,0,0,,,,2025-12-05 08:00,2025-12-18 16:00,,2024-10-16 08:00,2024-10-29 16:00,2024-10-16 08:00,2024-10-29 16:00,2024-10-16 08:00,2024-10-29 16:00,2025-12-05 08:00,2025-12-18 16:00,,PT_Normal,,,,,Mkp2cW4caUibIhFm6GO/Lg,cwKEjdSK5kq02Cr+bOVVig,,,N,0,0,,,2023-02-08 18:30,2023-02-08 18:31,NotPrmUser,NotPrmUser,
141388,27166,54860,178,0,N,1,N,N,CP_Drtn,TT_FinMile,DT_FixedDrtn,TK_NotStart,CON1020,Construction Complete,,0,0,0,0,0,0,0,0,0,0,,,,2027-05-13 16:00,2027-05-13 16:00,,2027-05-13 16:00,2027-05-13 16:00,2027-05-13 16:00,2027-05-13 16:00,2027-05-13 16:00,2027-05-13 16:00,2027-05-13 16:00,2027-05-13 16:00,,PT_Normal,,,,,40t7OeLvukaqrDiBGLOsmg,eP+uK//UkEGqqJzFTZb6CA,,,Y,0,0,,,2023-02-08 18:30,2023-02-08 18:31,NotPrmUser,NotPrmUser,
141389,27166,54860,178,0,N,1,N,N,CP_Drtn,TT_Mile,DT_FixedDrtn,TK_NotStart,CON1010,Construction Start,,5536,5536,0,0,0,0,0,0,0,0,,,,2027-10-28 16:00,2027-10-28 16:00,,2025-03-05 08:00,2025-03-05 08:00,2025-03-05 08:00,2025-03-05 08:00,2025-03-05 08:00,2025-03-05 08:00,2027-10-28 16:00,2027-10-28 16:00,,PT_Normal,,,,,TGMLzzs/+kuQUU+4q9NkvA,oA4ExsTTokiHDS9qsrJbeg,,,N,0,0,,,2023-02-08 18:30,2023-02-08 18:31,NotPrmUser,NotPrmUser,
141390,27166,54869,178,0,N,1,N,N,CP_Drtn,TT_Task,DT_FixedDUR2,TK_NotStart,CLO1020,GIS/As-Built and Records Complete,,480,480,480,0,0,0,480,0,0,0,,,,2027-08-06 08:00,2027-10-28 16:00,,2027-05-14 08:00,2027-08-05 16:00,2027-05-14 08:00,2027-08-05 16:00,2027-05-14 08:00,2027-08-05 16:00,2027-08-06 08:00,2027-10-28 16:00,,PT_Normal,,,,,rD3xBNMnYUOZ5e9ETd/dHA,rRfmcvYJOUOclcKnSfYX9Q,,,N,0,0,,,2023-02-08 18:30,2023-02-08 18:31,NotPrmUser,NotPrmUser,
141391,27166,54870,178,0,N,1,N,N,CP_Drtn,TT_Task,DT_FixedDUR2,TK_NotStart,CLO1030,"PO's complete, Work Order Reconcilled and Closed",,0,0,960,0,0,0,960,0,0,0,,,,2027-05-14 08:00,2027-10-28 16:00,,2027-05-14 08:00,2027-10-28 16:00,2027-05-14 08:00,2027-10-28 16:00,2027-05-14 08:00,2027-10-28 16:00,2027-05-14 08:00,2027-10-28 16:00,,PT_Normal,,,,,bVIjMpP8pUOSH8ppOt40kg,GEtpFvEE3EKRMNuc0uDPTw,,,Y,0,0,,,2023-02-08 18:30,2023-02-08 18:31,NotPrmUser,NotPrmUser,
141392,27166,54868,178,0,N,1,N,N,CP_Drtn,TT_FinMile,DT_FixedDrtn,TK_NotStart,CLO1010,Project Complete,,0,0,0,0,0,0,0,0,0,0,,,,2027-10-28 16:00,2027-10-28 16:00,,2027-10-28 16:00,2027-10-28 16:00,2027-10-28 16:00,2027-10-28 16:00,2027-10-28 16:00,2027-10-28 16:00,2027-10-28 16:00,2027-10-28 16:00,,PT_Normal,,,,,2gl3SyVRV0iUbTQoGslg+A,BDEMXs8mDUa36w+dzKd1Yw,,,Y,0,0,,,2023-02-08 18:30,2023-02-08 18:31,NotPrmUser,NotPrmUser,
141393,27166,54844,178,0,N,1,N,N,CP_Drtn,TT_LOE,DT_FixedDUR2,TK_NotStart,DES1000,Design Summary,7257,4096,0,2680,0,16233,16233,2680,0,0,0,,,,2023-11-08 08:00,2027-02-11 16:00,,2023-11-08 08:00,2025-02-25 16:00,2023-11-08 08:00,2025-02-25 16:00,2023-11-08 08:00,2025-02-25 16:00,2023-11-08 08:00,2027-02-11 16:00,,PT_Normal,,,,,I7hsjii3mUKJagKQTpcICQ,fZYedx1eUUK2UydGU18XYQ,,,Y,0,0,,,2023-02-08 18:30,2023-02-08 18:31,NotPrmUser,NotPrmUser,
141394,27166,54860,178,0,N,1,N,N,CP_Drtn,TT_LOE,DT_FixedDUR2,TK_NotStart,CON1000,Construction Summary,7385,0,0,4576,0,9972,9972,4576,25,0,25,,,,2027-05-13 16:00,2027-05-13 16:00,,2025-03-05 08:00,2027-05-13 16:00,2025-03-05 08:00,2027-05-13 16:00,2025-03-05 08:00,2027-05-13 16:00,2027-05-13 16:00,2027-05-13 16:00,,PT_Normal,,,,,0QBDev1bf0i0xf/F29ntsw,S/663UpzjES+asEWin3Q8w,,,N,0,0,,,2023-02-08 18:30,2023-02-08 18:31,NotPrmUser,NotPrmUser,
141395,27166,54868,178,0,N,1,N,N,CP_Drtn,TT_LOE,DT_FixedDUR2,TK_NotStart,CLO1000,Close Out Summary,7385,0,0,960,0,4482,4482,960,0,0,0,,,,2027-05-14 08:00,2027-10-28 16:00,,2027-05-14 08:00,2027-10-28 16:00,2027-05-14 08:00,2027-10-28 16:00,2027-05-14 08:00,2027-10-28 16:00,2027-05-14 08:00,2027-10-28 16:00,,PT_Normal,,,,,QzJyATzQkkS0JWNtRpSQ8g,vAfACKswTECHz8AuvliK1w,,,Y,0,0,,,2023-02-08 18:30,2023-02-08 18:31,NotPrmUser,NotPrmUser,
141396,27166,54841,178,0,N,1,N,N,CP_Drtn,TT_LOE,DT_FixedDUR2,TK_NotStart,PCON1000,Pre-Construction Summary,,0,0,3296,0,0,0,3296,0,0,0,,,,2023-07-31 08:00,2025-03-04 16:00,,2023-07-31 08:00,2025-03-04 16:00,2023-07-31 08:00,2025-03-04 16:00,2023-07-31 08:00,2025-03-04 16:00,2023-07-31 08:00,2025-03-04 16:00,,PT_Normal,,,,,jvFQxpL3ZUarKBDy8NxeiQ,FBuymsO9IEy1TKeSqH/Wqg,,,Y,0,0,,,2023-02-08 18:30,2023-02-08 18:31,NotPrmUser,NotPrmUser,
141397,27167,54872,178,0,N,1,N,N,CP_Drtn,TT_Task,DT_FixedDUR2,TK_NotStart,SCO1000,Bundling / Phasing of circuits for project sequencing,,0,0,80,0,0,0,80,0,0,0,2023-08-07 00:00,,,2023-08-07 08:00,2023-08-18 16:00,,2023-08-07 08:00,2023-08-18 16:00,2023-08-07 08:00,2023-08-18 16:00,2023-08-07 08:00,2023-08-18 16:00,2023-08-07 08:00,2023-08-18 16:00,CS_MSOA,PT_Normal,,,,,9vho1GzfMUqPlkcZJ39mcA,TzvKvfdy9EaU0GQONf975g,,,Y,0,0,,,2023-02-08 18:30,2023-02-08 18:31,NotPrmUser,NotPrmUser,
141398,27167,54872,178,0,N,1,N,N,CP_Drtn,TT_Task,DT_FixedDUR2,TK_NotStart,SCO1010,Constructability Review,,0,0,40,0,0,0,40,0,0,0,,,,2023-08-21 08:00,2023-08-25 16:00,,2023-08-21 08:00,2023-08-25 16:00,2023-08-21 08:00,2023-08-25 16:00,2023-08-21 08:00,2023-08-25 16:00,2023-08-21 08:00,2023-08-25 16:00,,PT_Normal,,,,,CRvHA+IudEiXUw5FBUCkbQ,zm3/xD2PckigCOstiKK07A,,,Y,0,0,,,2023-02-08 18:30,2023-02-08 18:31,NotPrmUser,NotPrmUser,
141399,27167,54872,178,0,N,1,N,N,CP_Drtn,TT_Task,DT_FixedDUR2,TK_NotStart,SCO1020,SDG&E Review,,0,0,16,0,0,0,16,0,0,0,,,,2023-08-28 08:00,2023-08-29 16:00,,2023-08-28 08:00,2023-08-29 16:00,2023-08-28 08:00,2023-08-29 16:00,2023-08-28 08:00,2023-08-29 16:00,2023-08-28 08:00,2023-08-29 16:00,,PT_Normal,,,,,wACrS+M5HUeTBOsmM/DF2Q,HIDnL+r2LUGeA3kvY/v+jg,,,Y,0,0,,,2023-02-08 18:30,2023-02-08 18:31,NotPrmUser,NotPrmUser,
141400,27167,54873,178,0,N,1,N,N,CP_Drtn,TT_Task,DT_FixedDUR2,TK_NotStart,PLA1000,Workorder Setup,,0,0,40,0,0,0,40,0,0,0,,,,2023-08-30 08:00,2023-09-05 16:00,,2023-08-30 08:00,2023-09-05 16:00,2023-08-30 08:00,2023-09-05 16:00,2023-08-30 08:00,2023-09-05 16:00,2023-08-30 08:00,2023-09-05 16:00,,PT_Normal,,,,,Jdzp0TkrokiNC9V8z4KSMg,LlyDw7xC+UWgaDVCbvtqRQ,,,Y,0,0,,,2023-02-08 18:30,2023-02-08 18:31,NotPrmUser,NotPrmUser,
141401,27167,54876,178,0,N,1,N,N,CP_Drtn,TT_Task,DT_FixedDUR2,TK_NotStart,DES1040,10% Submittal,,0,0,200,0,0,0,200,0,0,0,,,,2023-11-15 08:00,2023-12-21 16:00,,2023-11-15 08:00,2023-12-21 16:00,2023-11-15 08:00,2023-12-21 16:00,2023-11-15 08:00,2023-12-21 16:00,2023-11-15 08:00,2023-12-21 16:00,,PT_Normal,,,,,5/8xMFt76Uen9Mb0U4Zw5g,mBzi0OLmp0G0ue0VtIGXDA,,,Y,0,0,,,2023-02-08 18:30,2023-02-08 18:31,NotPrmUser,NotPrmUser,
141402,27167,54876,178,0,N,1,N,N,CP_Drtn,TT_Task,DT_FixedDUR2,TK_NotStart,DES1050,30% Submittal,,0,0,400,0,0,0,400,0,0,0,,,,2023-12-26 08:00,2024-03-05 16:00,,2023-12-26 08:00,2024-03-05 16:00,2023-12-26 08:00,2024-03-05 16:00,2023-12-26 08:00,2024-03-05 16:00,2023-12-26 08:00,2024-03-05 16:00,,PT_Normal,,,,,EICYWd2ggESpRgaj259/gQ,aMkWVvRueUOr6uu+aeTaCA,,,Y,0,0,,,2023-02-08 18:30,2023-02-08 18:31,NotPrmUser,NotPrmUser,
141403,27167,54876,178,0,N,1,N,N,CP_Drtn,TT_Task,DT_FixedDUR2,TK_NotStart,DES1060,30% Review,,0,0,80,0,0,0,80,0,0,0,,,,2024-03-06 08:00,2024-03-19 16:00,,2024-03-06 08:00,2024-03-19 16:00,2024-03-06 08:00,2024-03-19 16:00,2024-03-06 08:00,2024-03-19 16:00,2024-03-06 08:00,2024-03-19 16:00,,PT_Normal,,,,,jtNHS8c8xECbMKYBVTSRvg,XzBddu96IUapIBO5Pd6ebA,,,Y,0,0,,,2023-02-08 18:30,2023-02-08 18:31,NotPrmUser,NotPrmUser,
141404,27167,54876,178,0,N,1,N,N,CP_Drtn,TT_Task,DT_FixedDUR2,TK_NotStart,DES1070,60% Submittal,,600,0,560,0,0,0,560,0,0,0,,,,2024-07-03 08:00,2024-10-08 16:00,,2024-03-20 08:00,2024-06-25 16:00,2024-03-20 08:00,2024-06-25 16:00,2024-03-20 08:00,2024-06-25 16:00,2024-07-03 08:00,2024-10-08 16:00,,PT_Normal,,,,,UF4XA33j3UG0V/HwbCRI4w,Qau1D8kjTkWv2hJDVswQug,,,N,0,0,,,2023-02-08 18:30,2023-02-08 18:31,NotPrmUser,NotPrmUser,
141405,27167,54876,178,0,N,1,N,N,CP_Drtn,TT_Task,DT_FixedDUR2,TK_NotStart,DES1080,60% Review,,600,0,80,0,0,0,80,0,0,0,,,,2024-10-09 08:00,2024-10-22 16:00,,2024-06-26 08:00,2024-07-09 16:00,2024-06-26 08:00,2024-07-09 16:00,2024-06-26 08:00,2024-07-09 16:00,2024-10-09 08:00,2024-10-22 16:00,,PT_Normal,,,,,qC3/IaVaVEOrlAYLLsL+Nw,g2RD7RALbkaShSLqCypA0w,,,N,0,0,,,2023-02-08 18:30,2023-02-08 18:31,NotPrmUser,NotPrmUser,
141406,27167,54876,178,0,N,1,N,N,CP_Drtn,TT_Task,DT_FixedDUR2,TK_NotStart,DES1090,90% Submittal,,600,0,360,0,0,0,360,0,0,0,,,,2024-10-23 08:00,2024-12-24 16:00,,2024-07-10 08:00,2024-09-10 16:00,2024-07-10 08:00,2024-09-10 16:00,2024-07-10 08:00,2024-09-10 16:00,2024-10-23 08:00,2024-12-24 16:00,,PT_Normal,,,,,84JO9heJH06lEqVLpWHO7w,hiFVSMschkqYqQI3+Yri0Q,,,N,0,0,,,2023-02-08 18:30,2023-02-08 18:31,NotPrmUser,NotPrmUser,
141407,27167,54876,178,0,N,1,N,N,CP_Drtn,TT_Task,DT_FixedDUR2,TK_NotStart,DES1100,90% Review,,600,0,80,0,0,0,80,0,0,0,,,,2024-12-25 08:00,2025-01-07 16:00,,2024-09-11 08:00,2024-09-24 16:00,2024-09-11 08:00,2024-09-24 16:00,2024-09-11 08:00,2024-09-24 16:00,2024-12-25 08:00,2025-01-07 16:00,,PT_Normal,,,,,VdSzsxoR8kaKHfnfkFY98w,GGQdPhMoj0KTzeZhUkoVpw,,,N,0,0,,,2023-02-08 18:30,2023-02-08 18:31,NotPrmUser,NotPrmUser,
141408,27167,54876,178,0,N,1,N,N,CP_Drtn,TT_Task,DT_FixedDUR2,TK_NotStart,DES1110,100% Submittal,,680,0,160,0,0,0,160,0,0,0,,,,2025-01-22 08:00,2025-02-18 16:00,,2024-09-25 08:00,2024-10-22 16:00,2024-09-25 08:00,2024-10-22 16:00,2024-09-25 08:00,2024-10-22 16:00,2025-01-22 08:00,2025-02-18 16:00,,PT_Normal,,,,,GmTz5Ug8H0eswwXAHpdN2Q,rJFihRP2QUGjkXJAHNxWpQ,,,N,0,0,,,2023-02-08 18:30,2023-02-08 18:31,NotPrmUser,NotPrmUser,
141409,27167,54876,178,0,N,1,N,N,CP_Drtn,TT_Task,DT_FixedDUR2,TK_NotStart,DES1120,Issue IFC Design Package,,0,0,80,0,0,0,80,0,0,0,,,,2025-02-19 08:00,2025-03-04 16:00,,2025-02-19 08:00,2025-03-04 16:00,2025-02-19 08:00,2025-03-04 16:00,2025-02-19 08:00,2025-03-04 16:00,2025-02-19 08:00,2025-03-04 16:00,,PT_Normal,,,,,yX8ZPybRZEGolvqXpUvV9g,8OR0hyM3Q0ys6dAogFMSdw,,,Y,0,0,,,2023-02-08 18:30,2023-02-08 18:31,NotPrmUser,NotPrmUser,
141410,27167,54877,178,0,N,1,N,N,CP_Drtn,TT_Task,DT_FixedDUR2,TK_NotStart,DES1130,60% Submittal,,840,0,480,0,0,0,480,0,0,0,,,,2024-07-17 08:00,2024-10-08 16:00,,2024-02-21 08:00,2024-05-14 16:00,2024-02-21 08:00,2024-05-14 16:00,2024-02-21 08:00,2024-05-14 16:00,2024-07-17 08:00,2024-10-08 16:00,,PT_Normal,,,,,SYz5B2sEw0aWwFTwOG75sQ,uNBfeub2BkWONNif2FdK9w,,,N,0,0,,,2023-02-08 18:30,2023-02-08 18:31,NotPrmUser,NotPrmUser,
141411,27167,54877,178,0,N,1,N,N,CP_Drtn,TT_Task,DT_FixedDUR2,TK_NotStart,DES1140,60% Review,,920,0,80,0,0,0,80,0,0,0,,,,2024-10-23 08:00,2024-11-05 16:00,,2024-05-15 08:00,2024-05-28 16:00,2024-05-15 08:00,2024-05-28 16:00,2024-05-15 08:00,2024-05-28 16:00,2024-10-23 08:00,2024-11-05 16:00,,PT_Normal,,,,,0mAjJaaopkS2iTR5J7+3Ug,GrRFXfh5ok2IhLJLXmm6xQ,,,N,0,0,,,2023-02-08 18:30,2023-02-08 18:31,NotPrmUser,NotPrmUser,
141412,27167,54877,178,0,N,1,N,N,CP_Drtn,TT_Task,DT_FixedDUR2,TK_NotStart,DES1150,90% Submittal,,1120,0,400,0,0,0,400,0,0,0,,,,2024-12-11 08:00,2025-02-18 16:00,,2024-05-29 08:00,2024-08-06 16:00,2024-05-29 08:00,2024-08-06 16:00,2024-05-29 08:00,2024-08-06 16:00,2024-12-11 08:00,2025-02-18 16:00,,PT_Normal,,,,,C6IX4m5mV0eTo3gV7qYZyw,0zqo84YmS0KI2RYAjp1t/w,,,N,0,0,,,2023-02-08 18:30,2023-02-08 18:31,NotPrmUser,NotPrmUser,
141413,27167,54877,178,0,N,1,N,N,CP_Drtn,TT_Task,DT_FixedDUR2,TK_NotStart,DES1160,90% Review,,1120,0,80,0,0,0,80,0,0,0,,,,2025-02-19 08:00,2025-03-04 16:00,,2024-08-07 08:00,2024-08-20 16:00,2024-08-07 08:00,2024-08-20 16:00,2024-08-07 08:00,2024-08-20 16:00,2025-02-19 08:00,2025-03-04 16:00,,PT_Normal,,,,,LX1dU3yX80CgsUY0eea/VQ,FdeptOmy3kmDLEn0Mdwnow,,,N,0,0,,,2023-02-08 18:30,2023-02-08 18:31,NotPrmUser,NotPrmUser,
141414,27167,54877,178,0,N,1,N,N,CP_Drtn,TT_Task,DT_FixedDUR2,TK_NotStart,DES1170,100% Submittal,,1120,880,160,0,0,0,160,0,0,0,,,,2025-03-05 08:00,2025-04-01 16:00,,2024-08-21 08:00,2024-09-17 16:00,2024-08-21 08:00,2024-09-17 16:00,2024-08-21 08:00,2024-09-17 16:00,2025-03-05 08:00,2025-04-01 16:00,,PT_Normal,,,,,jjdFdbSRq0+Dyw5sJvdzyQ,lHbM2TLebE6SbXMgrte5fQ,,,N,0,0,,,2023-02-08 18:30,2023-02-08 18:31,NotPrmUser,NotPrmUser,
141415,27167,54877,178,0,N,1,N,N,CP_Drtn,TT_Task,DT_FixedDUR2,TK_NotStart,DES1180,Issue IFC Design Package,,240,0,80,0,0,0,80,0,0,0,,,,2025-04-02 08:00,2025-04-15 16:00,,2025-02-19 08:00,2025-03-04 16:00,2025-02-19 08:00,2025-03-04 16:00,2025-02-19 08:00,2025-03-04 16:00,2025-04-02 08:00,2025-04-15 16:00,,PT_Normal,,,,,eBF8fC9JE06QQJzKTo3fmA,Vwd6oW7gl0yJDU7xJcHzIw,,,N,0,0,,,2023-02-08 18:30,2023-02-08 18:31,NotPrmUser,NotPrmUser,
141416,27167,54878,178,0,N,1,N,N,CP_Drtn,TT_Task,DT_FixedDUR2,TK_NotStart,DES1190,Issue Services Worksheet to Design Firms,,760,0,160,0,0,0,160,0,0,0,,,,2024-05-08 08:00,2024-06-04 16:00,,2023-12-26 08:00,2024-01-23 16:00,2023-12-26 08:00,2024-01-23 16:00,2023-12-26 08:00,2024-01-23 16:00,2024-05-08 08:00,2024-06-04 16:00,,PT_Normal,,,,,PdTljSmnBUOGlScdHFr27A,s/u/44UAu0S/qklbCyPR5g,,,N,0,0,,,2023-02-08 18:30,2023-02-08 18:31,NotPrmUser,NotPrmUser,
141417,27167,54879,178,0,N,1,N,N,CP_Drtn,TT_Task,DT_FixedDUR2,TK_NotStart,DES1220,SED Design,,6376,0,240,0,0,0,240,0,0,0,,,,2026-12-11 08:00,2027-01-21 16:00,,2023-11-15 08:00,2024-01-02 16:00,2023-11-15 08:00,2024-01-02 16:00,2023-11-15 08:00,2024-01-02 16:00,2026-12-11 08:00,2027-01-21 16:00,,PT_Normal,,,,,pnN2zzSVn0iMzA6EDhG+dQ,O7ws6tX4/EqzREs0esaSig,,,N,0,0,,,2023-02-08 18:30,2023-02-08 18:31,NotPrmUser,NotPrmUser,
141418,27167,54879,178,0,N,1,N,N,CP_Drtn,TT_Task,DT_FixedDUR2,TK_NotStart,DES1230,Issue IFC Design Package,,6376,5320,160,0,0,0,160,0,0,0,,,,2027-01-22 08:00,2027-02-18 16:00,,2024-01-03 08:00,2024-01-30 16:00,2024-01-03 08:00,2024-01-30 16:00,2024-01-03 08:00,2024-01-30 16:00,2027-01-22 08:00,2027-02-18 16:00,,PT_Normal,,,,,Z6qIdCK2w0GFKZV3kZXqSA,JeyfatTok0+eu1RIlm5yhA,,,N,0,0,,,2023-02-08 18:30,2023-02-08 18:31,NotPrmUser,NotPrmUser,
141419,27167,54881,178,0,N,1,N,N,CP_Drtn,TT_Task,DT_FixedDUR2,TK_NotStart,PRO1000,Civil BOM - Long Lead @ 30%,,680,0,120,0,0,0,120,0,0,0,,,,2024-07-17 08:00,2024-08-06 16:00,,2024-03-20 08:00,2024-04-09 16:00,2024-03-20 08:00,2024-04-09 16:00,2024-03-20 08:00,2024-04-09 16:00,2024-07-17 08:00,2024-08-06 16:00,,PT_Normal,,,,,vqexrr4NkUCU+UHFqcbOcA,rKWkBRYf4EGeLOTfUUk0Qg,,,N,0,0,,,2023-02-08 18:30,2023-02-08 18:31,NotPrmUser,NotPrmUser,
141420,27167,54881,178,0,N,1,N,N,CP_Drtn,TT_Task,DT_FixedDUR2,TK_NotStart,PRO1020,Electrical BOM - Long Lead @ 60%,,920,0,120,0,0,0,120,0,0,0,,,,2024-11-06 08:00,2024-11-26 16:00,,2024-05-29 08:00,2024-06-18 16:00,2024-05-29 08:00,2024-06-18 16:00,2024-05-29 08:00,2024-06-18 16:00,2024-11-06 08:00,2024-11-26 16:00,,PT_Normal,,,,,yrBIKz/myUaMdSWE6zayWg,ZOgoCtMi9kmoFUAVi1uUCA,,,N,0,0,,,2023-02-08 18:30,2023-02-08 18:31,NotPrmUser,NotPrmUser,
141421,27167,54881,178,0,N,1,N,N,CP_Drtn,TT_Task,DT_FixedDUR2,TK_NotStart,PRO1040,BOM - Short Lead @ 60%,,600,0,120,0,0,0,120,0,0,0,,,,2025-01-08 08:00,2025-01-28 16:00,,2024-09-25 08:00,2024-10-15 16:00,2024-09-25 08:00,2024-10-15 16:00,2024-09-25 08:00,2024-10-15 16:00,2025-01-08 08:00,2025-01-28 16:00,,PT_Normal,,,,,SrTMECffekeanXsN/aFYRg,q8O959BFhkapAcwmS72oiQ,,,N,0,0,,,2023-02-08 18:30,2023-02-08 18:31,NotPrmUser,NotPrmUser,
141422,27167,54882,178,0,N,1,N,N,CP_Drtn,TT_Task,DT_FixedDUR2,TK_NotStart,PER1000,CalTrans Permit,,0,0,2000,0,0,0,2000,0,0,0,,,,2024-03-20 08:00,2025-03-04 16:00,,2024-03-20 08:00,2025-03-04 16:00,2024-03-20 08:00,2025-03-04 16:00,2024-03-20 08:00,2025-03-04 16:00,2024-03-20 08:00,2025-03-04 16:00,,PT_Normal,,,,,jAN3x4e60kudHQITBIEIpw,qZ6+x0tyPk+nV1DRreMOLQ,,,Y,0,0,,,2023-02-08 18:30,2023-02-08 18:31,NotPrmUser,NotPrmUser,
141423,27167,54882,178,0,N,1,N,N,CP_Drtn,TT_Task,DT_FixedDUR2,TK_NotStart,PER1010,City & County Permits,,1200,1200,800,0,0,0,800,0,0,0,,,,2024-10-16 08:00,2025-03-04 16:00,,2024-03-20 08:00,2024-08-06 16:00,2024-03-20 08:00,2024-08-06 16:00,2024-03-20 08:00,2024-08-06 16:00,2024-10-16 08:00,2025-03-04 16:00,,PT_Normal,,,,,O21cPq0UUEOoID4go+2CQQ,Bg6h7cJe6kOL+nHb78w1UQ,,,N,0,0,,,2023-02-08 18:30,2023-02-08 18:31,NotPrmUser,NotPrmUser,
141424,27167,54882,178,0,N,1,N,N,CP_Drtn,TT_Task,DT_FixedDUR2,TK_NotStart,PER1020,Other Permit (TBD),,1200,1200,800,0,0,0,800,0,0,0,,,,2024-10-16 08:00,2025-03-04 16:00,,2024-03-20 08:00,2024-08-06 16:00,2024-03-20 08:00,2024-08-06 16:00,2024-03-20 08:00,2024-08-06 16:00,2024-10-16 08:00,2025-03-04 16:00,,PT_Normal,,,,,/DpMsahOFU+ssYoUoQy7rA,3ahwDRmzIEK6mPKMxbp2mw,,,N,0,0,,,2023-02-08 18:30,2023-02-08 18:31,NotPrmUser,NotPrmUser,
141425,27167,54883,178,0,N,1,N,N,CP_Drtn,TT_Task,DT_FixedDUR2,TK_NotStart,PUB1000,Public Affairs / Community Outreach,,6216,6216,800,0,0,0,800,0,0,0,,,,2027-06-18 08:00,2027-11-04 16:00,,2024-06-26 08:00,2024-11-12 16:00,2024-06-26 08:00,2024-11-12 16:00,2024-06-26 08:00,2024-11-12 16:00,2027-06-18 08:00,2027-11-04 16:00,,PT_Normal,,,,,yJS2w7vv/0K+Goj2TnT65A,bM2pfK0GCU+qd2tjTH/K9g,,,N,0,0,,,2023-02-08 18:30,2023-02-08 18:31,NotPrmUser,NotPrmUser,
141426,27167,54884,178,0,N,1,N,N,CP_Drtn,TT_Task,DT_FixedDUR2,TK_NotStart,LAN1000,Land Rights and Easement Acquisition,,880,880,1200,0,0,0,1200,0,0,0,,,,2024-08-07 08:00,2025-03-04 16:00,,2024-03-06 08:00,2024-10-01 16:00,2024-03-06 08:00,2024-10-01 16:00,2024-03-06 08:00,2024-10-01 16:00,2024-08-07 08:00,2025-03-04 16:00,,PT_Normal,,,,,Ya1V7ydU8EKfIZSwelOx9g,xKn2O/qSdEeDo5pVHLTfHQ,,,N,0,0,,,2023-02-08 18:30,2023-02-08 18:31,NotPrmUser,NotPrmUser,
141427,27167,54884,178,0,N,1,N,N,CP_Drtn,TT_Task,DT_FixedDUR2,TK_NotStart,LAN1010,Tribal Land Rights,,880,880,1200,0,0,0,1200,0,0,0,,,,2024-08-07 08:00,2025-03-04 16:00,,2024-03-06 08:00,2024-10-01 16:00,2024-03-06 08:00,2024-10-01 16:00,2024-03-06 08:00,2024-10-01 16:00,2024-08-07 08:00,2025-03-04 16:00,,PT_Normal,,,,,IuTzhswwyUaBixjIdomXQQ,1xuYqB+vvk277hZqLLW6yA,,,N,0,0,,,2023-02-08 18:30,2023-02-08 18:31,NotPrmUser,NotPrmUser,
141428,27167,54884,178,0,N,1,N,N,CP_Drtn,TT_Task,DT_FixedDUR2,TK_NotStart,LAN1020,Laydown Yards,,880,880,1200,0,0,0,1200,0,0,0,,,,2024-08-07 08:00,2025-03-04 16:00,,2024-03-06 08:00,2024-10-01 16:00,2024-03-06 08:00,2024-10-01 16:00,2024-03-06 08:00,2024-10-01 16:00,2024-08-07 08:00,2025-03-04 16:00,,PT_Normal,,,,,g57RlKSrbUeZhcy0dC1NLA,fNqOOw0ZAEKImzJ0kC20ug,,,N,0,0,,,2023-02-08 18:30,2023-02-08 18:31,NotPrmUser,NotPrmUser,
141429,27167,54885,178,0,N,1,N,N,CP_Drtn,TT_Task,DT_FixedDUR2,TK_NotStart,ENV1000,10% Environmental Submittal,,880,0,200,0,0,0,200,0,0,0,,,,2024-04-24 08:00,2024-05-28 16:00,,2023-11-15 08:00,2023-12-21 16:00,2023-11-15 08:00,2023-12-21 16:00,2023-11-15 08:00,2023-12-21 16:00,2024-04-24 08:00,2024-05-28 16:00,,PT_Normal,,,,,zh+HIElum0WUIYAsV7sByw,VxGMrxm1bUiE/1KEEosOeQ,,,N,0,0,,,2023-02-08 18:30,2023-02-08 18:31,NotPrmUser,NotPrmUser,
141430,27167,54885,178,0,N,1,N,N,CP_Drtn,TT_Task,DT_FixedDUR2,TK_NotStart,ENV1010,10% Environmental Review,,880,0,120,0,0,0,120,0,0,0,,,,2024-05-29 08:00,2024-06-18 16:00,,2023-12-26 08:00,2024-01-16 16:00,2023-12-26 08:00,2024-01-16 16:00,2023-12-26 08:00,2024-01-16 16:00,2024-05-29 08:00,2024-06-18 16:00,,PT_Normal,,,,,a2+Kfxq60E+nORvAYhkqRg,ZzFrGGXb1UqEqF0c9zqemA,,,N,0,0,,,2023-02-08 18:30,2023-02-08 18:31,NotPrmUser,NotPrmUser,
141431,27167,54885,178,0,N,1,N,N,CP_Drtn,TT_Task,DT_FixedDUR2,TK_NotStart,ENV1020,30% Environmental Submittal,,840,0,200,0,0,0,200,0,0,0,,,,2024-10-09 08:00,2024-11-12 16:00,,2024-05-15 08:00,2024-06-18 16:00,2024-05-15 08:00,2024-06-18 16:00,2024-05-15 08:00,2024-06-18 16:00,2024-10-09 08:00,2024-11-12 16:00,,PT_Normal,,,,,voa7xazY4UK97TJXtdoWVw,YNHqD/2TE0S9GlFFz+MDsw,,,N,0,0,,,2023-02-08 18:30,2023-02-08 18:31,NotPrmUser,NotPrmUser,
141432,27167,54885,178,0,N,1,N,N,CP_Drtn,TT_Task,DT_FixedDUR2,TK_NotStart,ENV1030,30% Environmental Review,,840,0,120,0,0,0,120,0,0,0,,,,2024-11-13 08:00,2024-12-03 16:00,,2024-06-19 08:00,2024-07-09 16:00,2024-06-19 08:00,2024-07-09 16:00,2024-06-19 08:00,2024-07-09 16:00,2024-11-13 08:00,2024-12-03 16:00,,PT_Normal,,,,,2bpPKhKZxkucm9pNKbpjFQ,DuPJHOPE90qnKcbDTKYiJQ,,,N,0,0,,,2023-02-08 18:30,2023-02-08 18:31,NotPrmUser,NotPrmUser,
141433,27167,54885,178,0,N,1,N,N,CP_Drtn,TT_Task,DT_FixedDUR2,TK_NotStart,ENV1040,60% Environmental Submittal,,840,0,280,0,0,0,280,0,0,0,,,,2024-12-04 08:00,2025-01-21 16:00,,2024-07-10 08:00,2024-08-27 16:00,2024-07-10 08:00,2024-08-27 16:00,2024-07-10 08:00,2024-08-27 16:00,2024-12-04 08:00,2025-01-21 16:00,,PT_Normal,,,,,vs4dZ5Vn3U+dBGEuBnNBZw,ZxZQxjzP30itxLKLsU6bEQ,,,N,0,0,,,2023-02-08 18:30,2023-02-08 18:31,NotPrmUser,NotPrmUser,
141434,27167,54885,178,0,N,1,N,N,CP_Drtn,TT_Task,DT_FixedDUR2,TK_NotStart,ENV1050,60% Environmental Release,,960,960,120,0,0,0,120,0,0,0,,,,2025-02-12 08:00,2025-03-04 16:00,,2024-08-28 08:00,2024-09-17 16:00,2024-08-28 08:00,2024-09-17 16:00,2024-08-28 08:00,2024-09-17 16:00,2025-02-12 08:00,2025-03-04 16:00,,PT_Normal,,,,,5q9GXwXLyk6Tdm96XjC6wA,Ym3BfLrg3UK5i/IC6asFXw,,,N,0,0,,,2023-02-08 18:30,2023-02-08 18:31,NotPrmUser,NotPrmUser,
141435,27167,54885,178,0,N,1,N,N,CP_Drtn,TT_Task,DT_FixedDUR2,TK_NotStart,ENV1060,BIA NEPA Submittal,,840,0,80,0,0,0,80,0,0,0,,,,2025-01-22 08:00,2025-02-04 16:00,,2024-08-28 08:00,2024-09-10 16:00,2024-08-28 08:00,2024-09-10 16:00,2024-08-28 08:00,2024-09-10 16:00,2025-01-22 08:00,2025-02-04 16:00,,PT_Normal,,,,,PvfpCTTs5kCQWjqBDBxa/g,aBDYn0E5TkiuliF2BTvT2w,,,N,0,0,,,2023-02-08 18:30,2023-02-08 18:31,NotPrmUser,NotPrmUser,
141436,27167,54885,178,0,N,1,N,N,CP_Drtn,TT_Task,DT_FixedDUR2,TK_NotStart,ENV1070,"BIA Received (Add 250 days, if needed)",,840,840,160,0,0,0,160,0,0,0,,,,2025-02-05 08:00,2025-03-04 16:00,,2024-09-11 08:00,2024-10-08 16:00,2024-09-11 08:00,2024-10-08 16:00,2024-09-11 08:00,2024-10-08 16:00,2025-02-05 08:00,2025-03-04 16:00,,PT_Normal,,,,,Obv5054s5kOecYWnCO2q9A,Z8qq++mqSUC0l6P5yVEC1A,,,N,0,0,,,2023-02-08 18:30,2023-02-08 18:31,NotPrmUser,NotPrmUser,
141437,27167,54875,178,0,N,1,N,N,CP_Drtn,TT_Task,DT_FixedDUR2,TK_NotStart,DES1010,Seismic / Geotech Submittal,,880,0,200,0,0,0,200,0,0,0,,,,2024-06-19 08:00,2024-07-23 16:00,,2024-01-17 08:00,2024-02-20 16:00,2024-01-17 08:00,2024-02-20 16:00,2024-01-17 08:00,2024-02-20 16:00,2024-06-19 08:00,2024-07-23 16:00,,PT_Normal,,,,,x+wEoDwoAUCA2SGuFoEsWA,Ek2HSB1NRESj9idDmwnRsg,,,N,0,0,,,2023-02-08 18:30,2023-02-08 18:31,NotPrmUser,NotPrmUser,
141438,27167,54875,178,0,N,1,N,N,CP_Drtn,TT_Task,DT_FixedDUR2,TK_NotStart,DES1020,Potholing Submittal,,880,40,200,0,0,0,200,0,0,0,,,,2024-07-24 08:00,2024-08-27 16:00,,2024-02-21 08:00,2024-03-26 16:00,2024-02-21 08:00,2024-03-26 16:00,2024-02-21 08:00,2024-03-26 16:00,2024-07-24 08:00,2024-08-27 16:00,,PT_Normal,,,,,NqkGTtaOukW4RFf84axnJA,JbuCWLba7kOW6dmqa+5Icw,,,N,0,0,,,2023-02-08 18:30,2023-02-08 18:31,NotPrmUser,NotPrmUser,
141439,27167,54875,178,0,N,1,N,N,CP_Drtn,TT_Task,DT_FixedDUR2,TK_NotStart,DES1030,Potholing Release /Perform Potholing,,840,0,240,0,0,0,240,0,0,0,,,,2024-08-28 08:00,2024-10-08 16:00,,2024-04-03 08:00,2024-05-14 16:00,2024-04-03 08:00,2024-05-14 16:00,2024-04-03 08:00,2024-05-14 16:00,2024-08-28 08:00,2024-10-08 16:00,,PT_Normal,,,,,vHFamk+Z6E28+RvGKKKhzA,tZBQuGIR+U+OsAos5oIcbQ,,,N,0,0,,,2023-02-08 18:30,2023-02-08 18:31,NotPrmUser,NotPrmUser,
141440,27167,54887,178,0,N,1,N,N,CP_Drtn,TT_Task,DT_FixedDUR2,TK_NotStart,PCON100,Initiate Performance Partnering Process @ 60%,,1000,0,40,0,0,0,40,0,0,0,,,,2025-01-01 08:00,2025-01-07 16:00,,2024-07-10 08:00,2024-07-16 16:00,2024-07-10 08:00,2024-07-16 16:00,2024-07-10 08:00,2024-07-16 16:00,2025-01-01 08:00,2025-01-07 16:00,,PT_Normal,,,,,x3hAsgk5x0i5TS5ZT2AoCQ,fG4qK0NkkUOeBu12gFtJgw,,,N,0,0,,,2023-02-08 18:30,2023-02-08 18:31,NotPrmUser,NotPrmUser,
141441,27167,54887,178,0,N,1,N,N,CP_Drtn,TT_Task,DT_FixedDUR2,TK_NotStart,PCON110,Receive Estimate from Contractor,,1000,0,120,0,0,0,120,0,0,0,,,,2025-01-08 08:00,2025-01-28 16:00,,2024-07-17 08:00,2024-08-06 16:00,2024-07-17 08:00,2024-08-06 16:00,2024-07-17 08:00,2024-08-06 16:00,2025-01-08 08:00,2025-01-28 16:00,,PT_Normal,,,,,c2Mz0fNPWE6r0JC0cGjodg,sv4p8AWU8Eavfn1IrYZXLA,,,N,0,0,,,2023-02-08 18:30,2023-02-08 18:31,NotPrmUser,NotPrmUser,
141442,27167,54887,178,0,N,1,N,N,CP_Drtn,TT_Task,DT_FixedDUR2,TK_NotStart,PCON120,Bid Estimate Negotiations,,1000,0,80,0,0,0,80,0,0,0,,,,2025-01-29 08:00,2025-02-11 16:00,,2024-08-07 08:00,2024-08-20 16:00,2024-08-07 08:00,2024-08-20 16:00,2024-08-07 08:00,2024-08-20 16:00,2025-01-29 08:00,2025-02-11 16:00,,PT_Normal,,,,,cZ4yimMeY0Gjo91Q3FhYRA,+wYjZw16PEivqEj377Q0Pw,,,N,0,0,,,2023-02-08 18:30,2023-02-08 18:31,NotPrmUser,NotPrmUser,
141443,27167,54887,178,0,N,1,N,N,CP_Drtn,TT_Task,DT_FixedDUR2,TK_NotStart,PCON130,Revise Estimate based on IFC,,1000,0,40,0,0,0,40,0,0,0,,,,2025-02-12 08:00,2025-02-18 16:00,,2024-08-21 08:00,2024-08-27 16:00,2024-08-21 08:00,2024-08-27 16:00,2024-08-21 08:00,2024-08-27 16:00,2025-02-12 08:00,2025-02-18 16:00,,PT_Normal,,,,,99mkZJ/9aUeW9KyNaBmIyw,xzRlOOvC3kmjOsgGk1WAGA,,,N,0,0,,,2023-02-08 18:30,2023-02-08 18:31,NotPrmUser,NotPrmUser,
141444,27167,54887,178,0,N,1,N,N,CP_Drtn,TT_Task,DT_FixedDUR2,TK_NotStart,PCON140,Issue Release,,1000,1000,80,0,0,0,80,0,0,0,,,,2025-02-19 08:00,2025-03-04 16:00,,2024-08-28 08:00,2024-09-10 16:00,2024-08-28 08:00,2024-09-10 16:00,2024-08-28 08:00,2024-09-10 16:00,2025-02-19 08:00,2025-03-04 16:00,,PT_Normal,,,,,Z1uWJIyIakqjYKrBVi9IVw,iEcLs4etSUqhuRV2PMEQYQ,,,N,0,0,,,2023-02-08 18:30,2023-02-08 18:31,NotPrmUser,NotPrmUser,
141445,27167,54889,178,0,N,1,N,N,CP_Drtn,TT_Task,DT_FixedDUR2,TK_NotStart,PCON200,Civil Pre-Construction Meeting (Civil Construction Ready),,0,0,40,0,0,0,40,0,0,0,,,,2025-03-05 08:00,2025-03-11 16:00,,2025-03-05 08:00,2025-03-11 16:00,2025-03-05 08:00,2025-03-11 16:00,2025-03-05 08:00,2025-03-11 16:00,2025-03-05 08:00,2025-03-11 16:00,,PT_Normal,,,,,si5+jhKAUUWuPd3PdApqHQ,+Q4mT2/HqEWIrXHSJaPY5A,,,Y,0,0,,,2023-02-08 18:30,2023-02-08 18:31,NotPrmUser,NotPrmUser,
141446,27167,54889,178,0,N,1,N,N,CP_Drtn,TT_Task,DT_FixedDUR2,TK_NotStart,PCON210,Electrical - Pre-Construction Meeting (Electical Construction Ready),,240,0,40,0,0,0,40,0,0,0,,,,2025-04-16 08:00,2025-04-22 16:00,,2025-03-05 08:00,2025-03-11 16:00,2025-03-05 08:00,2025-03-11 16:00,2025-03-05 08:00,2025-03-11 16:00,2025-04-16 08:00,2025-04-22 16:00,,PT_Normal,,,,,vRUL2ApTh0ChR0q08lS0Pw,LlZKxneex0qwet59+CXibQ,,,N,0,0,,,2023-02-08 18:30,2023-02-08 18:31,NotPrmUser,NotPrmUser,
141447,27167,54888,178,0,N,1,N,N,CP_Drtn,TT_Task,DT_FixedDUR2,TK_NotStart,PCON150,Initiate Performance Partnering Process @ 60%,,1480,0,40,0,0,0,40,0,0,0,,,,2025-02-12 08:00,2025-02-18 16:00,,2024-05-29 08:00,2024-06-04 16:00,2024-05-29 08:00,2024-06-04 16:00,2024-05-29 08:00,2024-06-04 16:00,2025-02-12 08:00,2025-02-18 16:00,,PT_Normal,,,,,xQGMGFWbHUOD/cjwf/fyHA,Iw4UFObVBkaeVtRX5+PeNA,,,N,0,0,,,2023-02-08 18:30,2023-02-08 18:31,NotPrmUser,NotPrmUser,
141448,27167,54888,178,0,N,1,N,N,CP_Drtn,TT_Task,DT_FixedDUR2,TK_NotStart,PCON160,Receive Estimate from Contractor,,1480,0,120,0,0,0,120,0,0,0,,,,2025-02-19 08:00,2025-03-11 16:00,,2024-06-05 08:00,2024-06-25 16:00,2024-06-05 08:00,2024-06-25 16:00,2024-06-05 08:00,2024-06-25 16:00,2025-02-19 08:00,2025-03-11 16:00,,PT_Normal,,,,,J/qmaG/IWku/5PLg0cW1Zw,YhHyq+Ikh02AyezKfJ0x8w,,,N,0,0,,,2023-02-08 18:30,2023-02-08 18:31,NotPrmUser,NotPrmUser,
141449,27167,54888,178,0,N,1,N,N,CP_Drtn,TT_Task,DT_FixedDUR2,TK_NotStart,PCON170,Bid Estimate Negotiations,,1480,0,80,0,0,0,80,0,0,0,,,,2025-03-12 08:00,2025-03-25 16:00,,2024-06-26 08:00,2024-07-09 16:00,2024-06-26 08:00,2024-07-09 16:00,2024-06-26 08:00,2024-07-09 16:00,2025-03-12 08:00,2025-03-25 16:00,,PT_Normal,,,,,1YifWQtqbk6NalC9kZyvrQ,Fnkyq1rh9kWtMAnrwU0NOQ,,,N,0,0,,,2023-02-08 18:30,2023-02-08 18:31,NotPrmUser,NotPrmUser,
141450,27167,54888,178,0,N,1,N,N,CP_Drtn,TT_Task,DT_FixedDUR2,TK_NotStart,PCON180,Revise Estimate based on IFC,,1480,0,40,0,0,0,40,0,0,0,,,,2025-03-26 08:00,2025-04-01 16:00,,2024-07-10 08:00,2024-07-16 16:00,2024-07-10 08:00,2024-07-16 16:00,2024-07-10 08:00,2024-07-16 16:00,2025-03-26 08:00,2025-04-01 16:00,,PT_Normal,,,,,jEOZmeR9QkWzx83OZilrwg,b7V/m9kHoUillEvPqpQBPg,,,N,0,0,,,2023-02-08 18:30,2023-02-08 18:31,NotPrmUser,NotPrmUser,
141451,27167,54888,178,0,N,1,N,N,CP_Drtn,TT_Task,DT_FixedDUR2,TK_NotStart,PCON190,Issue Release,,1480,1240,80,0,0,0,80,0,0,0,,,,2025-04-02 08:00,2025-04-15 16:00,,2024-07-17 08:00,2024-07-30 16:00,2024-07-17 08:00,2024-07-30 16:00,2024-07-17 08:00,2024-07-30 16:00,2025-04-02 08:00,2025-04-15 16:00,,PT_Normal,,,,,AzeGPCjKlU6F8prVGuvVxw,v5wgLNT0SUuO8P4HoZd7xQ,,,N,0,0,,,2023-02-08 18:30,2023-02-08 18:31,NotPrmUser,NotPrmUser,
141452,27167,54881,178,0,N,1,N,N,CP_Drtn,TT_Task,DT_FixedDUR2,TK_NotStart,PRO1010,Order Long Lead Civil Material,,680,680,1200,0,0,0,1200,0,0,0,,,,2024-08-07 08:00,2025-03-04 16:00,,2024-04-10 08:00,2024-11-05 16:00,2024-04-10 08:00,2024-11-05 16:00,2024-04-10 08:00,2024-11-05 16:00,2024-08-07 08:00,2025-03-04 16:00,,PT_Normal,,,,,UjtqIczJXUuJJA84WWea/Q,CuOLmiyIL0KcOtxEopx4gQ,,,N,0,0,,,2023-02-08 18:30,2023-02-08 18:31,NotPrmUser,NotPrmUser,
141453,27167,54881,178,0,N,1,N,N,CP_Drtn,TT_Task,DT_FixedDUR2,TK_NotStart,PRO1050,Order Short Lead Materials,,600,600,200,0,0,0,200,0,0,0,,,,2025-01-29 08:00,2025-03-04 16:00,,2024-10-16 08:00,2024-11-19 16:00,2024-10-16 08:00,2024-11-19 16:00,2024-10-16 08:00,2024-11-19 16:00,2025-01-29 08:00,2025-03-04 16:00,,PT_Normal,,,,,wiDxcaLFDEepHxK9/CqjLg,FHKoWT1CQEiTrHb+fld9KQ,,,N,0,0,,,2023-02-08 18:30,2023-02-08 18:31,NotPrmUser,NotPrmUser,
141454,27167,54881,178,0,N,1,N,N,CP_Drtn,TT_Task,DT_FixedDUR2,TK_NotStart,PRO1030,Order Long Lead Electrical Materials,,920,680,800,0,0,0,800,0,0,0,,,,2024-11-27 08:00,2025-04-15 16:00,,2024-06-19 08:00,2024-11-05 16:00,2024-06-19 08:00,2024-11-05 16:00,2024-06-19 08:00,2024-11-05 16:00,2024-11-27 08:00,2025-04-15 16:00,,PT_Normal,,,,,e3GYie67HEqufCgP5MROLA,Z2DACvQcxUy7LpWeuTzYvw,,,N,0,0,,,2023-02-08 18:30,2023-02-08 18:31,NotPrmUser,NotPrmUser,
141455,27167,54891,178,0,N,1,N,N,CP_Drtn,TT_Task,DT_FixedDUR2,TK_NotStart,CON2000,Civil Construction (Trenching 300 feet/day),7730,0,0,3520,0,7208,7208,3520,0,0,0,,,,2025-03-12 08:00,2026-11-17 16:00,,2025-03-12 08:00,2026-11-17 16:00,2025-03-12 08:00,2026-11-17 16:00,2025-03-12 08:00,2026-11-17 16:00,2025-03-12 08:00,2026-11-17 16:00,,PT_Normal,,,,,RKEQOEY8o0iIu5kPi3GRaw,QkgmYzABuUmGCftOfvM4Xg,,,Y,0,0,,,2023-02-08 18:30,2023-02-08 19:11,NotPrmUser,NotPrmUser,
141456,27167,54892,178,0,N,1,N,N,CP_Drtn,TT_Task,DT_FixedDUR2,TK_NotStart,CON3000,Electrical Construction,7786,0,0,3280,0,1640,1640,3280,0,0,0,,,,2025-04-23 08:00,2026-11-17 16:00,,2025-04-23 08:00,2026-11-17 16:00,2025-04-23 08:00,2026-11-17 16:00,2025-04-23 08:00,2026-11-17 16:00,2025-04-23 08:00,2026-11-17 16:00,,PT_Normal,,,,,zO+3mw3qD0aHBtqEpFGyZA,0KwOrXB/HU2q3CntyCmzoA,,,Y,0,0,,,2023-02-08 18:30,2023-02-08 19:35,NotPrmUser,NotPrmUser,
141457,27167,54893,178,0,N,1,N,N,CP_Drtn,TT_Task,DT_FixedDUR2,TK_NotStart,CON4000,Service Cutover,,1056,0,2920,0,0,0,2920,0,0,0,,,,2025-12-26 08:00,2027-05-20 16:00,,2025-06-25 08:00,2026-11-17 16:00,2025-06-25 08:00,2026-11-17 16:00,2025-06-25 08:00,2026-11-17 16:00,2025-12-26 08:00,2027-05-20 16:00,,PT_Normal,,,,,RrEnHBzPG0+t9yT0kWICIA,7kzd5aPnpE6cvP0O8xCDQQ,,,N,0,0,,,2023-02-08 18:30,2023-02-08 18:31,NotPrmUser,NotPrmUser,
141458,27167,54894,178,0,N,1,N,N,CP_Drtn,TT_Task,DT_FixedDUR2,TK_NotStart,CON5000,Scada Construction,,1056,0,520,0,0,0,520,0,0,0,,,,2027-02-19 08:00,2027-05-20 16:00,,2026-08-19 08:00,2026-11-17 16:00,2026-08-19 08:00,2026-11-17 16:00,2026-08-19 08:00,2026-11-17 16:00,2027-02-19 08:00,2027-05-20 16:00,,PT_Normal,,,,,S8oqvy2v5kW4yzYixRzNgQ,WGOsXtceHUGrWfqk6/xtWw,,,N,0,0,,,2023-02-08 18:30,2023-02-08 18:31,NotPrmUser,NotPrmUser,
141459,27167,54895,178,0,N,1,N,N,CP_Drtn,TT_Task,DT_FixedDUR2,TK_NotStart,CON6000,Substation Construction,,1056,0,520,0,0,0,520,0,0,0,,,,2027-02-19 08:00,2027-05-20 16:00,,2026-08-19 08:00,2026-11-17 16:00,2026-08-19 08:00,2026-11-17 16:00,2026-08-19 08:00,2026-11-17 16:00,2027-02-19 08:00,2027-05-20 16:00,,PT_Normal,,,,,mAbjsld8WE24gfugYUVTgw,79MObB8FY0K5YPNdZc3XqA,,,N,0,0,,,2023-02-08 18:30,2023-02-08 18:31,NotPrmUser,NotPrmUser,
141460,27167,54896,178,0,N,1,N,N,CP_Drtn,TT_Task,DT_FixedDrtn,TK_NotStart,CON7000,Overhead RFS (1000 feet per day),7785,0,0,1056,0,1056,1056,1056,0,0,0,,,,2026-11-18 08:00,2027-05-20 16:00,,2026-11-18 08:00,2027-05-20 16:00,2026-11-18 08:00,2027-05-20 16:00,2026-11-18 08:00,2027-05-20 16:00,2026-11-18 08:00,2027-05-20 16:00,,PT_Normal,,,,,Z1arjsWJwkyNPsIGoC1cLA,NofHhchBRUefKPj2T+QSNw,,,Y,0,0,,,2023-02-08 18:30,2023-02-08 18:31,NotPrmUser,NotPrmUser,
141461,27167,54890,178,0,N,1,N,N,CP_Drtn,TT_Task,DT_FixedDUR2,TK_NotStart,ISD1000,ISD - Energize - Put in service,,2008,2008,8,0,0,0,8,25,0,25,,,,2027-11-04 08:00,2027-11-04 16:00,,2026-11-18 08:00,2026-11-18 16:00,2026-11-18 08:00,2026-11-18 16:00,2026-11-18 08:00,2026-11-18 16:00,2027-11-04 08:00,2027-11-04 16:00,,PT_Normal,,,,,xDSV1W6uLka4u4eN1LCs2Q,CpfuvpiX40iRXnjrOVAneA,,,N,0,0,,,2023-02-08 18:30,2023-02-08 18:31,NotPrmUser,NotPrmUser,
141462,27167,54873,178,0,N,1,N,N,CP_Drtn,TT_Task,DT_FixedDUR2,TK_NotStart,SUR1000,Survey and LiDAR,7385,0,0,400,0,9182,9182,400,0,0,0,,,,2023-09-06 08:00,2023-11-14 16:00,,2023-09-06 08:00,2023-11-14 16:00,2023-09-06 08:00,2023-11-14 16:00,2023-09-06 08:00,2023-11-14 16:00,2023-09-06 08:00,2023-11-14 16:00,,PT_Normal,,,,,NycvfhCOlEe1X1XR4PFiXw,u3RCSCnYQkS9x7uz04ZR4g,,,Y,0,0,,,2023-02-08 18:30,2023-02-08 18:31,NotPrmUser,NotPrmUser,
141463,27167,54878,178,0,N,1,N,N,CP_Drtn,TT_Task,DT_FixedDUR2,TK_NotStart,DES1200,Receive Services Worksheet and Cable Info from Design Firms,,760,0,160,0,0,0,160,0,0,0,,,,2024-06-05 08:00,2024-07-02 16:00,,2024-01-24 08:00,2024-02-20 16:00,2024-01-24 08:00,2024-02-20 16:00,2024-01-24 08:00,2024-02-20 16:00,2024-06-05 08:00,2024-07-02 16:00,,PT_Normal,,,,,hw3QCfnfnEapQMraErdJ5g,qTidw+38lE+y1Xr/fy2Twg,,,N,0,0,,,2023-02-08 18:30,2023-02-08 18:31,NotPrmUser,NotPrmUser,
141464,27167,54878,178,0,N,1,N,N,CP_Drtn,TT_Task,DT_FixedDUR2,TK_NotStart,DES1210,Issue to Trench Inspectors,,2376,1320,80,0,0,0,80,0,0,0,,,,2025-12-12 08:00,2025-12-25 16:00,,2024-10-23 08:00,2024-11-05 16:00,2024-10-23 08:00,2024-11-05 16:00,2024-10-23 08:00,2024-11-05 16:00,2025-12-12 08:00,2025-12-25 16:00,,PT_Normal,,,,,Q7WfnWFQyUOPVDP0DJrZ4w,p5avHU6b00+JB7BCRJOI5g,,,N,0,0,,,2023-02-08 18:30,2023-02-08 18:31,NotPrmUser,NotPrmUser,
141465,27167,54890,178,0,N,1,N,N,CP_Drtn,TT_FinMile,DT_FixedDrtn,TK_NotStart,CON1020,Construction Complete,,0,0,0,0,0,0,0,0,0,0,,,,2027-05-20 16:00,2027-05-20 16:00,,2027-05-20 16:00,2027-05-20 16:00,2027-05-20 16:00,2027-05-20 16:00,2027-05-20 16:00,2027-05-20 16:00,2027-05-20 16:00,2027-05-20 16:00,,PT_Normal,,,,,RGvTiaWox0W1ZnSpuseHqg,E57L1hktw0G0E8OqSWXzxQ,,,Y,0,0,,,2023-02-08 18:30,2023-02-08 18:31,NotPrmUser,NotPrmUser,
141466,27167,54890,178,0,N,1,N,N,CP_Drtn,TT_Mile,DT_FixedDrtn,TK_NotStart,CON1010,Construction Start,,5536,5536,0,0,0,0,0,0,0,0,,,,2027-11-04 16:00,2027-11-04 16:00,,2025-03-12 08:00,2025-03-12 08:00,2025-03-12 08:00,2025-03-12 08:00,2025-03-12 08:00,2025-03-12 08:00,2027-11-04 16:00,2027-11-04 16:00,,PT_Normal,,,,,QEReRjASpEOat/Jwuq9JZw,QhnLpg3OwEeUfNHE9nnvnw,,,N,0,0,,,2023-02-08 18:30,2023-02-08 18:31,NotPrmUser,NotPrmUser,
141467,27167,54899,178,0,N,1,N,N,CP_Drtn,TT_Task,DT_FixedDUR2,TK_NotStart,CLO1020,GIS/As-Built and Records Complete,,480,480,480,0,0,0,480,0,0,0,,,,2027-08-13 08:00,2027-11-04 16:00,,2027-05-21 08:00,2027-08-12 16:00,2027-05-21 08:00,2027-08-12 16:00,2027-05-21 08:00,2027-08-12 16:00,2027-08-13 08:00,2027-11-04 16:00,,PT_Normal,,,,,wjAb+e7+PkCLQFzm0uc7kg,Mkx5IDgIqEGgiGbK11+9xg,,,N,0,0,,,2023-02-08 18:30,2023-02-08 18:31,NotPrmUser,NotPrmUser,
141468,27167,54900,178,0,N,1,N,N,CP_Drtn,TT_Task,DT_FixedDUR2,TK_NotStart,CLO1030,"PO's complete, Work Order Reconcilled and Closed",,0,0,960,0,0,0,960,0,0,0,,,,2027-05-21 08:00,2027-11-04 16:00,,2027-05-21 08:00,2027-11-04 16:00,2027-05-21 08:00,2027-11-04 16:00,2027-05-21 08:00,2027-11-04 16:00,2027-05-21 08:00,2027-11-04 16:00,,PT_Normal,,,,,sGS7bnuSkUWX1i9QBxoRLQ,BCa8sWC5Uk6w4bFUt7WNQA,,,Y,0,0,,,2023-02-08 18:30,2023-02-08 18:31,NotPrmUser,NotPrmUser,
141469,27167,54898,178,0,N,1,N,N,CP_Drtn,TT_FinMile,DT_FixedDrtn,TK_NotStart,CLO1010,Project Complete,,0,0,0,0,0,0,0,0,0,0,,,,2027-11-04 16:00,2027-11-04 16:00,,2027-11-04 16:00,2027-11-04 16:00,2027-11-04 16:00,2027-11-04 16:00,2027-11-04 16:00,2027-11-04 16:00,2027-11-04 16:00,2027-11-04 16:00,,PT_Normal,,,,,HB1BTFTNmE2WNveW9/+CEw,KYJoeSPY6EuwrEX1mRyT5w,,,Y,0,0,,,2023-02-08 18:30,2023-02-08 18:31,NotPrmUser,NotPrmUser,
141470,27167,54874,178,0,N,1,N,N,CP_Drtn,TT_LOE,DT_FixedDUR2,TK_NotStart,DES1000,Design Summary,7257,4096,0,2680,0,16233,16233,2680,0,0,0,,,,2023-11-15 08:00,2027-02-18 16:00,,2023-11-15 08:00,2025-03-04 16:00,2023-11-15 08:00,2025-03-04 16:00,2023-11-15 08:00,2025-03-04 16:00,2023-11-15 08:00,2027-02-18 16:00,,PT_Normal,,,,,gzbhppmEEEib2kPgqNqK2g,DSr4Ba5UK0uyaAEMU+wwnw,,,Y,0,0,,,2023-02-08 18:30,2023-02-08 18:31,NotPrmUser,NotPrmUser,
141471,27167,54890,178,0,N,1,N,N,CP_Drtn,TT_LOE,DT_FixedDUR2,TK_NotStart,CON1000,Construction Summary,7385,0,0,4576,0,9972,9972,4576,25,0,25,,,,2027-05-20 16:00,2027-05-20 16:00,,2025-03-12 08:00,2027-05-20 16:00,2025-03-12 08:00,2027-05-20 16:00,2025-03-12 08:00,2027-05-20 16:00,2027-05-20 16:00,2027-05-20 16:00,,PT_Normal,,,,,Te+IsN5j+kyJxAvC+kDxnA,IDoTPM6b9E2oLdVp1ABqlQ,,,N,0,0,,,2023-02-08 18:30,2023-02-08 18:31,NotPrmUser,NotPrmUser,
141472,27167,54898,178,0,N,1,N,N,CP_Drtn,TT_LOE,DT_FixedDUR2,TK_NotStart,CLO1000,Close Out Summary,7385,0,0,960,0,4482,4482,960,0,0,0,,,,2027-05-21 08:00,2027-11-04 16:00,,2027-05-21 08:00,2027-11-04 16:00,2027-05-21 08:00,2027-11-04 16:00,2027-05-21 08:00,2027-11-04 16:00,2027-05-21 08:00,2027-11-04 16:00,,PT_Normal,,,,,+fBSaDEloUS4UEhJigrHdQ,7DQu/xfsu0aPb06CqcnMqg,,,Y,0,0,,,2023-02-08 18:30,2023-02-08 18:31,NotPrmUser,NotPrmUser,
141473,27167,54871,178,0,N,1,N,N,CP_Drtn,TT_LOE,DT_FixedDUR2,TK_NotStart,PCON1000,Pre-Construction Summary,,0,0,3296,0,0,0,3296,0,0,0,,,,2023-08-07 08:00,2025-03-11 16:00,,2023-08-07 08:00,2025-03-11 16:00,2023-08-07 08:00,2025-03-11 16:00,2023-08-07 08:00,2025-03-11 16:00,2023-08-07 08:00,2025-03-11 16:00,,PT_Normal,,,,,W1+x0oDXv0q5Zed6rLS0yg,Utiz+Ypr1EC9SoLjtsxCiA,,,Y,0,0,,,2023-02-08 18:30,2023-02-08 18:31,NotPrmUser,NotPrmUser,
141474,27168,54902,178,0,N,1,N,N,CP_Drtn,TT_Task,DT_FixedDUR2,TK_NotStart,SCO1000,Bundling / Phasing of circuits for project sequencing,,0,0,80,0,0,0,80,0,0,0,2023-08-14 00:00,,,2023-08-14 08:00,2023-08-25 16:00,,2023-08-14 08:00,2023-08-25 16:00,2023-08-14 08:00,2023-08-25 16:00,2023-08-14 08:00,2023-08-25 16:00,2023-08-14 08:00,2023-08-25 16:00,CS_MSOA,PT_Normal,,,,,3tHIqWDqZEO8WZF4Bz3DBg,6cSnjb9EqEmRuVWytX6wOQ,,,Y,0,0,,,2023-02-08 18:30,2023-02-08 18:31,NotPrmUser,NotPrmUser,
141475,27168,54902,178,0,N,1,N,N,CP_Drtn,TT_Task,DT_FixedDUR2,TK_NotStart,SCO1010,Constructability Review,,0,0,40,0,0,0,40,0,0,0,,,,2023-08-28 08:00,2023-09-01 16:00,,2023-08-28 08:00,2023-09-01 16:00,2023-08-28 08:00,2023-09-01 16:00,2023-08-28 08:00,2023-09-01 16:00,2023-08-28 08:00,2023-09-01 16:00,,PT_Normal,,,,,7iR0Lf/1YUmGleak2BCgbQ,qvI2VxYElUa0N8Wx2ErcRQ,,,Y,0,0,,,2023-02-08 18:30,2023-02-08 18:31,NotPrmUser,NotPrmUser,
141476,27168,54902,178,0,N,1,N,N,CP_Drtn,TT_Task,DT_FixedDUR2,TK_NotStart,SCO1020,SDG&E Review,,0,0,16,0,0,0,16,0,0,0,,,,2023-09-04 08:00,2023-09-05 16:00,,2023-09-04 08:00,2023-09-05 16:00,2023-09-04 08:00,2023-09-05 16:00,2023-09-04 08:00,2023-09-05 16:00,2023-09-04 08:00,2023-09-05 16:00,,PT_Normal,,,,,JVQORNGd30y+yBCJTUe2wQ,3qcvMjiH0EC0pd5Ihh/6fw,,,Y,0,0,,,2023-02-08 18:30,2023-02-08 18:31,NotPrmUser,NotPrmUser,
141477,27168,54903,178,0,N,1,N,N,CP_Drtn,TT_Task,DT_FixedDUR2,TK_NotStart,PLA1000,Workorder Setup,,0,0,40,0,0,0,40,0,0,0,,,,2023-09-06 08:00,2023-09-12 16:00,,2023-09-06 08:00,2023-09-12 16:00,2023-09-06 08:00,2023-09-12 16:00,2023-09-06 08:00,2023-09-12 16:00,2023-09-06 08:00,2023-09-12 16:00,,PT_Normal,,,,,FfVKAHKVnEqudRzMTkpaug,bBMPuA5In0Wbfykg/OgbOA,,,Y,0,0,,,2023-02-08 18:30,2023-02-08 18:31,NotPrmUser,NotPrmUser,
141478,27168,54906,178,0,N,1,N,N,CP_Drtn,TT_Task,DT_FixedDUR2,TK_NotStart,DES1040,10% Submittal,,0,0,200,0,0,0,200,0,0,0,,,,2023-11-22 08:00,2024-01-02 16:00,,2023-11-22 08:00,2024-01-02 16:00,2023-11-22 08:00,2024-01-02 16:00,2023-11-22 08:00,2024-01-02 16:00,2023-11-22 08:00,2024-01-02 16:00,,PT_Normal,,,,,sA9yG9l/1U+0t/I/ve8lbg,WNHI/IBq1UqeG5JJ7dyS4A,,,Y,0,0,,,2023-02-08 18:30,2023-02-08 18:31,NotPrmUser,NotPrmUser,
141479,27168,54906,178,0,N,1,N,N,CP_Drtn,TT_Task,DT_FixedDUR2,TK_NotStart,DES1050,30% Submittal,,0,0,400,0,0,0,400,0,0,0,,,,2024-01-03 08:00,2024-03-12 16:00,,2024-01-03 08:00,2024-03-12 16:00,2024-01-03 08:00,2024-03-12 16:00,2024-01-03 08:00,2024-03-12 16:00,2024-01-03 08:00,2024-03-12 16:00,,PT_Normal,,,,,4kDOxiyCF0eIBFkLzByNtg,Hvp0DR8Sg02CbxFNoV2sAw,,,Y,0,0,,,2023-02-08 18:30,2023-02-08 18:31,NotPrmUser,NotPrmUser,
141480,27168,54906,178,0,N,1,N,N,CP_Drtn,TT_Task,DT_FixedDUR2,TK_NotStart,DES1060,30% Review,,0,0,80,0,0,0,80,0,0,0,,,,2024-03-13 08:00,2024-03-26 16:00,,2024-03-13 08:00,2024-03-26 16:00,2024-03-13 08:00,2024-03-26 16:00,2024-03-13 08:00,2024-03-26 16:00,2024-03-13 08:00,2024-03-26 16:00,,PT_Normal,,,,,mYaUlHkgJE21aBcYq9yObw,DfgmaoIkEUOuBMpU4Xy7VQ,,,Y,0,0,,,2023-02-08 18:30,2023-02-08 18:31,NotPrmUser,NotPrmUser,
141481,27168,54906,178,0,N,1,N,N,CP_Drtn,TT_Task,DT_FixedDUR2,TK_NotStart,DES1070,60% Submittal,,600,0,560,0,0,0,560,0,0,0,,,,2024-07-10 08:00,2024-10-15 16:00,,2024-03-27 08:00,2024-07-02 16:00,2024-03-27 08:00,2024-07-02 16:00,2024-03-27 08:00,2024-07-02 16:00,2024-07-10 08:00,2024-10-15 16:00,,PT_Normal,,,,,WOq7zJKBHEuLLTh76tmd1A,96N1gUFoZUGM/7op03OWKQ,,,N,0,0,,,2023-02-08 18:30,2023-02-08 18:31,NotPrmUser,NotPrmUser,
141482,27168,54906,178,0,N,1,N,N,CP_Drtn,TT_Task,DT_FixedDUR2,TK_NotStart,DES1080,60% Review,,600,0,80,0,0,0,80,0,0,0,,,,2024-10-16 08:00,2024-10-29 16:00,,2024-07-03 08:00,2024-07-16 16:00,2024-07-03 08:00,2024-07-16 16:00,2024-07-03 08:00,2024-07-16 16:00,2024-10-16 08:00,2024-10-29 16:00,,PT_Normal,,,,,vInK4LWbWE+vKIfYz32YlQ,sdrTkNaclEWjiqAqfWHgow,,,N,0,0,,,2023-02-08 18:30,2023-02-08 18:31,NotPrmUser,NotPrmUser,
141483,27168,54906,178,0,N,1,N,N,CP_Drtn,TT_Task,DT_FixedDUR2,TK_NotStart,DES1090,90% Submittal,,600,0,360,0,0,0,360,0,0,0,,,,2024-10-30 08:00,2024-12-31 16:00,,2024-07-17 08:00,2024-09-17 16:00,2024-07-17 08:00,2024-09-17 16:00,2024-07-17 08:00,2024-09-17 16:00,2024-10-30 08:00,2024-12-31 16:00,,PT_Normal,,,,,9slIhlBri0OdsZZVCVPqdg,VR4zbaWEsE6+NsBbVqA61w,,,N,0,0,,,2023-02-08 18:30,2023-02-08 18:31,NotPrmUser,NotPrmUser,
141484,27168,54906,178,0,N,1,N,N,CP_Drtn,TT_Task,DT_FixedDUR2,TK_NotStart,DES1100,90% Review,,600,0,80,0,0,0,80,0,0,0,,,,2025-01-01 08:00,2025-01-14 16:00,,2024-09-18 08:00,2024-10-01 16:00,2024-09-18 08:00,2024-10-01 16:00,2024-09-18 08:00,2024-10-01 16:00,2025-01-01 08:00,2025-01-14 16:00,,PT_Normal,,,,,nvSCuBs3DUyA6SrLNUaOMQ,QT/82RbUzUSQGRgzRimv1g,,,N,0,0,,,2023-02-08 18:30,2023-02-08 18:31,NotPrmUser,NotPrmUser,
141485,27168,54906,178,0,N,1,N,N,CP_Drtn,TT_Task,DT_FixedDUR2,TK_NotStart,DES1110,100% Submittal,,680,0,160,0,0,0,160,0,0,0,,,,2025-01-29 08:00,2025-02-25 16:00,,2024-10-02 08:00,2024-10-29 16:00,2024-10-02 08:00,2024-10-29 16:00,2024-10-02 08:00,2024-10-29 16:00,2025-01-29 08:00,2025-02-25 16:00,,PT_Normal,,,,,v0w5URT88UWX3bc7uIFvGg,CgGEdhQ1a0i1Hg6WwBfhzQ,,,N,0,0,,,2023-02-08 18:30,2023-02-08 18:31,NotPrmUser,NotPrmUser,
141486,27168,54906,178,0,N,1,N,N,CP_Drtn,TT_Task,DT_FixedDUR2,TK_NotStart,DES1120,Issue IFC Design Package,,0,0,80,0,0,0,80,0,0,0,,,,2025-02-26 08:00,2025-03-11 16:00,,2025-02-26 08:00,2025-03-11 16:00,2025-02-26 08:00,2025-03-11 16:00,2025-02-26 08:00,2025-03-11 16:00,2025-02-26 08:00,2025-03-11 16:00,,PT_Normal,,,,,KKJ7mbornkKz18DHqUqD1w,DoU/JGsV2keZW2X0jDxtSQ,,,Y,0,0,,,2023-02-08 18:30,2023-02-08 18:31,NotPrmUser,NotPrmUser,
141487,27168,54907,178,0,N,1,N,N,CP_Drtn,TT_Task,DT_FixedDUR2,TK_NotStart,DES1130,60% Submittal,,840,0,480,0,0,0,480,0,0,0,,,,2024-07-24 08:00,2024-10-15 16:00,,2024-02-28 08:00,2024-05-21 16:00,2024-02-28 08:00,2024-05-21 16:00,2024-02-28 08:00,2024-05-21 16:00,2024-07-24 08:00,2024-10-15 16:00,,PT_Normal,,,,,irpHwL/0Ck6XBY4xzcheOQ,tH35inEfe0CQyc41sABhbA,,,N,0,0,,,2023-02-08 18:30,2023-02-08 18:31,NotPrmUser,NotPrmUser,
141488,27168,54907,178,0,N,1,N,N,CP_Drtn,TT_Task,DT_FixedDUR2,TK_NotStart,DES1140,60% Review,,920,0,80,0,0,0,80,0,0,0,,,,2024-10-30 08:00,2024-11-12 16:00,,2024-05-22 08:00,2024-06-04 16:00,2024-05-22 08:00,2024-06-04 16:00,2024-05-22 08:00,2024-06-04 16:00,2024-10-30 08:00,2024-11-12 16:00,,PT_Normal,,,,,odugTPia10qUU46XobEaaw,J7UxeWB1iE2krTOA/gfBTw,,,N,0,0,,,2023-02-08 18:30,2023-02-08 18:31,NotPrmUser,NotPrmUser,
141489,27168,54907,178,0,N,1,N,N,CP_Drtn,TT_Task,DT_FixedDUR2,TK_NotStart,DES1150,90% Submittal,,1120,0,400,0,0,0,400,0,0,0,,,,2024-12-18 08:00,2025-02-25 16:00,,2024-06-05 08:00,2024-08-13 16:00,2024-06-05 08:00,2024-08-13 16:00,2024-06-05 08:00,2024-08-13 16:00,2024-12-18 08:00,2025-02-25 16:00,,PT_Normal,,,,,iVnRKxAIGUKl2fsHR7kuCA,PPbvalAV1EqFFbTk1Dk9xg,,,N,0,0,,,2023-02-08 18:30,2023-02-08 18:31,NotPrmUser,NotPrmUser,
141490,27168,54907,178,0,N,1,N,N,CP_Drtn,TT_Task,DT_FixedDUR2,TK_NotStart,DES1160,90% Review,,1120,0,80,0,0,0,80,0,0,0,,,,2025-02-26 08:00,2025-03-11 16:00,,2024-08-14 08:00,2024-08-27 16:00,2024-08-14 08:00,2024-08-27 16:00,2024-08-14 08:00,2024-08-27 16:00,2025-02-26 08:00,2025-03-11 16:00,,PT_Normal,,,,,i9k+zOWiXk28IdGgXsCsaA,l5O/sutsEkOBsklyPJ/lLw,,,N,0,0,,,2023-02-08 18:30,2023-02-08 18:31,NotPrmUser,NotPrmUser,
141491,27168,54907,178,0,N,1,N,N,CP_Drtn,TT_Task,DT_FixedDUR2,TK_NotStart,DES1170,100% Submittal,,1120,880,160,0,0,0,160,0,0,0,,,,2025-03-12 08:00,2025-04-08 16:00,,2024-08-28 08:00,2024-09-24 16:00,2024-08-28 08:00,2024-09-24 16:00,2024-08-28 08:00,2024-09-24 16:00,2025-03-12 08:00,2025-04-08 16:00,,PT_Normal,,,,,G4Oa9sCFNUeXlGuHN5SLKQ,gT5Adr2GAk2Vc/yiwqQTpQ,,,N,0,0,,,2023-02-08 18:30,2023-02-08 18:31,NotPrmUser,NotPrmUser,
141492,27168,54907,178,0,N,1,N,N,CP_Drtn,TT_Task,DT_FixedDUR2,TK_NotStart,DES1180,Issue IFC Design Package,,240,0,80,0,0,0,80,0,0,0,,,,2025-04-09 08:00,2025-04-22 16:00,,2025-02-26 08:00,2025-03-11 16:00,2025-02-26 08:00,2025-03-11 16:00,2025-02-26 08:00,2025-03-11 16:00,2025-04-09 08:00,2025-04-22 16:00,,PT_Normal,,,,,Re25sm4qdUivuRfFAVX33w,yO6Lnet4iUGktUoKsJ3r2Q,,,N,0,0,,,2023-02-08 18:30,2023-02-08 18:31,NotPrmUser,NotPrmUser,
141493,27168,54908,178,0,N,1,N,N,CP_Drtn,TT_Task,DT_FixedDUR2,TK_NotStart,DES1190,Issue Services Worksheet to Design Firms,,760,0,160,0,0,0,160,0,0,0,,,,2024-05-15 08:00,2024-06-11 16:00,,2024-01-03 08:00,2024-01-30 16:00,2024-01-03 08:00,2024-01-30 16:00,2024-01-03 08:00,2024-01-30 16:00,2024-05-15 08:00,2024-06-11 16:00,,PT_Normal,,,,,FjUhmyNQUUmTs7MBV5ajtw,Y2Vsvn+Zk0CXUP7ponAWVg,,,N,0,0,,,2023-02-08 18:30,2023-02-08 18:31,NotPrmUser,NotPrmUser,
141494,27168,54909,178,0,N,1,N,N,CP_Drtn,TT_Task,DT_FixedDUR2,TK_NotStart,DES1220,SED Design,,6376,0,240,0,0,0,240,0,0,0,,,,2026-12-18 08:00,2027-01-28 16:00,,2023-11-22 08:00,2024-01-09 16:00,2023-11-22 08:00,2024-01-09 16:00,2023-11-22 08:00,2024-01-09 16:00,2026-12-18 08:00,2027-01-28 16:00,,PT_Normal,,,,,Tf/JzaQg0ku/ooyuNhBCsw,oKG8LsVsqUKUieX56HUC2A,,,N,0,0,,,2023-02-08 18:30,2023-02-08 18:31,NotPrmUser,NotPrmUser,
141495,27168,54909,178,0,N,1,N,N,CP_Drtn,TT_Task,DT_FixedDUR2,TK_NotStart,DES1230,Issue IFC Design Package,,6376,5320,160,0,0,0,160,0,0,0,,,,2027-01-29 08:00,2027-02-25 16:00,,2024-01-10 08:00,2024-02-06 16:00,2024-01-10 08:00,2024-02-06 16:00,2024-01-10 08:00,2024-02-06 16:00,2027-01-29 08:00,2027-02-25 16:00,,PT_Normal,,,,,4eJw+nLil0qRB763gWXyJQ,9VNbK2/68EWoyMHoOtxUCQ,,,N,0,0,,,2023-02-08 18:30,2023-02-08 18:31,NotPrmUser,NotPrmUser,
141496,27168,54911,178,0,N,1,N,N,CP_Drtn,TT_Task,DT_FixedDUR2,TK_NotStart,PRO1000,Civil BOM - Long Lead @ 30%,,680,0,120,0,0,0,120,0,0,0,,,,2024-07-24 08:00,2024-08-13 16:00,,2024-03-27 08:00,2024-04-16 16:00,2024-03-27 08:00,2024-04-16 16:00,2024-03-27 08:00,2024-04-16 16:00,2024-07-24 08:00,2024-08-13 16:00,,PT_Normal,,,,,DMzDIwROXEO44eqwgKSGFg,hZd2FHck70q3Yw/XGhQi+Q,,,N,0,0,,,2023-02-08 18:30,2023-02-08 18:31,NotPrmUser,NotPrmUser,
141497,27168,54911,178,0,N,1,N,N,CP_Drtn,TT_Task,DT_FixedDUR2,TK_NotStart,PRO1020,Electrical BOM - Long Lead @ 60%,,920,0,120,0,0,0,120,0,0,0,,,,2024-11-13 08:00,2024-12-03 16:00,,2024-06-05 08:00,2024-06-25 16:00,2024-06-05 08:00,2024-06-25 16:00,2024-06-05 08:00,2024-06-25 16:00,2024-11-13 08:00,2024-12-03 16:00,,PT_Normal,,,,,wvmjy7TLmU6evtV6eN4Ibw,BXl8rAzczU+t8H3TSqlhRA,,,N,0,0,,,2023-02-08 18:30,2023-02-08 18:31,NotPrmUser,NotPrmUser,
141498,27168,54911,178,0,N,1,N,N,CP_Drtn,TT_Task,DT_FixedDUR2,TK_NotStart,PRO1040,BOM - Short Lead @ 60%,,600,0,120,0,0,0,120,0,0,0,,,,2025-01-15 08:00,2025-02-04 16:00,,2024-10-02 08:00,2024-10-22 16:00,2024-10-02 08:00,2024-10-22 16:00,2024-10-02 08:00,2024-10-22 16:00,2025-01-15 08:00,2025-02-04 16:00,,PT_Normal,,,,,tz89MBPDj0qNwe1IL9HVyQ,kq9kJWPlrEed2IOm/rXIKQ,,,N,0,0,,,2023-02-08 18:30,2023-02-08 18:31,NotPrmUser,NotPrmUser,
141499,27168,54912,178,0,N,1,N,N,CP_Drtn,TT_Task,DT_FixedDUR2,TK_NotStart,PER1000,CalTrans Permit,,0,0,2000,0,0,0,2000,0,0,0,,,,2024-03-27 08:00,2025-03-11 16:00,,2024-03-27 08:00,2025-03-11 16:00,2024-03-27 08:00,2025-03-11 16:00,2024-03-27 08:00,2025-03-11 16:00,2024-03-27 08:00,2025-03-11 16:00,,PT_Normal,,,,,RoVfl5Fp70u+iiB60nXFnw,ijVk5f5az0OERCWAxnXiaw,,,Y,0,0,,,2023-02-08 18:30,2023-02-08 18:31,NotPrmUser,NotPrmUser,
141500,27168,54912,178,0,N,1,N,N,CP_Drtn,TT_Task,DT_FixedDUR2,TK_NotStart,PER1010,City & County Permits,,1200,1200,800,0,0,0,800,0,0,0,,,,2024-10-23 08:00,2025-03-11 16:00,,2024-03-27 08:00,2024-08-13 16:00,2024-03-27 08:00,2024-08-13 16:00,2024-03-27 08:00,2024-08-13 16:00,2024-10-23 08:00,2025-03-11 16:00,,PT_Normal,,,,,mGm9cTnPXU+Zm8fb3Ajtkw,xjo17AEjjEi5woVuqy4Q7A,,,N,0,0,,,2023-02-08 18:30,2023-02-08 18:31,NotPrmUser,NotPrmUser,
141501,27168,54912,178,0,N,1,N,N,CP_Drtn,TT_Task,DT_FixedDUR2,TK_NotStart,PER1020,Other Permit (TBD),,1200,1200,800,0,0,0,800,0,0,0,,,,2024-10-23 08:00,2025-03-11 16:00,,2024-03-27 08:00,2024-08-13 16:00,2024-03-27 08:00,2024-08-13 16:00,2024-03-27 08:00,2024-08-13 16:00,2024-10-23 08:00,2025-03-11 16:00,,PT_Normal,,,,,R0GUljnoBEGGhe/LRbUWuQ,pIOeBRp/pkq8QjgJ5pBkxg,,,N,0,0,,,2023-02-08 18:30,2023-02-08 18:31,NotPrmUser,NotPrmUser,
141502,27168,54913,178,0,N,1,N,N,CP_Drtn,TT_Task,DT_FixedDUR2,TK_NotStart,PUB1000,Public Affairs / Community Outreach,,6216,6216,800,0,0,0,800,0,0,0,,,,2027-06-25 08:00,2027-11-11 16:00,,2024-07-03 08:00,2024-11-19 16:00,2024-07-03 08:00,2024-11-19 16:00,2024-07-03 08:00,2024-11-19 16:00,2027-06-25 08:00,2027-11-11 16:00,,PT_Normal,,,,,XGPdDUCzFEOT2KzcpdLN2A,pgv1mkVOTUCQ7foAo0nNeA,,,N,0,0,,,2023-02-08 18:30,2023-02-08 18:31,NotPrmUser,NotPrmUser,
141503,27168,54914,178,0,N,1,N,N,CP_Drtn,TT_Task,DT_FixedDUR2,TK_NotStart,LAN1000,Land Rights and Easement Acquisition,,880,880,1200,0,0,0,1200,0,0,0,,,,2024-08-14 08:00,2025-03-11 16:00,,2024-03-13 08:00,2024-10-08 16:00,2024-03-13 08:00,2024-10-08 16:00,2024-03-13 08:00,2024-10-08 16:00,2024-08-14 08:00,2025-03-11 16:00,,PT_Normal,,,,,yOWo/jBO3UmjsYXYTUJ6kA,InnC5rlEg0CA5VZqOa41GA,,,N,0,0,,,2023-02-08 18:30,2023-02-08 18:31,NotPrmUser,NotPrmUser,
141504,27168,54914,178,0,N,1,N,N,CP_Drtn,TT_Task,DT_FixedDUR2,TK_NotStart,LAN1010,Tribal Land Rights,,880,880,1200,0,0,0,1200,0,0,0,,,,2024-08-14 08:00,2025-03-11 16:00,,2024-03-13 08:00,2024-10-08 16:00,2024-03-13 08:00,2024-10-08 16:00,2024-03-13 08:00,2024-10-08 16:00,2024-08-14 08:00,2025-03-11 16:00,,PT_Normal,,,,,NL+XUla4QkuFcvYZCXCzbw,YeV8M8Ep3kGp7xfWRy9gfw,,,N,0,0,,,2023-02-08 18:30,2023-02-08 18:31,NotPrmUser,NotPrmUser,
141505,27168,54914,178,0,N,1,N,N,CP_Drtn,TT_Task,DT_FixedDUR2,TK_NotStart,LAN1020,Laydown Yards,,880,880,1200,0,0,0,1200,0,0,0,,,,2024-08-14 08:00,2025-03-11 16:00,,2024-03-13 08:00,2024-10-08 16:00,2024-03-13 08:00,2024-10-08 16:00,2024-03-13 08:00,2024-10-08 16:00,2024-08-14 08:00,2025-03-11 16:00,,PT_Normal,,,,,pW1DSX0zBkGrvsrez8SInQ,/UyPBh1og0mvrFSd/ZDh6w,,,N,0,0,,,2023-02-08 18:30,2023-02-08 18:31,NotPrmUser,NotPrmUser,
141506,27168,54915,178,0,N,1,N,N,CP_Drtn,TT_Task,DT_FixedDUR2,TK_NotStart,ENV1000,10% Environmental Submittal,,880,0,200,0,0,0,200,0,0,0,,,,2024-05-01 08:00,2024-06-04 16:00,,2023-11-22 08:00,2024-01-02 16:00,2023-11-22 08:00,2024-01-02 16:00,2023-11-22 08:00,2024-01-02 16:00,2024-05-01 08:00,2024-06-04 16:00,,PT_Normal,,,,,9fVFfDVZ4UWzi9vlpoVASQ,/d0a5rvTGEi7AJmg+9uUZw,,,N,0,0,,,2023-02-08 18:30,2023-02-08 18:31,NotPrmUser,NotPrmUser,
141507,27168,54915,178,0,N,1,N,N,CP_Drtn,TT_Task,DT_FixedDUR2,TK_NotStart,ENV1010,10% Environmental Review,,880,0,120,0,0,0,120,0,0,0,,,,2024-06-05 08:00,2024-06-25 16:00,,2024-01-03 08:00,2024-01-23 16:00,2024-01-03 08:00,2024-01-23 16:00,2024-01-03 08:00,2024-01-23 16:00,2024-06-05 08:00,2024-06-25 16:00,,PT_Normal,,,,,e6poMecXQU2BLNN0Rv1UpA,9g9puisG0UC79SVNmcOASA,,,N,0,0,,,2023-02-08 18:30,2023-02-08 18:31,NotPrmUser,NotPrmUser,
141508,27168,54915,178,0,N,1,N,N,CP_Drtn,TT_Task,DT_FixedDUR2,TK_NotStart,ENV1020,30% Environmental Submittal,,840,0,200,0,0,0,200,0,0,0,,,,2024-10-16 08:00,2024-11-19 16:00,,2024-05-22 08:00,2024-06-25 16:00,2024-05-22 08:00,2024-06-25 16:00,2024-05-22 08:00,2024-06-25 16:00,2024-10-16 08:00,2024-11-19 16:00,,PT_Normal,,,,,PNEPBCxufkieFdHEx3O9Jg,97j/sRpxPk6hI3mxX/u9fg,,,N,0,0,,,2023-02-08 18:30,2023-02-08 18:31,NotPrmUser,NotPrmUser,
141509,27168,54915,178,0,N,1,N,N,CP_Drtn,TT_Task,DT_FixedDUR2,TK_NotStart,ENV1030,30% Environmental Review,,840,0,120,0,0,0,120,0,0,0,,,,2024-11-20 08:00,2024-12-10 16:00,,2024-06-26 08:00,2024-07-16 16:00,2024-06-26 08:00,2024-07-16 16:00,2024-06-26 08:00,2024-07-16 16:00,2024-11-20 08:00,2024-12-10 16:00,,PT_Normal,,,,,iDDMoX1Pn0W2+DWjBaHwnQ,NFvU3fnwnU6hVLxT9Fb2FQ,,,N,0,0,,,2023-02-08 18:30,2023-02-08 18:31,NotPrmUser,NotPrmUser,
141510,27168,54915,178,0,N,1,N,N,CP_Drtn,TT_Task,DT_FixedDUR2,TK_NotStart,ENV1040,60% Environmental Submittal,,840,0,280,0,0,0,280,0,0,0,,,,2024-12-11 08:00,2025-01-28 16:00,,2024-07-17 08:00,2024-09-03 16:00,2024-07-17 08:00,2024-09-03 16:00,2024-07-17 08:00,2024-09-03 16:00,2024-12-11 08:00,2025-01-28 16:00,,PT_Normal,,,,,xNVn3OVGsk+jgXDdxN7X6A,a/yuxKJrrU2SPGngDLy/Cg,,,N,0,0,,,2023-02-08 18:30,2023-02-08 18:31,NotPrmUser,NotPrmUser,
141511,27168,54915,178,0,N,1,N,N,CP_Drtn,TT_Task,DT_FixedDUR2,TK_NotStart,ENV1050,60% Environmental Release,,960,960,120,0,0,0,120,0,0,0,,,,2025-02-19 08:00,2025-03-11 16:00,,2024-09-04 08:00,2024-09-24 16:00,2024-09-04 08:00,2024-09-24 16:00,2024-09-04 08:00,2024-09-24 16:00,2025-02-19 08:00,2025-03-11 16:00,,PT_Normal,,,,,AkYXtFIEvEesqjGOGkZaBg,cuDc9TFejky65Sr9iZ6XFA,,,N,0,0,,,2023-02-08 18:30,2023-02-08 18:31,NotPrmUser,NotPrmUser,
141512,27168,54915,178,0,N,1,N,N,CP_Drtn,TT_Task,DT_FixedDUR2,TK_NotStart,ENV1060,BIA NEPA Submittal,,840,0,80,0,0,0,80,0,0,0,,,,2025-01-29 08:00,2025-02-11 16:00,,2024-09-04 08:00,2024-09-17 16:00,2024-09-04 08:00,2024-09-17 16:00,2024-09-04 08:00,2024-09-17 16:00,2025-01-29 08:00,2025-02-11 16:00,,PT_Normal,,,,,1vbvd1pUz0q2ASew15zF2w,SzG5/Rqnd0iNllCvGokVbQ,,,N,0,0,,,2023-02-08 18:30,2023-02-08 18:31,NotPrmUser,NotPrmUser,
141513,27168,54915,178,0,N,1,N,N,CP_Drtn,TT_Task,DT_FixedDUR2,TK_NotStart,ENV1070,"BIA Received (Add 250 days, if needed)",,840,840,160,0,0,0,160,0,0,0,,,,2025-02-12 08:00,2025-03-11 16:00,,2024-09-18 08:00,2024-10-15 16:00,2024-09-18 08:00,2024-10-15 16:00,2024-09-18 08:00,2024-10-15 16:00,2025-02-12 08:00,2025-03-11 16:00,,PT_Normal,,,,,iHLEaMVXV0y8oESG23bDNQ,UBWLJziHv0qKcjTwv378yQ,,,N,0,0,,,2023-02-08 18:30,2023-02-08 18:31,NotPrmUser,NotPrmUser,
141514,27168,54905,178,0,N,1,N,N,CP_Drtn,TT_Task,DT_FixedDUR2,TK_NotStart,DES1010,Seismic / Geotech Submittal,,880,0,200,0,0,0,200,0,0,0,,,,2024-06-26 08:00,2024-07-30 16:00,,2024-01-24 08:00,2024-02-27 16:00,2024-01-24 08:00,2024-02-27 16:00,2024-01-24 08:00,2024-02-27 16:00,2024-06-26 08:00,2024-07-30 16:00,,PT_Normal,,,,,Sbt7XsZ/JkerutZqo4D91Q,djmUGrU55kW2JyTh3gtBKQ,,,N,0,0,,,2023-02-08 18:30,2023-02-08 18:31,NotPrmUser,NotPrmUser,
141515,27168,54905,178,0,N,1,N,N,CP_Drtn,TT_Task,DT_FixedDUR2,TK_NotStart,DES1020,Potholing Submittal,,880,40,200,0,0,0,200,0,0,0,,,,2024-07-31 08:00,2024-09-03 16:00,,2024-02-28 08:00,2024-04-02 16:00,2024-02-28 08:00,2024-04-02 16:00,2024-02-28 08:00,2024-04-02 16:00,2024-07-31 08:00,2024-09-03 16:00,,PT_Normal,,,,,uwE02h2isUSkX+l1qHLxGA,d+TMHR+GGEKjqotbyg8RuA,,,N,0,0,,,2023-02-08 18:30,2023-02-08 18:31,NotPrmUser,NotPrmUser,
141516,27168,54905,178,0,N,1,N,N,CP_Drtn,TT_Task,DT_FixedDUR2,TK_NotStart,DES1030,Potholing Release /Perform Potholing,,840,0,240,0,0,0,240,0,0,0,,,,2024-09-04 08:00,2024-10-15 16:00,,2024-04-10 08:00,2024-05-21 16:00,2024-04-10 08:00,2024-05-21 16:00,2024-04-10 08:00,2024-05-21 16:00,2024-09-04 08:00,2024-10-15 16:00,,PT_Normal,,,,,H2wd/vWStkGja3srNG7nsg,ulyRo3uAAEWNMz2s34adaw,,,N,0,0,,,2023-02-08 18:30,2023-02-08 18:31,NotPrmUser,NotPrmUser,
141517,27168,54917,178,0,N,1,N,N,CP_Drtn,TT_Task,DT_FixedDUR2,TK_NotStart,PCON100,Initiate Performance Partnering Process @ 60%,,1000,0,40,0,0,0,40,0,0,0,,,,2025-01-08 08:00,2025-01-14 16:00,,2024-07-17 08:00,2024-07-23 16:00,2024-07-17 08:00,2024-07-23 16:00,2024-07-17 08:00,2024-07-23 16:00,2025-01-08 08:00,2025-01-14 16:00,,PT_Normal,,,,,WOB9nNIsq0mhhbqFZIM5dw,Ev9CdAxSGU6StZ20G9kCuA,,,N,0,0,,,2023-02-08 18:30,2023-02-08 18:31,NotPrmUser,NotPrmUser,
141518,27168,54917,178,0,N,1,N,N,CP_Drtn,TT_Task,DT_FixedDUR2,TK_NotStart,PCON110,Receive Estimate from Contractor,,1000,0,120,0,0,0,120,0,0,0,,,,2025-01-15 08:00,2025-02-04 16:00,,2024-07-24 08:00,2024-08-13 16:00,2024-07-24 08:00,2024-08-13 16:00,2024-07-24 08:00,2024-08-13 16:00,2025-01-15 08:00,2025-02-04 16:00,,PT_Normal,,,,,22B4CnLWkUyYpxy87eSnhA,70BH4rN+iUS2SRZy5AbRbA,,,N,0,0,,,2023-02-08 18:30,2023-02-08 18:31,NotPrmUser,NotPrmUser,
141519,27168,54917,178,0,N,1,N,N,CP_Drtn,TT_Task,DT_FixedDUR2,TK_NotStart,PCON120,Bid Estimate Negotiations,,1000,0,80,0,0,0,80,0,0,0,,,,2025-02-05 08:00,2025-02-18 16:00,,2024-08-14 08:00,2024-08-27 16:00,2024-08-14 08:00,2024-08-27 16:00,2024-08-14 08:00,2024-08-27 16:00,2025-02-05 08:00,2025-02-18 16:00,,PT_Normal,,,,,Jsrw/1NqYUyGybIDlHcTDw,LzvM7v8C6EGvFBAZU+yUkw,,,N,0,0,,,2023-02-08 18:30,2023-02-08 18:31,NotPrmUser,NotPrmUser,
141520,27168,54917,178,0,N,1,N,N,CP_Drtn,TT_Task,DT_FixedDUR2,TK_NotStart,PCON130,Revise Estimate based on IFC,,1000,0,40,0,0,0,40,0,0,0,,,,2025-02-19 08:00,2025-02-25 16:00,,2024-08-28 08:00,2024-09-03 16:00,2024-08-28 08:00,2024-09-03 16:00,2024-08-28 08:00,2024-09-03 16:00,2025-02-19 08:00,2025-02-25 16:00,,PT_Normal,,,,,wyF1NUB1uEW1EpMKkwdrfQ,Ju9wBy0cv0Cx8Gr4UtS6/A,,,N,0,0,,,2023-02-08 18:30,2023-02-08 18:31,NotPrmUser,NotPrmUser,
141521,27168,54917,178,0,N,1,N,N,CP_Drtn,TT_Task,DT_FixedDUR2,TK_NotStart,PCON140,Issue Release,,1000,1000,80,0,0,0,80,0,0,0,,,,2025-02-26 08:00,2025-03-11 16:00,,2024-09-04 08:00,2024-09-17 16:00,2024-09-04 08:00,2024-09-17 16:00,2024-09-04 08:00,2024-09-17 16:00,2025-02-26 08:00,2025-03-11 16:00,,PT_Normal,,,,,lHeOE5rCtkeHySCfsLIsuQ,qn2ADuWs4E+wJjhF06YhlA,,,N,0,0,,,2023-02-08 18:30,2023-02-08 18:31,NotPrmUser,NotPrmUser,
141522,27168,54919,178,0,N,1,N,N,CP_Drtn,TT_Task,DT_FixedDUR2,TK_NotStart,PCON200,Civil Pre-Construction Meeting (Civil Construction Ready),,0,0,40,0,0,0,40,0,0,0,,,,2025-03-12 08:00,2025-03-18 16:00,,2025-03-12 08:00,2025-03-18 16:00,2025-03-12 08:00,2025-03-18 16:00,2025-03-12 08:00,2025-03-18 16:00,2025-03-12 08:00,2025-03-18 16:00,,PT_Normal,,,,,b4yoWqU2kUayx429FcLgBg,/fzpRIBTS0Wi39o0yqA71w,,,Y,0,0,,,2023-02-08 18:30,2023-02-08 18:31,NotPrmUser,NotPrmUser,
141523,27168,54919,178,0,N,1,N,N,CP_Drtn,TT_Task,DT_FixedDUR2,TK_NotStart,PCON210,Electrical - Pre-Construction Meeting (Electical Construction Ready),,240,0,40,0,0,0,40,0,0,0,,,,2025-04-23 08:00,2025-04-29 16:00,,2025-03-12 08:00,2025-03-18 16:00,2025-03-12 08:00,2025-03-18 16:00,2025-03-12 08:00,2025-03-18 16:00,2025-04-23 08:00,2025-04-29 16:00,,PT_Normal,,,,,dNP099mQykmVeDjF+CobzA,12e5IMSkRkiRg5cqGBDQXQ,,,N,0,0,,,2023-02-08 18:30,2023-02-08 18:31,NotPrmUser,NotPrmUser,
141524,27168,54918,178,0,N,1,N,N,CP_Drtn,TT_Task,DT_FixedDUR2,TK_NotStart,PCON150,Initiate Performance Partnering Process @ 60%,,1480,0,40,0,0,0,40,0,0,0,,,,2025-02-19 08:00,2025-02-25 16:00,,2024-06-05 08:00,2024-06-11 16:00,2024-06-05 08:00,2024-06-11 16:00,2024-06-05 08:00,2024-06-11 16:00,2025-02-19 08:00,2025-02-25 16:00,,PT_Normal,,,,,/Rw+rLCc6EOEDLwhVc1xqQ,f2X6w5mkAUOEA/JypUUNyQ,,,N,0,0,,,2023-02-08 18:30,2023-02-08 18:31,NotPrmUser,NotPrmUser,
141525,27168,54918,178,0,N,1,N,N,CP_Drtn,TT_Task,DT_FixedDUR2,TK_NotStart,PCON160,Receive Estimate from Contractor,,1480,0,120,0,0,0,120,0,0,0,,,,2025-02-26 08:00,2025-03-18 16:00,,2024-06-12 08:00,2024-07-02 16:00,2024-06-12 08:00,2024-07-02 16:00,2024-06-12 08:00,2024-07-02 16:00,2025-02-26 08:00,2025-03-18 16:00,,PT_Normal,,,,,nn9QhBFxUkiepv2KI+1XVA,rk2s0DkpKEeSXveHtzIy3Q,,,N,0,0,,,2023-02-08 18:30,2023-02-08 18:31,NotPrmUser,NotPrmUser,
141526,27168,54918,178,0,N,1,N,N,CP_Drtn,TT_Task,DT_FixedDUR2,TK_NotStart,PCON170,Bid Estimate Negotiations,,1480,0,80,0,0,0,80,0,0,0,,,,2025-03-19 08:00,2025-04-01 16:00,,2024-07-03 08:00,2024-07-16 16:00,2024-07-03 08:00,2024-07-16 16:00,2024-07-03 08:00,2024-07-16 16:00,2025-03-19 08:00,2025-04-01 16:00,,PT_Normal,,,,,o2+YVbUjV0+DdVrgKHi4eg,YApkJLF0+kSSJ15fIfEBDg,,,N,0,0,,,2023-02-08 18:30,2023-02-08 18:31,NotPrmUser,NotPrmUser,
141527,27168,54918,178,0,N,1,N,N,CP_Drtn,TT_Task,DT_FixedDUR2,TK_NotStart,PCON180,Revise Estimate based on IFC,,1480,0,40,0,0,0,40,0,0,0,,,,2025-04-02 08:00,2025-04-08 16:00,,2024-07-17 08:00,2024-07-23 16:00,2024-07-17 08:00,2024-07-23 16:00,2024-07-17 08:00,2024-07-23 16:00,2025-04-02 08:00,2025-04-08 16:00,,PT_Normal,,,,,LvacHQ1Cw0aLuBDUych1aw,EwmR9gDcRkilu5ifVa5rGw,,,N,0,0,,,2023-02-08 18:30,2023-02-08 18:31,NotPrmUser,NotPrmUser,
141528,27168,54918,178,0,N,1,N,N,CP_Drtn,TT_Task,DT_FixedDUR2,TK_NotStart,PCON190,Issue Release,,1480,1240,80,0,0,0,80,0,0,0,,,,2025-04-09 08:00,2025-04-22 16:00,,2024-07-24 08:00,2024-08-06 16:00,2024-07-24 08:00,2024-08-06 16:00,2024-07-24 08:00,2024-08-06 16:00,2025-04-09 08:00,2025-04-22 16:00,,PT_Normal,,,,,NtaZDJ7+406NiJR7cD0NlA,oW7iIYKsE0WOc4JueInPYw,,,N,0,0,,,2023-02-08 18:30,2023-02-08 18:31,NotPrmUser,NotPrmUser,
141529,27168,54911,178,0,N,1,N,N,CP_Drtn,TT_Task,DT_FixedDUR2,TK_NotStart,PRO1010,Order Long Lead Civil Material,,680,680,1200,0,0,0,1200,0,0,0,,,,2024-08-14 08:00,2025-03-11 16:00,,2024-04-17 08:00,2024-11-12 16:00,2024-04-17 08:00,2024-11-12 16:00,2024-04-17 08:00,2024-11-12 16:00,2024-08-14 08:00,2025-03-11 16:00,,PT_Normal,,,,,enTMLV6zCUyUJvHSp3+vYw,6sTpeY3Zeka9jvaJf74F/A,,,N,0,0,,,2023-02-08 18:30,2023-02-08 18:31,NotPrmUser,NotPrmUser,
141530,27168,54911,178,0,N,1,N,N,CP_Drtn,TT_Task,DT_FixedDUR2,TK_NotStart,PRO1050,Order Short Lead Materials,,600,600,200,0,0,0,200,0,0,0,,,,2025-02-05 08:00,2025-03-11 16:00,,2024-10-23 08:00,2024-11-26 16:00,2024-10-23 08:00,2024-11-26 16:00,2024-10-23 08:00,2024-11-26 16:00,2025-02-05 08:00,2025-03-11 16:00,,PT_Normal,,,,,CR/0O9AogEeOWSOYe3Yw3Q,F4nwLXMbfEG//gmRBKf/Ng,,,N,0,0,,,2023-02-08 18:30,2023-02-08 18:31,NotPrmUser,NotPrmUser,
141531,27168,54911,178,0,N,1,N,N,CP_Drtn,TT_Task,DT_FixedDUR2,TK_NotStart,PRO1030,Order Long Lead Electrical Materials,,920,680,800,0,0,0,800,0,0,0,,,,2024-12-04 08:00,2025-04-22 16:00,,2024-06-26 08:00,2024-11-12 16:00,2024-06-26 08:00,2024-11-12 16:00,2024-06-26 08:00,2024-11-12 16:00,2024-12-04 08:00,2025-04-22 16:00,,PT_Normal,,,,,a/kFV+EzDUiGDwAoGFXQiQ,6VuYdtYZ9kaH8kE5VINo4Q,,,N,0,0,,,2023-02-08 18:30,2023-02-08 18:31,NotPrmUser,NotPrmUser,
141532,27168,54921,178,0,N,1,N,N,CP_Drtn,TT_Task,DT_FixedDUR2,TK_NotStart,CON2000,Civil Construction (Trenching 300 feet/day),7730,0,0,3520,0,14248,14248,3520,0,0,0,,,,2025-03-19 08:00,2026-11-24 16:00,,2025-03-19 08:00,2026-11-24 16:00,2025-03-19 08:00,2026-11-24 16:00,2025-03-19 08:00,2026-11-24 16:00,2025-03-19 08:00,2026-11-24 16:00,,PT_Normal,,,,,ECHDaAf/MkeYGH9gAYvb2w,qB9j92cJv0yBwZ6ayTeTtw,,,Y,0,0,,,2023-02-08 18:30,2023-02-08 18:37,NotPrmUser,NotPrmUser,
141533,27168,54922,178,0,N,1,N,N,CP_Drtn,TT_Task,DT_FixedDUR2,TK_NotStart,CON3000,Electrical Construction,7786,0,0,3280,0,1640,1640,3280,0,0,0,,,,2025-04-30 08:00,2026-11-24 16:00,,2025-04-30 08:00,2026-11-24 16:00,2025-04-30 08:00,2026-11-24 16:00,2025-04-30 08:00,2026-11-24 16:00,2025-04-30 08:00,2026-11-24 16:00,,PT_Normal,,,,,O4j60aKPOUqfCpctLZD2oA,292/xZCTXEK0bbhipfBpQQ,,,Y,0,0,,,2023-02-08 18:30,2023-02-08 19:35,NotPrmUser,NotPrmUser,
141534,27168,54923,178,0,N,1,N,N,CP_Drtn,TT_Task,DT_FixedDUR2,TK_NotStart,CON4000,Service Cutover,,1056,0,2920,0,0,0,2920,0,0,0,,,,2026-01-02 08:00,2027-05-27 16:00,,2025-07-02 08:00,2026-11-24 16:00,2025-07-02 08:00,2026-11-24 16:00,2025-07-02 08:00,2026-11-24 16:00,2026-01-02 08:00,2027-05-27 16:00,,PT_Normal,,,,,SavbmpSrPUucrlJKCrEa9g,ZXNw2lDeSUOmSOQqtXGKkw,,,N,0,0,,,2023-02-08 18:30,2023-02-08 18:31,NotPrmUser,NotPrmUser,
141535,27168,54924,178,0,N,1,N,N,CP_Drtn,TT_Task,DT_FixedDUR2,TK_NotStart,CON5000,Scada Construction,,1056,0,520,0,0,0,520,0,0,0,,,,2027-02-26 08:00,2027-05-27 16:00,,2026-08-26 08:00,2026-11-24 16:00,2026-08-26 08:00,2026-11-24 16:00,2026-08-26 08:00,2026-11-24 16:00,2027-02-26 08:00,2027-05-27 16:00,,PT_Normal,,,,,cDlHYq7clEavaDDtEvHkLA,7nkZ3gVQa0miO/lL03nQKQ,,,N,0,0,,,2023-02-08 18:30,2023-02-08 18:31,NotPrmUser,NotPrmUser,
141536,27168,54925,178,0,N,1,N,N,CP_Drtn,TT_Task,DT_FixedDUR2,TK_NotStart,CON6000,Substation Construction,,1056,0,520,0,0,0,520,0,0,0,,,,2027-02-26 08:00,2027-05-27 16:00,,2026-08-26 08:00,2026-11-24 16:00,2026-08-26 08:00,2026-11-24 16:00,2026-08-26 08:00,2026-11-24 16:00,2027-02-26 08:00,2027-05-27 16:00,,PT_Normal,,,,,6cLcPKz9m0m4UBkk2wX/9A,6Pc9m8Bk/06gkoavEg9HRA,,,N,0,0,,,2023-02-08 18:30,2023-02-08 18:31,NotPrmUser,NotPrmUser,
141537,27168,54926,178,0,N,1,N,N,CP_Drtn,TT_Task,DT_FixedDrtn,TK_NotStart,CON7000,Overhead RFS (1000 feet per day),7785,0,0,1056,0,1056,1056,1056,0,0,0,,,,2026-11-25 08:00,2027-05-27 16:00,,2026-11-25 08:00,2027-05-27 16:00,2026-11-25 08:00,2027-05-27 16:00,2026-11-25 08:00,2027-05-27 16:00,2026-11-25 08:00,2027-05-27 16:00,,PT_Normal,,,,,N0mHf4jNS0qCKBx35Upg4g,e0tgTwd0EU2q4y6XHY3o/w,,,Y,0,0,,,2023-02-08 18:30,2023-02-08 18:31,NotPrmUser,NotPrmUser,
141538,27168,54920,178,0,N,1,N,N,CP_Drtn,TT_Task,DT_FixedDUR2,TK_NotStart,ISD1000,ISD - Energize - Put in service,,2008,2008,8,0,0,0,8,25,0,25,,,,2027-11-11 08:00,2027-11-11 16:00,,2026-11-25 08:00,2026-11-25 16:00,2026-11-25 08:00,2026-11-25 16:00,2026-11-25 08:00,2026-11-25 16:00,2027-11-11 08:00,2027-11-11 16:00,,PT_Normal,,,,,gjHIATjIKU2CaIugeud7EA,d+XVEYTBj0i3zuqw9hVV0Q,,,N,0,0,,,2023-02-08 18:30,2023-02-08 18:31,NotPrmUser,NotPrmUser,
141539,27168,54903,178,0,N,1,N,N,CP_Drtn,TT_Task,DT_FixedDUR2,TK_NotStart,SUR1000,Survey and LiDAR,7385,0,0,400,0,9182,9182,400,0,0,0,,,,2023-09-13 08:00,2023-11-21 16:00,,2023-09-13 08:00,2023-11-21 16:00,2023-09-13 08:00,2023-11-21 16:00,2023-09-13 08:00,2023-11-21 16:00,2023-09-13 08:00,2023-11-21 16:00,,PT_Normal,,,,,NhxynT6x0UOQjXWNuMwd/A,xpUas4bKIE+N+qsLrQ2Xjg,,,Y,0,0,,,2023-02-08 18:30,2023-02-08 18:31,NotPrmUser,NotPrmUser,
141540,27168,54908,178,0,N,1,N,N,CP_Drtn,TT_Task,DT_FixedDUR2,TK_NotStart,DES1200,Receive Services Worksheet and Cable Info from Design Firms,,760,0,160,0,0,0,160,0,0,0,,,,2024-06-12 08:00,2024-07-09 16:00,,2024-01-31 08:00,2024-02-27 16:00,2024-01-31 08:00,2024-02-27 16:00,2024-01-31 08:00,2024-02-27 16:00,2024-06-12 08:00,2024-07-09 16:00,,PT_Normal,,,,,puIBiXMMXkWwWzFhbuAZVQ,yQAlrr2Qxk6IZa0tKCOM/w,,,N,0,0,,,2023-02-08 18:30,2023-02-08 18:31,NotPrmUser,NotPrmUser,
141541,27168,54908,178,0,N,1,N,N,CP_Drtn,TT_Task,DT_FixedDUR2,TK_NotStart,DES1210,Issue to Trench Inspectors,,2376,1320,80,0,0,0,80,0,0,0,,,,2025-12-19 08:00,2026-01-01 16:00,,2024-10-30 08:00,2024-11-12 16:00,2024-10-30 08:00,2024-11-12 16:00,2024-10-30 08:00,2024-11-12 16:00,2025-12-19 08:00,2026-01-01 16:00,,PT_Normal,,,,,oWDLS0+6kEKO1T+XNCxtUQ,BCGV2A8zpUCT4DV6zT5aDw,,,N,0,0,,,2023-02-08 18:30,2023-02-08 18:31,NotPrmUser,NotPrmUser,
141542,27168,54920,178,0,N,1,N,N,CP_Drtn,TT_FinMile,DT_FixedDrtn,TK_NotStart,CON1020,Construction Complete,,0,0,0,0,0,0,0,0,0,0,,,,2027-05-27 16:00,2027-05-27 16:00,,2027-05-27 16:00,2027-05-27 16:00,2027-05-27 16:00,2027-05-27 16:00,2027-05-27 16:00,2027-05-27 16:00,2027-05-27 16:00,2027-05-27 16:00,,PT_Normal,,,,,mtYkBicZukiONtfz1BFuPQ,DUzJTr2x10uS1YbJ9+b9qw,,,Y,0,0,,,2023-02-08 18:30,2023-02-08 18:31,NotPrmUser,NotPrmUser,
141543,27168,54920,178,0,N,1,N,N,CP_Drtn,TT_Mile,DT_FixedDrtn,TK_NotStart,CON1010,Construction Start,,5536,5536,0,0,0,0,0,0,0,0,,,,2027-11-11 16:00,2027-11-11 16:00,,2025-03-19 08:00,2025-03-19 08:00,2025-03-19 08:00,2025-03-19 08:00,2025-03-19 08:00,2025-03-19 08:00,2027-11-11 16:00,2027-11-11 16:00,,PT_Normal,,,,,24SBqXkNzUSdTNU9kgnwqg,xj/f4O4RXUuOIYafvCjDaA,,,N,0,0,,,2023-02-08 18:30,2023-02-08 18:31,NotPrmUser,NotPrmUser,
141544,27168,54929,178,0,N,1,N,N,CP_Drtn,TT_Task,DT_FixedDUR2,TK_NotStart,CLO1020,GIS/As-Built and Records Complete,,480,480,480,0,0,0,480,0,0,0,,,,2027-08-20 08:00,2027-11-11 16:00,,2027-05-28 08:00,2027-08-19 16:00,2027-05-28 08:00,2027-08-19 16:00,2027-05-28 08:00,2027-08-19 16:00,2027-08-20 08:00,2027-11-11 16:00,,PT_Normal,,,,,tjeZc1M09EOrtRk9yFVrYQ,/FaW7aDLfEiXtDOx2GOimw,,,N,0,0,,,2023-02-08 18:30,2023-02-08 18:31,NotPrmUser,NotPrmUser,
141545,27168,54930,178,0,N,1,N,N,CP_Drtn,TT_Task,DT_FixedDUR2,TK_NotStart,CLO1030,"PO's complete, Work Order Reconcilled and Closed",,0,0,960,0,0,0,960,0,0,0,,,,2027-05-28 08:00,2027-11-11 16:00,,2027-05-28 08:00,2027-11-11 16:00,2027-05-28 08:00,2027-11-11 16:00,2027-05-28 08:00,2027-11-11 16:00,2027-05-28 08:00,2027-11-11 16:00,,PT_Normal,,,,,fma9XehZqkaWJ4xJjayvtQ,9xH2Pm+fnkS1qcX4eW+gsg,,,Y,0,0,,,2023-02-08 18:30,2023-02-08 18:31,NotPrmUser,NotPrmUser,
141546,27168,54928,178,0,N,1,N,N,CP_Drtn,TT_FinMile,DT_FixedDrtn,TK_NotStart,CLO1010,Project Complete,,0,0,0,0,0,0,0,0,0,0,,,,2027-11-11 16:00,2027-11-11 16:00,,2027-11-11 16:00,2027-11-11 16:00,2027-11-11 16:00,2027-11-11 16:00,2027-11-11 16:00,2027-11-11 16:00,2027-11-11 16:00,2027-11-11 16:00,,PT_Normal,,,,,r1u+yMZajE6tAANOO4kBcg,INYQ32aAs0yUV1xAmXm4fw,,,Y,0,0,,,2023-02-08 18:30,2023-02-08 18:31,NotPrmUser,NotPrmUser,
141547,27168,54904,178,0,N,1,N,N,CP_Drtn,TT_LOE,DT_FixedDUR2,TK_NotStart,DES1000,Design Summary,7257,4096,0,2680,0,16233,16233,2680,0,0,0,,,,2023-11-22 08:00,2027-02-25 16:00,,2023-11-22 08:00,2025-03-11 16:00,2023-11-22 08:00,2025-03-11 16:00,2023-11-22 08:00,2025-03-11 16:00,2023-11-22 08:00,2027-02-25 16:00,,PT_Normal,,,,,YL4HeMYSH0Oypno2WtlySQ,sYm5bR9s9kWDqw48F573ew,,,Y,0,0,,,2023-02-08 18:30,2023-02-08 18:31,NotPrmUser,NotPrmUser,
141548,27168,54920,178,0,N,1,N,N,CP_Drtn,TT_LOE,DT_FixedDUR2,TK_NotStart,CON1000,Construction Summary,7385,0,0,4576,0,9972,9972,4576,25,0,25,,,,2027-05-27 16:00,2027-05-27 16:00,,2025-03-19 08:00,2027-05-27 16:00,2025-03-19 08:00,2027-05-27 16:00,2025-03-19 08:00,2027-05-27 16:00,2027-05-27 16:00,2027-05-27 16:00,,PT_Normal,,,,,pcEF11uQX0ySNDy29wm99A,gNTpjcDvgUWWmcesSHA1sw,,,N,0,0,,,2023-02-08 18:30,2023-02-08 18:31,NotPrmUser,NotPrmUser,
141549,27168,54928,178,0,N,1,N,N,CP_Drtn,TT_LOE,DT_FixedDUR2,TK_NotStart,CLO1000,Close Out Summary,7385,0,0,960,0,4482,4482,960,0,0,0,,,,2027-05-28 08:00,2027-11-11 16:00,,2027-05-28 08:00,2027-11-11 16:00,2027-05-28 08:00,2027-11-11 16:00,2027-05-28 08:00,2027-11-11 16:00,2027-05-28 08:00,2027-11-11 16:00,,PT_Normal,,,,,jooQb9m2EkSr4eoogvZHqQ,jseq4D/pSEKSLXfGtP+mtg,,,Y,0,0,,,2023-02-08 18:30,2023-02-08 18:31,NotPrmUser,NotPrmUser,
141550,27168,54901,178,0,N,1,N,N,CP_Drtn,TT_LOE,DT_FixedDUR2,TK_NotStart,PCON1000,Pre-Construction Summary,,0,0,3296,0,0,0,3296,0,0,0,,,,2023-08-14 08:00,2025-03-18 16:00,,2023-08-14 08:00,2025-03-18 16:00,2023-08-14 08:00,2025-03-18 16:00,2023-08-14 08:00,2025-03-18 16:00,2023-08-14 08:00,2025-03-18 16:00,,PT_Normal,,,,,hFuRbcV1k0uxPbCdsdetSw,XdgREtnBh0a9XLQt0ofb5Q,,,Y,0,0,,,2023-02-08 18:30,2023-02-08 18:31,NotPrmUser,NotPrmUser,
141551,27169,54932,178,0,N,1,N,N,CP_Drtn,TT_Task,DT_FixedDUR2,TK_NotStart,SCO1000,Bundling / Phasing of circuits for project sequencing,,0,0,80,0,0,0,80,0,0,0,2023-08-21 00:00,,,2023-08-21 08:00,2023-09-01 16:00,,2023-08-21 08:00,2023-09-01 16:00,2023-08-21 08:00,2023-09-01 16:00,2023-08-21 08:00,2023-09-01 16:00,2023-08-21 08:00,2023-09-01 16:00,CS_MSOA,PT_Normal,,,,,4OkTUROhZ0aEXhxZ9dap0A,KB8yBFjo6kaTRCjpWMA4xw,,,Y,0,0,,,2023-02-08 18:30,2023-02-08 18:31,NotPrmUser,NotPrmUser,
141552,27169,54932,178,0,N,1,N,N,CP_Drtn,TT_Task,DT_FixedDUR2,TK_NotStart,SCO1010,Constructability Review,,0,0,40,0,0,0,40,0,0,0,,,,2023-09-04 08:00,2023-09-08 16:00,,2023-09-04 08:00,2023-09-08 16:00,2023-09-04 08:00,2023-09-08 16:00,2023-09-04 08:00,2023-09-08 16:00,2023-09-04 08:00,2023-09-08 16:00,,PT_Normal,,,,,QJUU3qMkvU+aQsccAyQTJQ,MEp0HtHxCUeBel/ZDRD97Q,,,Y,0,0,,,2023-02-08 18:30,2023-02-08 18:31,NotPrmUser,NotPrmUser,
141553,27169,54932,178,0,N,1,N,N,CP_Drtn,TT_Task,DT_FixedDUR2,TK_NotStart,SCO1020,SDG&E Review,,0,0,16,0,0,0,16,0,0,0,,,,2023-09-11 08:00,2023-09-12 16:00,,2023-09-11 08:00,2023-09-12 16:00,2023-09-11 08:00,2023-09-12 16:00,2023-09-11 08:00,2023-09-12 16:00,2023-09-11 08:00,2023-09-12 16:00,,PT_Normal,,,,,bb8SbycXrkaEwkJyDHgGkg,V6tUktjEbUy7gaW+5rhjkQ,,,Y,0,0,,,2023-02-08 18:30,2023-02-08 18:31,NotPrmUser,NotPrmUser,
141554,27169,54933,178,0,N,1,N,N,CP_Drtn,TT_Task,DT_FixedDUR2,TK_NotStart,PLA1000,Workorder Setup,,0,0,40,0,0,0,40,0,0,0,,,,2023-09-13 08:00,2023-09-19 16:00,,2023-09-13 08:00,2023-09-19 16:00,2023-09-13 08:00,2023-09-19 16:00,2023-09-13 08:00,2023-09-19 16:00,2023-09-13 08:00,2023-09-19 16:00,,PT_Normal,,,,,O5oQxBYjcEW5CvYABGYQrA,ZWEjmBkcjkemgaUS1D7aeg,,,Y,0,0,,,2023-02-08 18:30,2023-02-08 18:31,NotPrmUser,NotPrmUser,
141555,27169,54936,178,0,N,1,N,N,CP_Drtn,TT_Task,DT_FixedDUR2,TK_NotStart,DES1040,10% Submittal,,0,0,200,0,0,0,200,0,0,0,,,,2023-12-01 08:00,2024-01-09 16:00,,2023-12-01 08:00,2024-01-09 16:00,2023-12-01 08:00,2024-01-09 16:00,2023-12-01 08:00,2024-01-09 16:00,2023-12-01 08:00,2024-01-09 16:00,,PT_Normal,,,,,cIOiDuh0UkCTf+3QlVPfjw,q18CL6lQGkCm1xz8JQyWfQ,,,Y,0,0,,,2023-02-08 18:30,2023-02-08 18:31,NotPrmUser,NotPrmUser,
141556,27169,54936,178,0,N,1,N,N,CP_Drtn,TT_Task,DT_FixedDUR2,TK_NotStart,DES1050,30% Submittal,,0,0,400,0,0,0,400,0,0,0,,,,2024-01-10 08:00,2024-03-19 16:00,,2024-01-10 08:00,2024-03-19 16:00,2024-01-10 08:00,2024-03-19 16:00,2024-01-10 08:00,2024-03-19 16:00,2024-01-10 08:00,2024-03-19 16:00,,PT_Normal,,,,,Gu7M/CkEJ0GO4aoQd++juA,dDBOT9FdTEenz9ZMw6Eibg,,,Y,0,0,,,2023-02-08 18:30,2023-02-08 18:31,NotPrmUser,NotPrmUser,
141557,27169,54936,178,0,N,1,N,N,CP_Drtn,TT_Task,DT_FixedDUR2,TK_NotStart,DES1060,30% Review,,0,0,80,0,0,0,80,0,0,0,,,,2024-03-20 08:00,2024-04-02 16:00,,2024-03-20 08:00,2024-04-02 16:00,2024-03-20 08:00,2024-04-02 16:00,2024-03-20 08:00,2024-04-02 16:00,2024-03-20 08:00,2024-04-02 16:00,,PT_Normal,,,,,V+F99otorU+QwL5BoWkW2Q,xjhPCFoUHEmGirOzdberDw,,,Y,0,0,,,2023-02-08 18:30,2023-02-08 18:31,NotPrmUser,NotPrmUser,
141558,27169,54936,178,0,N,1,N,N,CP_Drtn,TT_Task,DT_FixedDUR2,TK_NotStart,DES1070,60% Submittal,,600,0,560,0,0,0,560,0,0,0,,,,2024-07-17 08:00,2024-10-22 16:00,,2024-04-03 08:00,2024-07-09 16:00,2024-04-03 08:00,2024-07-09 16:00,2024-04-03 08:00,2024-07-09 16:00,2024-07-17 08:00,2024-10-22 16:00,,PT_Normal,,,,,WxUGVclCA0e0VwB4rZcxwg,zOp6FfCkIEeLFpBIuYPEPg,,,N,0,0,,,2023-02-08 18:30,2023-02-08 18:31,NotPrmUser,NotPrmUser,
141559,27169,54936,178,0,N,1,N,N,CP_Drtn,TT_Task,DT_FixedDUR2,TK_NotStart,DES1080,60% Review,,600,0,80,0,0,0,80,0,0,0,,,,2024-10-23 08:00,2024-11-05 16:00,,2024-07-10 08:00,2024-07-23 16:00,2024-07-10 08:00,2024-07-23 16:00,2024-07-10 08:00,2024-07-23 16:00,2024-10-23 08:00,2024-11-05 16:00,,PT_Normal,,,,,j47x0uk8LEOSkglI6t+uLg,7Fm3x2lRkU63TJzkLNX03g,,,N,0,0,,,2023-02-08 18:30,2023-02-08 18:31,NotPrmUser,NotPrmUser,
141560,27169,54936,178,0,N,1,N,N,CP_Drtn,TT_Task,DT_FixedDUR2,TK_NotStart,DES1090,90% Submittal,,600,0,360,0,0,0,360,0,0,0,,,,2024-11-06 08:00,2025-01-07 16:00,,2024-07-24 08:00,2024-09-24 16:00,2024-07-24 08:00,2024-09-24 16:00,2024-07-24 08:00,2024-09-24 16:00,2024-11-06 08:00,2025-01-07 16:00,,PT_Normal,,,,,91BG4Qns90a88PsvCiPxFA,GeTPHEeoKUKTqGEusdzbzA,,,N,0,0,,,2023-02-08 18:30,2023-02-08 18:31,NotPrmUser,NotPrmUser,
141561,27169,54936,178,0,N,1,N,N,CP_Drtn,TT_Task,DT_FixedDUR2,TK_NotStart,DES1100,90% Review,,600,0,80,0,0,0,80,0,0,0,,,,2025-01-08 08:00,2025-01-21 16:00,,2024-09-25 08:00,2024-10-08 16:00,2024-09-25 08:00,2024-10-08 16:00,2024-09-25 08:00,2024-10-08 16:00,2025-01-08 08:00,2025-01-21 16:00,,PT_Normal,,,,,FHcOCpEAsEa6RC89LCYCqQ,akl+Lsx4I0GksyCpra4WMA,,,N,0,0,,,2023-02-08 18:30,2023-02-08 18:31,NotPrmUser,NotPrmUser,
141562,27169,54936,178,0,N,1,N,N,CP_Drtn,TT_Task,DT_FixedDUR2,TK_NotStart,DES1110,100% Submittal,,680,0,160,0,0,0,160,0,0,0,,,,2025-02-05 08:00,2025-03-04 16:00,,2024-10-09 08:00,2024-11-05 16:00,2024-10-09 08:00,2024-11-05 16:00,2024-10-09 08:00,2024-11-05 16:00,2025-02-05 08:00,2025-03-04 16:00,,PT_Normal,,,,,ShzjTgCnAEay61aWs+SekQ,9HOoPcUrl0maas1TZViWNg,,,N,0,0,,,2023-02-08 18:30,2023-02-08 18:31,NotPrmUser,NotPrmUser,
141563,27169,54936,178,0,N,1,N,N,CP_Drtn,TT_Task,DT_FixedDUR2,TK_NotStart,DES1120,Issue IFC Design Package,,0,0,80,0,0,0,80,0,0,0,,,,2025-03-05 08:00,2025-03-18 16:00,,2025-03-05 08:00,2025-03-18 16:00,2025-03-05 08:00,2025-03-18 16:00,2025-03-05 08:00,2025-03-18 16:00,2025-03-05 08:00,2025-03-18 16:00,,PT_Normal,,,,,C3ze9SoNSkuOk/uZtrwCJA,ardBgqS850GH6z1BSeqp1g,,,Y,0,0,,,2023-02-08 18:30,2023-02-08 18:31,NotPrmUser,NotPrmUser,
141564,27169,54937,178,0,N,1,N,N,CP_Drtn,TT_Task,DT_FixedDUR2,TK_NotStart,DES1130,60% Submittal,,840,0,480,0,0,0,480,0,0,0,,,,2024-07-31 08:00,2024-10-22 16:00,,2024-03-06 08:00,2024-05-28 16:00,2024-03-06 08:00,2024-05-28 16:00,2024-03-06 08:00,2024-05-28 16:00,2024-07-31 08:00,2024-10-22 16:00,,PT_Normal,,,,,DQFPCCco302gXhePKGlcmQ,x/N1zy92EkqZjz38yD8gzg,,,N,0,0,,,2023-02-08 18:30,2023-02-08 18:31,NotPrmUser,NotPrmUser,
141565,27169,54937,178,0,N,1,N,N,CP_Drtn,TT_Task,DT_FixedDUR2,TK_NotStart,DES1140,60% Review,,920,0,80,0,0,0,80,0,0,0,,,,2024-11-06 08:00,2024-11-19 16:00,,2024-05-29 08:00,2024-06-11 16:00,2024-05-29 08:00,2024-06-11 16:00,2024-05-29 08:00,2024-06-11 16:00,2024-11-06 08:00,2024-11-19 16:00,,PT_Normal,,,,,o5eI4JoqvEO0U/DoqDllsQ,fy+coW/xSk6GHCaENfDWEA,,,N,0,0,,,2023-02-08 18:30,2023-02-08 18:31,NotPrmUser,NotPrmUser,
141566,27169,54937,178,0,N,1,N,N,CP_Drtn,TT_Task,DT_FixedDUR2,TK_NotStart,DES1150,90% Submittal,,1120,0,400,0,0,0,400,0,0,0,,,,2024-12-25 08:00,2025-03-04 16:00,,2024-06-12 08:00,2024-08-20 16:00,2024-06-12 08:00,2024-08-20 16:00,2024-06-12 08:00,2024-08-20 16:00,2024-12-25 08:00,2025-03-04 16:00,,PT_Normal,,,,,Eo5SMpanoEG/3wSMGKKKLw,ZD1xyjAEq0aLZfSMxnVGVQ,,,N,0,0,,,2023-02-08 18:30,2023-02-08 18:31,NotPrmUser,NotPrmUser,
141567,27169,54937,178,0,N,1,N,N,CP_Drtn,TT_Task,DT_FixedDUR2,TK_NotStart,DES1160,90% Review,,1120,0,80,0,0,0,80,0,0,0,,,,2025-03-05 08:00,2025-03-18 16:00,,2024-08-21 08:00,2024-09-03 16:00,2024-08-21 08:00,2024-09-03 16:00,2024-08-21 08:00,2024-09-03 16:00,2025-03-05 08:00,2025-03-18 16:00,,PT_Normal,,,,,teqJB2Mn5EqcGoSarwgPDg,yZFjJNjKbESfw6jCtahAuw,,,N,0,0,,,2023-02-08 18:30,2023-02-08 18:31,NotPrmUser,NotPrmUser,
141568,27169,54937,178,0,N,1,N,N,CP_Drtn,TT_Task,DT_FixedDUR2,TK_NotStart,DES1170,100% Submittal,,1120,880,160,0,0,0,160,0,0,0,,,,2025-03-19 08:00,2025-04-15 16:00,,2024-09-04 08:00,2024-10-01 16:00,2024-09-04 08:00,2024-10-01 16:00,2024-09-04 08:00,2024-10-01 16:00,2025-03-19 08:00,2025-04-15 16:00,,PT_Normal,,,,,njC86lyDQUOjzxfppfE1zA,Y3TIBOux00OsuXjlUMHJMg,,,N,0,0,,,2023-02-08 18:30,2023-02-08 18:31,NotPrmUser,NotPrmUser,
141569,27169,54937,178,0,N,1,N,N,CP_Drtn,TT_Task,DT_FixedDUR2,TK_NotStart,DES1180,Issue IFC Design Package,,240,0,80,0,0,0,80,0,0,0,,,,2025-04-16 08:00,2025-04-29 16:00,,2025-03-05 08:00,2025-03-18 16:00,2025-03-05 08:00,2025-03-18 16:00,2025-03-05 08:00,2025-03-18 16:00,2025-04-16 08:00,2025-04-29 16:00,,PT_Normal,,,,,LJuVdQmlXUGQk5cvRa/Viw,372jmm92g0CH5F0uRJhOTA,,,N,0,0,,,2023-02-08 18:30,2023-02-08 18:31,NotPrmUser,NotPrmUser,
141570,27169,54938,178,0,N,1,N,N,CP_Drtn,TT_Task,DT_FixedDUR2,TK_NotStart,DES1190,Issue Services Worksheet to Design Firms,,760,0,160,0,0,0,160,0,0,0,,,,2024-05-22 08:00,2024-06-18 16:00,,2024-01-10 08:00,2024-02-06 16:00,2024-01-10 08:00,2024-02-06 16:00,2024-01-10 08:00,2024-02-06 16:00,2024-05-22 08:00,2024-06-18 16:00,,PT_Normal,,,,,Jv5dWob8Bka7AoWHsK8XlA,ssi+9NHMV0aIytXIl/MO3A,,,N,0,0,,,2023-02-08 18:30,2023-02-08 18:31,NotPrmUser,NotPrmUser,
141571,27169,54939,178,0,N,1,N,N,CP_Drtn,TT_Task,DT_FixedDUR2,TK_NotStart,DES1220,SED Design,,6376,0,240,0,0,0,240,0,0,0,,,,2026-12-25 08:00,2027-02-04 16:00,,2023-12-01 08:00,2024-01-16 16:00,2023-12-01 08:00,2024-01-16 16:00,2023-12-01 08:00,2024-01-16 16:00,2026-12-25 08:00,2027-02-04 16:00,,PT_Normal,,,,,6Taf+DW3Lk6m+259X6itpg,DSsWvONVvUKoOpMsNGNhOQ,,,N,0,0,,,2023-02-08 18:30,2023-02-08 18:31,NotPrmUser,NotPrmUser,
141572,27169,54939,178,0,N,1,N,N,CP_Drtn,TT_Task,DT_FixedDUR2,TK_NotStart,DES1230,Issue IFC Design Package,,6376,5320,160,0,0,0,160,0,0,0,,,,2027-02-05 08:00,2027-03-04 16:00,,2024-01-17 08:00,2024-02-13 16:00,2024-01-17 08:00,2024-02-13 16:00,2024-01-17 08:00,2024-02-13 16:00,2027-02-05 08:00,2027-03-04 16:00,,PT_Normal,,,,,07DmGX+b+0ivIBJSQqyTyA,VFVY3E+BsECjuG4803HiDw,,,N,0,0,,,2023-02-08 18:30,2023-02-08 18:31,NotPrmUser,NotPrmUser,
141573,27169,54941,178,0,N,1,N,N,CP_Drtn,TT_Task,DT_FixedDUR2,TK_NotStart,PRO1000,Civil BOM - Long Lead @ 30%,,680,0,120,0,0,0,120,0,0,0,,,,2024-07-31 08:00,2024-08-20 16:00,,2024-04-03 08:00,2024-04-23 16:00,2024-04-03 08:00,2024-04-23 16:00,2024-04-03 08:00,2024-04-23 16:00,2024-07-31 08:00,2024-08-20 16:00,,PT_Normal,,,,,GBnTozXGak+FBRtx/in5gg,5uSuK67g7kuAwTuYk2pgMg,,,N,0,0,,,2023-02-08 18:30,2023-02-08 18:31,NotPrmUser,NotPrmUser,
141574,27169,54941,178,0,N,1,N,N,CP_Drtn,TT_Task,DT_FixedDUR2,TK_NotStart,PRO1020,Electrical BOM - Long Lead @ 60%,,920,0,120,0,0,0,120,0,0,0,,,,2024-11-20 08:00,2024-12-10 16:00,,2024-06-12 08:00,2024-07-02 16:00,2024-06-12 08:00,2024-07-02 16:00,2024-06-12 08:00,2024-07-02 16:00,2024-11-20 08:00,2024-12-10 16:00,,PT_Normal,,,,,5btvCYv3dUG2BHrRZtHKLA,PJuZDrj/F02KSK6rwODJIA,,,N,0,0,,,2023-02-08 18:30,2023-02-08 18:31,NotPrmUser,NotPrmUser,
141575,27169,54941,178,0,N,1,N,N,CP_Drtn,TT_Task,DT_FixedDUR2,TK_NotStart,PRO1040,BOM - Short Lead @ 60%,,600,0,120,0,0,0,120,0,0,0,,,,2025-01-22 08:00,2025-02-11 16:00,,2024-10-09 08:00,2024-10-29 16:00,2024-10-09 08:00,2024-10-29 16:00,2024-10-09 08:00,2024-10-29 16:00,2025-01-22 08:00,2025-02-11 16:00,,PT_Normal,,,,,wNReIz3jtkCxn0gzPj96/g,swPM4OV3PkOxFwKocOBuXg,,,N,0,0,,,2023-02-08 18:30,2023-02-08 18:31,NotPrmUser,NotPrmUser,
141576,27169,54942,178,0,N,1,N,N,CP_Drtn,TT_Task,DT_FixedDUR2,TK_NotStart,PER1000,CalTrans Permit,,0,0,2000,0,0,0,2000,0,0,0,,,,2024-04-03 08:00,2025-03-18 16:00,,2024-04-03 08:00,2025-03-18 16:00,2024-04-03 08:00,2025-03-18 16:00,2024-04-03 08:00,2025-03-18 16:00,2024-04-03 08:00,2025-03-18 16:00,,PT_Normal,,,,,YTkOEfyBpUC3uZE+IKd1Ug,exiL7HAj80OanJEaifhWag,,,Y,0,0,,,2023-02-08 18:30,2023-02-08 18:31,NotPrmUser,NotPrmUser,
141577,27169,54942,178,0,N,1,N,N,CP_Drtn,TT_Task,DT_FixedDUR2,TK_NotStart,PER1010,City & County Permits,,1200,1200,800,0,0,0,800,0,0,0,,,,2024-10-30 08:00,2025-03-18 16:00,,2024-04-03 08:00,2024-08-20 16:00,2024-04-03 08:00,2024-08-20 16:00,2024-04-03 08:00,2024-08-20 16:00,2024-10-30 08:00,2025-03-18 16:00,,PT_Normal,,,,,+U66A4J8f0CqEku06r0ZAQ,X0NnRkFm8UyB07z7Z8BV7Q,,,N,0,0,,,2023-02-08 18:30,2023-02-08 18:31,NotPrmUser,NotPrmUser,
141578,27169,54942,178,0,N,1,N,N,CP_Drtn,TT_Task,DT_FixedDUR2,TK_NotStart,PER1020,Other Permit (TBD),,1200,1200,800,0,0,0,800,0,0,0,,,,2024-10-30 08:00,2025-03-18 16:00,,2024-04-03 08:00,2024-08-20 16:00,2024-04-03 08:00,2024-08-20 16:00,2024-04-03 08:00,2024-08-20 16:00,2024-10-30 08:00,2025-03-18 16:00,,PT_Normal,,,,,jlXZHHwqK0WSJqw+7No+xw,y0/ve7q9P0+D4d5Ni7OTGA,,,N,0,0,,,2023-02-08 18:30,2023-02-08 18:31,NotPrmUser,NotPrmUser,
141579,27169,54943,178,0,N,1,N,N,CP_Drtn,TT_Task,DT_FixedDUR2,TK_NotStart,PUB1000,Public Affairs / Community Outreach,,6216,6216,800,0,0,0,800,0,0,0,,,,2027-07-02 08:00,2027-11-18 16:00,,2024-07-10 08:00,2024-11-26 16:00,2024-07-10 08:00,2024-11-26 16:00,2024-07-10 08:00,2024-11-26 16:00,2027-07-02 08:00,2027-11-18 16:00,,PT_Normal,,,,,zIEROxm03kiJJUf2cp/RyQ,xMVBh4bpL0q3H1R8KxxGNA,,,N,0,0,,,2023-02-08 18:30,2023-02-08 18:31,NotPrmUser,NotPrmUser,
141580,27169,54944,178,0,N,1,N,N,CP_Drtn,TT_Task,DT_FixedDUR2,TK_NotStart,LAN1000,Land Rights and Easement Acquisition,,880,880,1200,0,0,0,1200,0,0,0,,,,2024-08-21 08:00,2025-03-18 16:00,,2024-03-20 08:00,2024-10-15 16:00,2024-03-20 08:00,2024-10-15 16:00,2024-03-20 08:00,2024-10-15 16:00,2024-08-21 08:00,2025-03-18 16:00,,PT_Normal,,,,,+rn+wPEAe0607WRVeNb99Q,DEKcJD46CkGyt4EN46afww,,,N,0,0,,,2023-02-08 18:30,2023-02-08 18:31,NotPrmUser,NotPrmUser,
141581,27169,54944,178,0,N,1,N,N,CP_Drtn,TT_Task,DT_FixedDUR2,TK_NotStart,LAN1010,Tribal Land Rights,,880,880,1200,0,0,0,1200,0,0,0,,,,2024-08-21 08:00,2025-03-18 16:00,,2024-03-20 08:00,2024-10-15 16:00,2024-03-20 08:00,2024-10-15 16:00,2024-03-20 08:00,2024-10-15 16:00,2024-08-21 08:00,2025-03-18 16:00,,PT_Normal,,,,,mPnoqZF0+Eiivxsh6RSJJg,DdCmA8yZa0KQGz/5XJEHqQ,,,N,0,0,,,2023-02-08 18:30,2023-02-08 18:31,NotPrmUser,NotPrmUser,
141582,27169,54944,178,0,N,1,N,N,CP_Drtn,TT_Task,DT_FixedDUR2,TK_NotStart,LAN1020,Laydown Yards,,880,880,1200,0,0,0,1200,0,0,0,,,,2024-08-21 08:00,2025-03-18 16:00,,2024-03-20 08:00,2024-10-15 16:00,2024-03-20 08:00,2024-10-15 16:00,2024-03-20 08:00,2024-10-15 16:00,2024-08-21 08:00,2025-03-18 16:00,,PT_Normal,,,,,NWLLSYtKHk6m71k4PgUKog,+TABETrP8kuuOMpwLYsH2A,,,N,0,0,,,2023-02-08 18:30,2023-02-08 18:31,NotPrmUser,NotPrmUser,
141583,27169,54945,178,0,N,1,N,N,CP_Drtn,TT_Task,DT_FixedDUR2,TK_NotStart,ENV1000,10% Environmental Submittal,,880,0,200,0,0,0,200,0,0,0,,,,2024-05-08 08:00,2024-06-11 16:00,,2023-12-01 08:00,2024-01-09 16:00,2023-12-01 08:00,2024-01-09 16:00,2023-12-01 08:00,2024-01-09 16:00,2024-05-08 08:00,2024-06-11 16:00,,PT_Normal,,,,,gWBtX5C7yUe2uYXC7PessA,ODyULB2sCUS9ONKlFaAZaQ,,,N,0,0,,,2023-02-08 18:30,2023-02-08 18:31,NotPrmUser,NotPrmUser,
141584,27169,54945,178,0,N,1,N,N,CP_Drtn,TT_Task,DT_FixedDUR2,TK_NotStart,ENV1010,10% Environmental Review,,880,0,120,0,0,0,120,0,0,0,,,,2024-06-12 08:00,2024-07-02 16:00,,2024-01-10 08:00,2024-01-30 16:00,2024-01-10 08:00,2024-01-30 16:00,2024-01-10 08:00,2024-01-30 16:00,2024-06-12 08:00,2024-07-02 16:00,,PT_Normal,,,,,X4Uq2jPssUmP54Ve2ssXiQ,76hZDWoZ/UqFAgnoi45HIg,,,N,0,0,,,2023-02-08 18:30,2023-02-08 18:31,NotPrmUser,NotPrmUser,
141585,27169,54945,178,0,N,1,N,N,CP_Drtn,TT_Task,DT_FixedDUR2,TK_NotStart,ENV1020,30% Environmental Submittal,,840,0,200,0,0,0,200,0,0,0,,,,2024-10-23 08:00,2024-11-26 16:00,,2024-05-29 08:00,2024-07-02 16:00,2024-05-29 08:00,2024-07-02 16:00,2024-05-29 08:00,2024-07-02 16:00,2024-10-23 08:00,2024-11-26 16:00,,PT_Normal,,,,,2DZxHc0pR0yP1kbh3ZWdsg,5Lv4GEehXkGkAAmfqONhuQ,,,N,0,0,,,2023-02-08 18:30,2023-02-08 18:31,NotPrmUser,NotPrmUser,
141586,27169,54945,178,0,N,1,N,N,CP_Drtn,TT_Task,DT_FixedDUR2,TK_NotStart,ENV1030,30% Environmental Review,,840,0,120,0,0,0,120,0,0,0,,,,2024-11-27 08:00,2024-12-17 16:00,,2024-07-03 08:00,2024-07-23 16:00,2024-07-03 08:00,2024-07-23 16:00,2024-07-03 08:00,2024-07-23 16:00,2024-11-27 08:00,2024-12-17 16:00,,PT_Normal,,,,,e4BE1M46yU+zuLgVyuEXvw,x5btY9GxvUKUm6VgGRg4AQ,,,N,0,0,,,2023-02-08 18:30,2023-02-08 18:31,NotPrmUser,NotPrmUser,
141587,27169,54945,178,0,N,1,N,N,CP_Drtn,TT_Task,DT_FixedDUR2,TK_NotStart,ENV1040,60% Environmental Submittal,,840,0,280,0,0,0,280,0,0,0,,,,2024-12-18 08:00,2025-02-04 16:00,,2024-07-24 08:00,2024-09-10 16:00,2024-07-24 08:00,2024-09-10 16:00,2024-07-24 08:00,2024-09-10 16:00,2024-12-18 08:00,2025-02-04 16:00,,PT_Normal,,,,,K+bjJG9OmE2+PACn4+veVA,XMoQiS9DBESdnDAWoYx/gA,,,N,0,0,,,2023-02-08 18:30,2023-02-08 18:31,NotPrmUser,NotPrmUser,
141588,27169,54945,178,0,N,1,N,N,CP_Drtn,TT_Task,DT_FixedDUR2,TK_NotStart,ENV1050,60% Environmental Release,,960,960,120,0,0,0,120,0,0,0,,,,2025-02-26 08:00,2025-03-18 16:00,,2024-09-11 08:00,2024-10-01 16:00,2024-09-11 08:00,2024-10-01 16:00,2024-09-11 08:00,2024-10-01 16:00,2025-02-26 08:00,2025-03-18 16:00,,PT_Normal,,,,,brdblXHM+0iOasu0yjXflg,wnvngbOGS0GqTBMvf59vig,,,N,0,0,,,2023-02-08 18:30,2023-02-08 18:31,NotPrmUser,NotPrmUser,
141589,27169,54945,178,0,N,1,N,N,CP_Drtn,TT_Task,DT_FixedDUR2,TK_NotStart,ENV1060,BIA NEPA Submittal,,840,0,80,0,0,0,80,0,0,0,,,,2025-02-05 08:00,2025-02-18 16:00,,2024-09-11 08:00,2024-09-24 16:00,2024-09-11 08:00,2024-09-24 16:00,2024-09-11 08:00,2024-09-24 16:00,2025-02-05 08:00,2025-02-18 16:00,,PT_Normal,,,,,UMM25aikhkuRxLJWJbbeBg,6NLO5L3YXUSlSoOadh1r5Q,,,N,0,0,,,2023-02-08 18:30,2023-02-08 18:31,NotPrmUser,NotPrmUser,
141590,27169,54945,178,0,N,1,N,N,CP_Drtn,TT_Task,DT_FixedDUR2,TK_NotStart,ENV1070,"BIA Received (Add 250 days, if needed)",,840,840,160,0,0,0,160,0,0,0,,,,2025-02-19 08:00,2025-03-18 16:00,,2024-09-25 08:00,2024-10-22 16:00,2024-09-25 08:00,2024-10-22 16:00,2024-09-25 08:00,2024-10-22 16:00,2025-02-19 08:00,2025-03-18 16:00,,PT_Normal,,,,,peTMU2sYtU+KkWoUOhs/dA,WUr7kjTOTU2eaDFNhqAgQw,,,N,0,0,,,2023-02-08 18:30,2023-02-08 18:31,NotPrmUser,NotPrmUser,
141591,27169,54935,178,0,N,1,N,N,CP_Drtn,TT_Task,DT_FixedDUR2,TK_NotStart,DES1010,Seismic / Geotech Submittal,,880,0,200,0,0,0,200,0,0,0,,,,2024-07-03 08:00,2024-08-06 16:00,,2024-01-31 08:00,2024-03-05 16:00,2024-01-31 08:00,2024-03-05 16:00,2024-01-31 08:00,2024-03-05 16:00,2024-07-03 08:00,2024-08-06 16:00,,PT_Normal,,,,,gCwpSuoHD0GpT1YBubMOHQ,TWlyC9x0n0+WlTYyVQ9MKA,,,N,0,0,,,2023-02-08 18:30,2023-02-08 18:31,NotPrmUser,NotPrmUser,
141592,27169,54935,178,0,N,1,N,N,CP_Drtn,TT_Task,DT_FixedDUR2,TK_NotStart,DES1020,Potholing Submittal,,880,40,200,0,0,0,200,0,0,0,,,,2024-08-07 08:00,2024-09-10 16:00,,2024-03-06 08:00,2024-04-09 16:00,2024-03-06 08:00,2024-04-09 16:00,2024-03-06 08:00,2024-04-09 16:00,2024-08-07 08:00,2024-09-10 16:00,,PT_Normal,,,,,J3ITcEyNJ0CGam1xfLgmbA,NJ2leC33bkm4gceRUkkMJg,,,N,0,0,,,2023-02-08 18:30,2023-02-08 18:31,NotPrmUser,NotPrmUser,
141593,27169,54935,178,0,N,1,N,N,CP_Drtn,TT_Task,DT_FixedDUR2,TK_NotStart,DES1030,Potholing Release /Perform Potholing,,840,0,240,0,0,0,240,0,0,0,,,,2024-09-11 08:00,2024-10-22 16:00,,2024-04-17 08:00,2024-05-28 16:00,2024-04-17 08:00,2024-05-28 16:00,2024-04-17 08:00,2024-05-28 16:00,2024-09-11 08:00,2024-10-22 16:00,,PT_Normal,,,,,3/2Haf9zcU+wRTBSk7DR5g,ExHqRYx820+CnCm9OeYRIw,,,N,0,0,,,2023-02-08 18:30,2023-02-08 18:31,NotPrmUser,NotPrmUser,
141594,27169,54947,178,0,N,1,N,N,CP_Drtn,TT_Task,DT_FixedDUR2,TK_NotStart,PCON100,Initiate Performance Partnering Process @ 60%,,1000,0,40,0,0,0,40,0,0,0,,,,2025-01-15 08:00,2025-01-21 16:00,,2024-07-24 08:00,2024-07-30 16:00,2024-07-24 08:00,2024-07-30 16:00,2024-07-24 08:00,2024-07-30 16:00,2025-01-15 08:00,2025-01-21 16:00,,PT_Normal,,,,,SfZ5WiMMqEO9qufD5k7Hjg,xzGFpx/85026CORMnD9GfQ,,,N,0,0,,,2023-02-08 18:30,2023-02-08 18:31,NotPrmUser,NotPrmUser,
141595,27169,54947,178,0,N,1,N,N,CP_Drtn,TT_Task,DT_FixedDUR2,TK_NotStart,PCON110,Receive Estimate from Contractor,,1000,0,120,0,0,0,120,0,0,0,,,,2025-01-22 08:00,2025-02-11 16:00,,2024-07-31 08:00,2024-08-20 16:00,2024-07-31 08:00,2024-08-20 16:00,2024-07-31 08:00,2024-08-20 16:00,2025-01-22 08:00,2025-02-11 16:00,,PT_Normal,,,,,W8Urhdy7hEqemy6EH0we2g,P8kDz/azT0mnTpioE7ZyCA,,,N,0,0,,,2023-02-08 18:30,2023-02-08 18:31,NotPrmUser,NotPrmUser,
141596,27169,54947,178,0,N,1,N,N,CP_Drtn,TT_Task,DT_FixedDUR2,TK_NotStart,PCON120,Bid Estimate Negotiations,,1000,0,80,0,0,0,80,0,0,0,,,,2025-02-12 08:00,2025-02-25 16:00,,2024-08-21 08:00,2024-09-03 16:00,2024-08-21 08:00,2024-09-03 16:00,2024-08-21 08:00,2024-09-03 16:00,2025-02-12 08:00,2025-02-25 16:00,,PT_Normal,,,,,d0CmdgyKFEivtsw/jWVp9A,kJUWPAnf2U+ZxQCooqhxxg,,,N,0,0,,,2023-02-08 18:30,2023-02-08 18:31,NotPrmUser,NotPrmUser,
141597,27169,54947,178,0,N,1,N,N,CP_Drtn,TT_Task,DT_FixedDUR2,TK_NotStart,PCON130,Revise Estimate based on IFC,,1000,0,40,0,0,0,40,0,0,0,,,,2025-02-26 08:00,2025-03-04 16:00,,2024-09-04 08:00,2024-09-10 16:00,2024-09-04 08:00,2024-09-10 16:00,2024-09-04 08:00,2024-09-10 16:00,2025-02-26 08:00,2025-03-04 16:00,,PT_Normal,,,,,JnJ/RAx3N0yIWmcfDgfzMQ,fAYh/lf+XU2kwGF3+pw8AA,,,N,0,0,,,2023-02-08 18:30,2023-02-08 18:31,NotPrmUser,NotPrmUser,
141598,27169,54947,178,0,N,1,N,N,CP_Drtn,TT_Task,DT_FixedDUR2,TK_NotStart,PCON140,Issue Release,,1000,1000,80,0,0,0,80,0,0,0,,,,2025-03-05 08:00,2025-03-18 16:00,,2024-09-11 08:00,2024-09-24 16:00,2024-09-11 08:00,2024-09-24 16:00,2024-09-11 08:00,2024-09-24 16:00,2025-03-05 08:00,2025-03-18 16:00,,PT_Normal,,,,,/1thMFiWDUuzr91uWG06vg,hOxFNTepZEe7qkIkAsy7wg,,,N,0,0,,,2023-02-08 18:30,2023-02-08 18:31,NotPrmUser,NotPrmUser,
141599,27169,54949,178,0,N,1,N,N,CP_Drtn,TT_Task,DT_FixedDUR2,TK_NotStart,PCON200,Civil Pre-Construction Meeting (Civil Construction Ready),,0,0,40,0,0,0,40,0,0,0,,,,2025-03-19 08:00,2025-03-25 16:00,,2025-03-19 08:00,2025-03-25 16:00,2025-03-19 08:00,2025-03-25 16:00,2025-03-19 08:00,2025-03-25 16:00,2025-03-19 08:00,2025-03-25 16:00,,PT_Normal,,,,,0c6qxVdADUGV9SmjuMTHLQ,sUPtTj537UOTn353SbBUEA,,,Y,0,0,,,2023-02-08 18:30,2023-02-08 18:31,NotPrmUser,NotPrmUser,
141600,27169,54949,178,0,N,1,N,N,CP_Drtn,TT_Task,DT_FixedDUR2,TK_NotStart,PCON210,Electrical - Pre-Construction Meeting (Electical Construction Ready),,240,0,40,0,0,0,40,0,0,0,,,,2025-04-30 08:00,2025-05-06 16:00,,2025-03-19 08:00,2025-03-25 16:00,2025-03-19 08:00,2025-03-25 16:00,2025-03-19 08:00,2025-03-25 16:00,2025-04-30 08:00,2025-05-06 16:00,,PT_Normal,,,,,R+MfFvsFE02Dt+h14wB1Rw,28b7A2mGRUigBg2PHnB6Fw,,,N,0,0,,,2023-02-08 18:30,2023-02-08 18:31,NotPrmUser,NotPrmUser,
141601,27169,54948,178,0,N,1,N,N,CP_Drtn,TT_Task,DT_FixedDUR2,TK_NotStart,PCON150,Initiate Performance Partnering Process @ 60%,,1480,0,40,0,0,0,40,0,0,0,,,,2025-02-26 08:00,2025-03-04 16:00,,2024-06-12 08:00,2024-06-18 16:00,2024-06-12 08:00,2024-06-18 16:00,2024-06-12 08:00,2024-06-18 16:00,2025-02-26 08:00,2025-03-04 16:00,,PT_Normal,,,,,z9bqkmw63U+79IYzqh9wqA,ftz8zzUIsE+L8F7B+q7dvQ,,,N,0,0,,,2023-02-08 18:30,2023-02-08 18:31,NotPrmUser,NotPrmUser,
141602,27169,54948,178,0,N,1,N,N,CP_Drtn,TT_Task,DT_FixedDUR2,TK_NotStart,PCON160,Receive Estimate from Contractor,,1480,0,120,0,0,0,120,0,0,0,,,,2025-03-05 08:00,2025-03-25 16:00,,2024-06-19 08:00,2024-07-09 16:00,2024-06-19 08:00,2024-07-09 16:00,2024-06-19 08:00,2024-07-09 16:00,2025-03-05 08:00,2025-03-25 16:00,,PT_Normal,,,,,DgNir99y3EqTAqg+oUL+Ag,hKi/Kpf/qEWz7OX8zSiYxA,,,N,0,0,,,2023-02-08 18:30,2023-02-08 18:31,NotPrmUser,NotPrmUser,
141603,27169,54948,178,0,N,1,N,N,CP_Drtn,TT_Task,DT_FixedDUR2,TK_NotStart,PCON170,Bid Estimate Negotiations,,1480,0,80,0,0,0,80,0,0,0,,,,2025-03-26 08:00,2025-04-08 16:00,,2024-07-10 08:00,2024-07-23 16:00,2024-07-10 08:00,2024-07-23 16:00,2024-07-10 08:00,2024-07-23 16:00,2025-03-26 08:00,2025-04-08 16:00,,PT_Normal,,,,,trl5cPHfl0GXW7MLwNcN6w,TmfODqGhL0Gor1qsCVk8FA,,,N,0,0,,,2023-02-08 18:30,2023-02-08 18:31,NotPrmUser,NotPrmUser,
141604,27169,54948,178,0,N,1,N,N,CP_Drtn,TT_Task,DT_FixedDUR2,TK_NotStart,PCON180,Revise Estimate based on IFC,,1480,0,40,0,0,0,40,0,0,0,,,,2025-04-09 08:00,2025-04-15 16:00,,2024-07-24 08:00,2024-07-30 16:00,2024-07-24 08:00,2024-07-30 16:00,2024-07-24 08:00,2024-07-30 16:00,2025-04-09 08:00,2025-04-15 16:00,,PT_Normal,,,,,NlfjtgnY+EqaB6kG1Kpexg,ZDmP9YZczkejDgIory5cAw,,,N,0,0,,,2023-02-08 18:30,2023-02-08 18:31,NotPrmUser,NotPrmUser,
141605,27169,54948,178,0,N,1,N,N,CP_Drtn,TT_Task,DT_FixedDUR2,TK_NotStart,PCON190,Issue Release,,1480,1240,80,0,0,0,80,0,0,0,,,,2025-04-16 08:00,2025-04-29 16:00,,2024-07-31 08:00,2024-08-13 16:00,2024-07-31 08:00,2024-08-13 16:00,2024-07-31 08:00,2024-08-13 16:00,2025-04-16 08:00,2025-04-29 16:00,,PT_Normal,,,,,uZYdyuzx8Eu1aFqCLlGJOw,JI9RZmQhqUiotYy5qdzpNg,,,N,0,0,,,2023-02-08 18:30,2023-02-08 18:31,NotPrmUser,NotPrmUser,
141606,27169,54941,178,0,N,1,N,N,CP_Drtn,TT_Task,DT_FixedDUR2,TK_NotStart,PRO1010,Order Long Lead Civil Material,,680,680,1200,0,0,0,1200,0,0,0,,,,2024-08-21 08:00,2025-03-18 16:00,,2024-04-24 08:00,2024-11-19 16:00,2024-04-24 08:00,2024-11-19 16:00,2024-04-24 08:00,2024-11-19 16:00,2024-08-21 08:00,2025-03-18 16:00,,PT_Normal,,,,,VCsVgktMeki58lxJfZXKUw,oTnv6pTdm0yvEOfxR9NUhA,,,N,0,0,,,2023-02-08 18:30,2023-02-08 18:31,NotPrmUser,NotPrmUser,
141607,27169,54941,178,0,N,1,N,N,CP_Drtn,TT_Task,DT_FixedDUR2,TK_NotStart,PRO1050,Order Short Lead Materials,,600,600,200,0,0,0,200,0,0,0,,,,2025-02-12 08:00,2025-03-18 16:00,,2024-10-30 08:00,2024-12-03 16:00,2024-10-30 08:00,2024-12-03 16:00,2024-10-30 08:00,2024-12-03 16:00,2025-02-12 08:00,2025-03-18 16:00,,PT_Normal,,,,,QFMqHEEi4ECDTQJHNzCIPg,qhrW/Anz70GfqxI1rFOcqQ,,,N,0,0,,,2023-02-08 18:30,2023-02-08 18:31,NotPrmUser,NotPrmUser,
141608,27169,54941,178,0,N,1,N,N,CP_Drtn,TT_Task,DT_FixedDUR2,TK_NotStart,PRO1030,Order Long Lead Electrical Materials,,920,680,800,0,0,0,800,0,0,0,,,,2024-12-11 08:00,2025-04-29 16:00,,2024-07-03 08:00,2024-11-19 16:00,2024-07-03 08:00,2024-11-19 16:00,2024-07-03 08:00,2024-11-19 16:00,2024-12-11 08:00,2025-04-29 16:00,,PT_Normal,,,,,ucL7LOCCzUCnVhYjxrrR/g,aQENpExyCE2EQ/Kj8Kxu0w,,,N,0,0,,,2023-02-08 18:30,2023-02-08 18:31,NotPrmUser,NotPrmUser,
141609,27169,54951,178,0,N,1,N,N,CP_Drtn,TT_Task,DT_FixedDUR2,TK_NotStart,CON2000,Civil Construction (Trenching 300 feet/day),7730,0,0,3520,0,7208,7208,3520,0,0,0,,,,2025-03-26 08:00,2026-12-01 16:00,,2025-03-26 08:00,2026-12-01 16:00,2025-03-26 08:00,2026-12-01 16:00,2025-03-26 08:00,2026-12-01 16:00,2025-03-26 08:00,2026-12-01 16:00,,PT_Normal,,,,,mutJ+VPAIE6GVg9H8szBUQ,19a1nHAdKECV7ycdO95iwA,,,Y,0,0,,,2023-02-08 18:30,2023-02-08 19:11,NotPrmUser,NotPrmUser,
141610,27169,54952,178,0,N,1,N,N,CP_Drtn,TT_Task,DT_FixedDUR2,TK_NotStart,CON3000,Electrical Construction,7786,0,0,3280,0,1640,1640,3280,0,0,0,,,,2025-05-07 08:00,2026-12-01 16:00,,2025-05-07 08:00,2026-12-01 16:00,2025-05-07 08:00,2026-12-01 16:00,2025-05-07 08:00,2026-12-01 16:00,2025-05-07 08:00,2026-12-01 16:00,,PT_Normal,,,,,o0db6HYVH0uqYseeSNz8aA,+JQ5zPdRxki8D98/TdJxmA,,,Y,0,0,,,2023-02-08 18:30,2023-02-08 19:35,NotPrmUser,NotPrmUser,
141611,27169,54953,178,0,N,1,N,N,CP_Drtn,TT_Task,DT_FixedDUR2,TK_NotStart,CON4000,Service Cutover,,1056,0,2920,0,0,0,2920,0,0,0,,,,2026-01-09 08:00,2027-06-03 16:00,,2025-07-09 08:00,2026-12-01 16:00,2025-07-09 08:00,2026-12-01 16:00,2025-07-09 08:00,2026-12-01 16:00,2026-01-09 08:00,2027-06-03 16:00,,PT_Normal,,,,,1VK85BbVekaePScypTHiTA,w95vN+XDdE2X8QLZEpwTfg,,,N,0,0,,,2023-02-08 18:30,2023-02-08 18:31,NotPrmUser,NotPrmUser,
141612,27169,54954,178,0,N,1,N,N,CP_Drtn,TT_Task,DT_FixedDUR2,TK_NotStart,CON5000,Scada Construction,,1056,0,520,0,0,0,520,0,0,0,,,,2027-03-05 08:00,2027-06-03 16:00,,2026-09-02 08:00,2026-12-01 16:00,2026-09-02 08:00,2026-12-01 16:00,2026-09-02 08:00,2026-12-01 16:00,2027-03-05 08:00,2027-06-03 16:00,,PT_Normal,,,,,H6D3k7JmzUeIunmJzhzvaw,TfZwpep+AEmdiSBEhQDVNw,,,N,0,0,,,2023-02-08 18:30,2023-02-08 18:31,NotPrmUser,NotPrmUser,
141613,27169,54955,178,0,N,1,N,N,CP_Drtn,TT_Task,DT_FixedDUR2,TK_NotStart,CON6000,Substation Construction,,1056,0,520,0,0,0,520,0,0,0,,,,2027-03-05 08:00,2027-06-03 16:00,,2026-09-02 08:00,2026-12-01 16:00,2026-09-02 08:00,2026-12-01 16:00,2026-09-02 08:00,2026-12-01 16:00,2027-03-05 08:00,2027-06-03 16:00,,PT_Normal,,,,,uQiV0M9qK0WlbYkzofwEkA,DdRq/LLNJUqWYsWZ2EnZKg,,,N,0,0,,,2023-02-08 18:30,2023-02-08 18:31,NotPrmUser,NotPrmUser,
141614,27169,54956,178,0,N,1,N,N,CP_Drtn,TT_Task,DT_FixedDrtn,TK_NotStart,CON7000,Overhead RFS (1000 feet per day),7785,0,0,1056,0,1056,1056,1056,0,0,0,,,,2026-12-02 08:00,2027-06-03 16:00,,2026-12-02 08:00,2027-06-03 16:00,2026-12-02 08:00,2027-06-03 16:00,2026-12-02 08:00,2027-06-03 16:00,2026-12-02 08:00,2027-06-03 16:00,,PT_Normal,,,,,q+tuPQgqD06jD8JAIrKwiw,GRCQQblA30O7LO27Fxle9Q,,,Y,0,0,,,2023-02-08 18:30,2023-02-08 18:31,NotPrmUser,NotPrmUser,
141615,27169,54950,178,0,N,1,N,N,CP_Drtn,TT_Task,DT_FixedDUR2,TK_NotStart,ISD1000,ISD - Energize - Put in service,,2008,2008,8,0,0,0,8,25,0,25,,,,2027-11-18 08:00,2027-11-18 16:00,,2026-12-02 08:00,2026-12-02 16:00,2026-12-02 08:00,2026-12-02 16:00,2026-12-02 08:00,2026-12-02 16:00,2027-11-18 08:00,2027-11-18 16:00,,PT_Normal,,,,,s4JtSSSsEUikz5u9tPpIyA,orhk0f/xEkGg9PMB0tFcCw,,,N,0,0,,,2023-02-08 18:30,2023-02-08 18:31,NotPrmUser,NotPrmUser,
141616,27169,54933,178,0,N,1,N,N,CP_Drtn,TT_Task,DT_FixedDUR2,TK_NotStart,SUR1000,Survey and LiDAR,7385,0,0,400,0,9182,9182,400,0,0,0,,,,2023-09-20 08:00,2023-11-30 16:00,,2023-09-20 08:00,2023-11-30 16:00,2023-09-20 08:00,2023-11-30 16:00,2023-09-20 08:00,2023-11-30 16:00,2023-09-20 08:00,2023-11-30 16:00,,PT_Normal,,,,,EoYDdaEhDEC/vopXBc+W3Q,7ttxGyIBMUO7Hzg591FI8g,,,Y,0,0,,,2023-02-08 18:30,2023-02-08 18:31,NotPrmUser,NotPrmUser,
141617,27169,54938,178,0,N,1,N,N,CP_Drtn,TT_Task,DT_FixedDUR2,TK_NotStart,DES1200,Receive Services Worksheet and Cable Info from Design Firms,,760,0,160,0,0,0,160,0,0,0,,,,2024-06-19 08:00,2024-07-16 16:00,,2024-02-07 08:00,2024-03-05 16:00,2024-02-07 08:00,2024-03-05 16:00,2024-02-07 08:00,2024-03-05 16:00,2024-06-19 08:00,2024-07-16 16:00,,PT_Normal,,,,,K7MYflc3aUOkYgSMBOSBxg,WslS/u9Lx02FfEaWRLgTyQ,,,N,0,0,,,2023-02-08 18:30,2023-02-08 18:31,NotPrmUser,NotPrmUser,
141618,27169,54938,178,0,N,1,N,N,CP_Drtn,TT_Task,DT_FixedDUR2,TK_NotStart,DES1210,Issue to Trench Inspectors,,2376,1320,80,0,0,0,80,0,0,0,,,,2025-12-26 08:00,2026-01-08 16:00,,2024-11-06 08:00,2024-11-19 16:00,2024-11-06 08:00,2024-11-19 16:00,2024-11-06 08:00,2024-11-19 16:00,2025-12-26 08:00,2026-01-08 16:00,,PT_Normal,,,,,XjlDC2hx1E2VSt4R110yeg,T9DSKlU6I0KV8Li+iq+02A,,,N,0,0,,,2023-02-08 18:30,2023-02-08 18:31,NotPrmUser,NotPrmUser,
141619,27169,54950,178,0,N,1,N,N,CP_Drtn,TT_FinMile,DT_FixedDrtn,TK_NotStart,CON1020,Construction Complete,,0,0,0,0,0,0,0,0,0,0,,,,2027-06-03 16:00,2027-06-03 16:00,,2027-06-03 16:00,2027-06-03 16:00,2027-06-03 16:00,2027-06-03 16:00,2027-06-03 16:00,2027-06-03 16:00,2027-06-03 16:00,2027-06-03 16:00,,PT_Normal,,,,,OZSdGfv6+kSnIya+EyiAWQ,qitsjikmLkWx/YLZ1yQa+g,,,Y,0,0,,,2023-02-08 18:30,2023-02-08 18:31,NotPrmUser,NotPrmUser,
141620,27169,54950,178,0,N,1,N,N,CP_Drtn,TT_Mile,DT_FixedDrtn,TK_NotStart,CON1010,Construction Start,,5536,5536,0,0,0,0,0,0,0,0,,,,2027-11-18 16:00,2027-11-18 16:00,,2025-03-26 08:00,2025-03-26 08:00,2025-03-26 08:00,2025-03-26 08:00,2025-03-26 08:00,2025-03-26 08:00,2027-11-18 16:00,2027-11-18 16:00,,PT_Normal,,,,,3u1E/2/x4EKrokF0LGRpqg,pZbeZaccm0ed+nRhwIw/Qg,,,N,0,0,,,2023-02-08 18:30,2023-02-08 18:31,NotPrmUser,NotPrmUser,
141621,27169,54959,178,0,N,1,N,N,CP_Drtn,TT_Task,DT_FixedDUR2,TK_NotStart,CLO1020,GIS/As-Built and Records Complete,,480,480,480,0,0,0,480,0,0,0,,,,2027-08-27 08:00,2027-11-18 16:00,,2027-06-04 08:00,2027-08-26 16:00,2027-06-04 08:00,2027-08-26 16:00,2027-06-04 08:00,2027-08-26 16:00,2027-08-27 08:00,2027-11-18 16:00,,PT_Normal,,,,,jvMVo10RvU+PVLHzUt5x3g,bfsm/V+5fU20w4mjqCbHUg,,,N,0,0,,,2023-02-08 18:30,2023-02-08 18:31,NotPrmUser,NotPrmUser,
141622,27169,54960,178,0,N,1,N,N,CP_Drtn,TT_Task,DT_FixedDUR2,TK_NotStart,CLO1030,"PO's complete, Work Order Reconcilled and Closed",,0,0,960,0,0,0,960,0,0,0,,,,2027-06-04 08:00,2027-11-18 16:00,,2027-06-04 08:00,2027-11-18 16:00,2027-06-04 08:00,2027-11-18 16:00,2027-06-04 08:00,2027-11-18 16:00,2027-06-04 08:00,2027-11-18 16:00,,PT_Normal,,,,,2gdWt8/ktE+x+ikI9WIV/w,rf52nU0aMUyBCMoYSKHHLw,,,Y,0,0,,,2023-02-08 18:30,2023-02-08 18:31,NotPrmUser,NotPrmUser,
141623,27169,54958,178,0,N,1,N,N,CP_Drtn,TT_FinMile,DT_FixedDrtn,TK_NotStart,CLO1010,Project Complete,,0,0,0,0,0,0,0,0,0,0,,,,2027-11-18 16:00,2027-11-18 16:00,,2027-11-18 16:00,2027-11-18 16:00,2027-11-18 16:00,2027-11-18 16:00,2027-11-18 16:00,2027-11-18 16:00,2027-11-18 16:00,2027-11-18 16:00,,PT_Normal,,,,,qIfKhkmFBEug5qR3f2LSBQ,nL9kES7PUkaHTP1l9rb4tw,,,Y,0,0,,,2023-02-08 18:30,2023-02-08 18:31,NotPrmUser,NotPrmUser,
141624,27169,54934,178,0,N,1,N,N,CP_Drtn,TT_LOE,DT_FixedDUR2,TK_NotStart,DES1000,Design Summary,7257,4096,0,2680,0,16233,16233,2680,0,0,0,,,,2023-12-01 08:00,2027-03-04 16:00,,2023-12-01 08:00,2025-03-18 16:00,2023-12-01 08:00,2025-03-18 16:00,2023-12-01 08:00,2025-03-18 16:00,2023-12-01 08:00,2027-03-04 16:00,,PT_Normal,,,,,eiJrJU4/0Um8V+A2XUOIAA,iJ6nWcg2skKJz5rexxMs8g,,,Y,0,0,,,2023-02-08 18:30,2023-02-08 18:31,NotPrmUser,NotPrmUser,
141625,27169,54950,178,0,N,1,N,N,CP_Drtn,TT_LOE,DT_FixedDUR2,TK_NotStart,CON1000,Construction Summary,7385,0,0,4576,0,9972,9972,4576,25,0,25,,,,2027-06-03 16:00,2027-06-03 16:00,,2025-03-26 08:00,2027-06-03 16:00,2025-03-26 08:00,2027-06-03 16:00,2025-03-26 08:00,2027-06-03 16:00,2027-06-03 16:00,2027-06-03 16:00,,PT_Normal,,,,,WJwGI9vrukyYhssy+u92Dg,SvaFM/D6q0moRycu9cE+MA,,,N,0,0,,,2023-02-08 18:30,2023-02-08 18:31,NotPrmUser,NotPrmUser,
141626,27169,54958,178,0,N,1,N,N,CP_Drtn,TT_LOE,DT_FixedDUR2,TK_NotStart,CLO1000,Close Out Summary,7385,0,0,960,0,4482,4482,960,0,0,0,,,,2027-06-04 08:00,2027-11-18 16:00,,2027-06-04 08:00,2027-11-18 16:00,2027-06-04 08:00,2027-11-18 16:00,2027-06-04 08:00,2027-11-18 16:00,2027-06-04 08:00,2027-11-18 16:00,,PT_Normal,,,,,8lTDICP2KkSmrWX5VrTdqQ,aFpqw24iNEeL9PGx0s7VPg,,,Y,0,0,,,2023-02-08 18:30,2023-02-08 18:31,NotPrmUser,NotPrmUser,
141627,27169,54931,178,0,N,1,N,N,CP_Drtn,TT_LOE,DT_FixedDUR2,TK_NotStart,PCON1000,Pre-Construction Summary,,0,0,3296,0,0,0,3296,0,0,0,,,,2023-08-21 08:00,2025-03-25 16:00,,2023-08-21 08:00,2025-03-25 16:00,2023-08-21 08:00,2025-03-25 16:00,2023-08-21 08:00,2025-03-25 16:00,2023-08-21 08:00,2025-03-25 16:00,,PT_Normal,,,,,ddl42jISjE6EzSmZMQwnkw,nprFLn4PkE+fcqG3pqENJg,,,Y,0,0,,,2023-02-08 18:30,2023-02-08 18:31,NotPrmUser,NotPrmUser,
141628,27170,55202,178,0,N,1,N,N,CP_Drtn,TT_Task,DT_FixedDUR2,TK_NotStart,SCO1000,Bundling / Phasing of circuits for project sequencing,,544,0,80,0,0,0,80,0,0,0,2024-10-28 00:00,,,2025-01-30 08:00,2025-02-12 16:00,,2024-10-28 08:00,2024-11-08 16:00,2024-10-28 08:00,2024-11-08 16:00,2024-10-28 08:00,2024-11-08 16:00,2025-01-30 08:00,2025-02-12 16:00,CS_MSOA,PT_Normal,,,,,6YQ0VE+v5kWwYGjW0/Xl9w,7kxPnns7eUOE4jqMY9gu9Q,,,Y,0,0,,,2023-02-08 18:30,2023-02-08 18:31,NotPrmUser,NotPrmUser,
141629,27170,55202,178,0,N,1,N,N,CP_Drtn,TT_Task,DT_FixedDUR2,TK_NotStart,SCO1010,Constructability Review,,544,0,40,0,0,0,40,0,0,0,,,,2025-02-13 08:00,2025-02-19 16:00,,2024-11-11 08:00,2024-11-15 16:00,2024-11-11 08:00,2024-11-15 16:00,2024-11-11 08:00,2024-11-15 16:00,2025-02-13 08:00,2025-02-19 16:00,,PT_Normal,,,,,tvmep7wumUqpWqkFNqltnw,5eYOUTe4CkC6vUaj6Px+4w,,,N,0,0,,,2023-02-08 18:30,2023-02-08 18:31,NotPrmUser,NotPrmUser,
141630,27170,55202,178,0,N,1,N,N,CP_Drtn,TT_Task,DT_FixedDUR2,TK_NotStart,SCO1020,SDG&E Review,,544,0,16,0,0,0,16,0,0,0,,,,2025-02-20 08:00,2025-02-21 16:00,,2024-11-18 08:00,2024-11-19 16:00,2024-11-18 08:00,2024-11-19 16:00,2024-11-18 08:00,2024-11-19 16:00,2025-02-20 08:00,2025-02-21 16:00,,PT_Normal,,,,,Bd3HoLlPGUa3EpQE5IoahQ,hE0uZhqqUE6fQI9Jt975lw,,,N,0,0,,,2023-02-08 18:30,2023-02-08 18:31,NotPrmUser,NotPrmUser,
141631,27170,55203,178,0,N,1,N,N,CP_Drtn,TT_Task,DT_FixedDUR2,TK_NotStart,PLA1000,Workorder Setup,,544,0,40,0,0,0,40,0,0,0,,,,2025-02-24 08:00,2025-02-28 16:00,,2024-11-20 08:00,2024-11-26 16:00,2024-11-20 08:00,2024-11-26 16:00,2024-11-20 08:00,2024-11-26 16:00,2025-02-24 08:00,2025-02-28 16:00,,PT_Normal,,,,,ZfzpPtbgCU6qyBoj/vXnGg,6U/7UnmUEkeBKksGGvL4wg,,,N,0,0,,,2023-02-08 18:30,2023-02-08 18:31,NotPrmUser,NotPrmUser,
141632,27170,55206,178,0,N,1,N,N,CP_Drtn,TT_Task,DT_FixedDUR2,TK_NotStart,DES1040,10% Submittal,,544,0,200,0,0,0,200,0,0,0,,,,2025-05-12 08:00,2025-06-13 16:00,,2025-02-05 08:00,2025-03-11 16:00,2025-02-05 08:00,2025-03-11 16:00,2025-02-05 08:00,2025-03-11 16:00,2025-05-12 08:00,2025-06-13 16:00,,PT_Normal,,,,,qRM8tfMFzEuVp0+aI8BGzQ,IGKXSQ0oykilr6YdtSje7Q,,,N,0,0,,,2023-02-08 18:30,2023-02-08 18:31,NotPrmUser,NotPrmUser,
141633,27170,55206,178,0,N,1,N,N,CP_Drtn,TT_Task,DT_FixedDUR2,TK_NotStart,DES1050,30% Submittal,,544,0,400,0,0,0,400,0,0,0,,,,2025-06-16 08:00,2025-08-22 16:00,,2025-03-12 08:00,2025-05-20 16:00,2025-03-12 08:00,2025-05-20 16:00,2025-03-12 08:00,2025-05-20 16:00,2025-06-16 08:00,2025-08-22 16:00,,PT_Normal,,,,,J46BPihF5Eaa+vMBtsoZWA,f7IRGMOf20uvUALKbCLXqQ,,,N,0,0,,,2023-02-08 18:30,2023-02-08 18:31,NotPrmUser,NotPrmUser,
141634,27170,55206,178,0,N,1,N,N,CP_Drtn,TT_Task,DT_FixedDUR2,TK_NotStart,DES1060,30% Review,,544,0,80,0,0,0,80,0,0,0,,,,2025-08-25 08:00,2025-09-05 16:00,,2025-05-21 08:00,2025-06-03 16:00,2025-05-21 08:00,2025-06-03 16:00,2025-05-21 08:00,2025-06-03 16:00,2025-08-25 08:00,2025-09-05 16:00,,PT_Normal,,,,,7o2kDUIitU2i3fqIzzVXsA,W++99uNd5EK0PcdC69LFYA,,,N,0,0,,,2023-02-08 18:30,2023-02-08 18:31,NotPrmUser,NotPrmUser,
141635,27170,55206,178,0,N,1,N,N,CP_Drtn,TT_Task,DT_FixedDUR2,TK_NotStart,DES1070,60% Submittal,,1144,0,560,0,0,0,560,0,0,0,,,,2025-12-22 08:00,2026-03-27 16:00,,2025-06-04 08:00,2025-09-09 16:00,2025-06-04 08:00,2025-09-09 16:00,2025-06-04 08:00,2025-09-09 16:00,2025-12-22 08:00,2026-03-27 16:00,,PT_Normal,,,,,Vnkx5Mu8/UynEJAB1scdHg,Q2XWMdXpc0SRK/wImPKoKA,,,N,0,0,,,2023-02-08 18:30,2023-02-08 18:31,NotPrmUser,NotPrmUser,
141636,27170,55206,178,0,N,1,N,N,CP_Drtn,TT_Task,DT_FixedDUR2,TK_NotStart,DES1080,60% Review,,1144,0,80,0,0,0,80,0,0,0,,,,2026-03-30 08:00,2026-04-10 16:00,,2025-09-10 08:00,2025-09-23 16:00,2025-09-10 08:00,2025-09-23 16:00,2025-09-10 08:00,2025-09-23 16:00,2026-03-30 08:00,2026-04-10 16:00,,PT_Normal,,,,,oPktj4mDbESQp/0r5KgwFA,7zoT9NEcokmTTkNnN2NzNA,,,N,0,0,,,2023-02-08 18:30,2023-02-08 18:31,NotPrmUser,NotPrmUser,
141637,27170,55206,178,0,N,1,N,N,CP_Drtn,TT_Task,DT_FixedDUR2,TK_NotStart,DES1090,90% Submittal,,1144,0,360,0,0,0,360,0,0,0,,,,2026-04-13 08:00,2026-06-12 16:00,,2025-09-24 08:00,2025-11-25 16:00,2025-09-24 08:00,2025-11-25 16:00,2025-09-24 08:00,2025-11-25 16:00,2026-04-13 08:00,2026-06-12 16:00,,PT_Normal,,,,,NCR00EOUA0SzG1ctiVW0iQ,EfamsjLG302/LPcVXiJZzg,,,N,0,0,,,2023-02-08 18:30,2023-02-08 18:31,NotPrmUser,NotPrmUser,
141638,27170,55206,178,0,N,1,N,N,CP_Drtn,TT_Task,DT_FixedDUR2,TK_NotStart,DES1100,90% Review,,1144,0,80,0,0,0,80,0,0,0,,,,2026-06-15 08:00,2026-06-26 16:00,,2025-11-26 08:00,2025-12-09 16:00,2025-11-26 08:00,2025-12-09 16:00,2025-11-26 08:00,2025-12-09 16:00,2026-06-15 08:00,2026-06-26 16:00,,PT_Normal,,,,,0sy90BzaF0KnsT4itqFCsg,D9zw8pc130WcJjV8Mady9Q,,,N,0,0,,,2023-02-08 18:30,2023-02-08 18:31,NotPrmUser,NotPrmUser,
141639,27170,55206,178,0,N,1,N,N,CP_Drtn,TT_Task,DT_FixedDUR2,TK_NotStart,DES1110,100% Submittal,,1224,0,160,0,0,0,160,0,0,0,,,,2026-07-13 08:00,2026-08-07 16:00,,2025-12-10 08:00,2026-01-06 16:00,2025-12-10 08:00,2026-01-06 16:00,2025-12-10 08:00,2026-01-06 16:00,2026-07-13 08:00,2026-08-07 16:00,,PT_Normal,,,,,Z9cg96CyJ0iP9eef2djGyw,hSP9ElZNrkSCjIuD2vm1ng,,,N,0,0,,,2023-02-08 18:30,2023-02-08 18:31,NotPrmUser,NotPrmUser,
141640,27170,55206,178,0,N,1,N,N,CP_Drtn,TT_Task,DT_FixedDUR2,TK_NotStart,DES1120,Issue IFC Design Package,,544,544,80,0,0,0,80,0,0,0,,,,2026-08-10 08:00,2026-08-21 16:00,,2026-05-06 08:00,2026-05-19 16:00,2026-05-06 08:00,2026-05-19 16:00,2026-05-06 08:00,2026-05-19 16:00,2026-08-10 08:00,2026-08-21 16:00,,PT_Normal,,,,,kRBaummiu02n9xXUjRabqw,5JTbR6gjNkyGAP6HynZ1VQ,,,N,0,0,,,2023-02-08 18:30,2023-02-08 18:31,NotPrmUser,NotPrmUser,
141641,27170,55207,178,0,N,1,N,N,CP_Drtn,TT_Task,DT_FixedDUR2,TK_NotStart,DES1130,60% Submittal,,1384,0,480,0,0,0,480,0,0,0,,,,2026-01-05 08:00,2026-03-27 16:00,,2025-05-07 08:00,2025-07-29 16:00,2025-05-07 08:00,2025-07-29 16:00,2025-05-07 08:00,2025-07-29 16:00,2026-01-05 08:00,2026-03-27 16:00,,PT_Normal,,,,,eA53F6Gn+0ua9bR3wFbwJQ,CDmrUTRBoEis8tXa5mW32A,,,N,0,0,,,2023-02-08 18:30,2023-02-08 18:31,NotPrmUser,NotPrmUser,
141642,27170,55207,178,0,N,1,N,N,CP_Drtn,TT_Task,DT_FixedDUR2,TK_NotStart,DES1140,60% Review,,1464,0,80,0,0,0,80,0,0,0,,,,2026-04-13 08:00,2026-04-24 16:00,,2025-07-30 08:00,2025-08-12 16:00,2025-07-30 08:00,2025-08-12 16:00,2025-07-30 08:00,2025-08-12 16:00,2026-04-13 08:00,2026-04-24 16:00,,PT_Normal,,,,,EeliL2GCJ0STCo+22xV7Lw,KyRGePdgN0CTTHOKp5Qo9w,,,N,0,0,,,2023-02-08 18:30,2023-02-08 18:31,NotPrmUser,NotPrmUser,
141643,27170,55207,178,0,N,1,N,N,CP_Drtn,TT_Task,DT_FixedDUR2,TK_NotStart,DES1150,90% Submittal,,1664,0,400,0,0,0,400,0,0,0,,,,2026-06-01 08:00,2026-08-07 16:00,,2025-08-13 08:00,2025-10-21 16:00,2025-08-13 08:00,2025-10-21 16:00,2025-08-13 08:00,2025-10-21 16:00,2026-06-01 08:00,2026-08-07 16:00,,PT_Normal,,,,,xnfLnq+FUUu8rb2WRSq1Bw,8VtXzxfa1EmVYjo6qAbqjw,,,N,0,0,,,2023-02-08 18:30,2023-02-08 18:31,NotPrmUser,NotPrmUser,
141644,27170,55207,178,0,N,1,N,N,CP_Drtn,TT_Task,DT_FixedDUR2,TK_NotStart,DES1160,90% Review,,1664,0,80,0,0,0,80,0,0,0,,,,2026-08-10 08:00,2026-08-21 16:00,,2025-10-22 08:00,2025-11-04 16:00,2025-10-22 08:00,2025-11-04 16:00,2025-10-22 08:00,2025-11-04 16:00,2026-08-10 08:00,2026-08-21 16:00,,PT_Normal,,,,,YKvwwitIKkWn2XunKCeJ+w,H+tAlTHv80Ku/tWXrtRNog,,,N,0,0,,,2023-02-08 18:30,2023-02-08 18:31,NotPrmUser,NotPrmUser,
141645,27170,55207,178,0,N,1,N,N,CP_Drtn,TT_Task,DT_FixedDUR2,TK_NotStart,DES1170,100% Submittal,,1664,880,160,0,0,0,160,0,0,0,,,,2026-08-24 08:00,2026-09-18 16:00,,2025-11-05 08:00,2025-12-02 16:00,2025-11-05 08:00,2025-12-02 16:00,2025-11-05 08:00,2025-12-02 16:00,2026-08-24 08:00,2026-09-18 16:00,,PT_Normal,,,,,GD7xVHKJfEOoo/baYd4ysg,n+ZdA8whaEuzLpKn73/6Hg,,,N,0,0,,,2023-02-08 18:30,2023-02-08 18:31,NotPrmUser,NotPrmUser,
141646,27170,55207,178,0,N,1,N,N,CP_Drtn,TT_Task,DT_FixedDUR2,TK_NotStart,DES1180,Issue IFC Design Package,,784,544,80,0,0,0,80,0,0,0,,,,2026-09-21 08:00,2026-10-02 16:00,,2026-05-06 08:00,2026-05-19 16:00,2026-05-06 08:00,2026-05-19 16:00,2026-05-06 08:00,2026-05-19 16:00,2026-09-21 08:00,2026-10-02 16:00,,PT_Normal,,,,,3zCIUQx6Mk6xdPN5KZcfgQ,Ga9iPHIeKEGYpsjvG0ECXA,,,N,0,0,,,2023-02-08 18:30,2023-02-08 18:31,NotPrmUser,NotPrmUser,
141647,27170,55208,178,0,N,1,N,N,CP_Drtn,TT_Task,DT_FixedDUR2,TK_NotStart,DES1190,Issue Services Worksheet to Design Firms,,1304,0,160,0,0,0,160,0,0,0,,,,2025-10-27 08:00,2025-11-21 16:00,,2025-03-12 08:00,2025-04-08 16:00,2025-03-12 08:00,2025-04-08 16:00,2025-03-12 08:00,2025-04-08 16:00,2025-10-27 08:00,2025-11-21 16:00,,PT_Normal,,,,,dVAIB8azn0GXVzBqSLKtDg,rnPnK275okWzLC4MW5IAMg,,,N,0,0,,,2023-02-08 18:30,2023-02-08 18:31,NotPrmUser,NotPrmUser,
141648,27170,55209,178,0,N,1,N,N,CP_Drtn,TT_Task,DT_FixedDUR2,TK_NotStart,DES1220,SED Design,,6920,0,240,0,0,0,240,0,0,0,,,,2028-05-31 08:00,2028-07-11 16:00,,2025-02-05 08:00,2025-03-18 16:00,2025-02-05 08:00,2025-03-18 16:00,2025-02-05 08:00,2025-03-18 16:00,2028-05-31 08:00,2028-07-11 16:00,,PT_Normal,,,,,ve3VozkYU0ePQbyufZ2nsA,F3uZ/ppMVkWMFjTQJsbqYQ,,,N,0,0,,,2023-02-08 18:30,2023-02-08 18:31,NotPrmUser,NotPrmUser,
141649,27170,55209,178,0,N,1,N,N,CP_Drtn,TT_Task,DT_FixedDUR2,TK_NotStart,DES1230,Issue IFC Design Package,,6920,5864,160,0,0,0,160,0,0,0,,,,2028-07-12 08:00,2028-08-08 16:00,,2025-03-19 08:00,2025-04-15 16:00,2025-03-19 08:00,2025-04-15 16:00,2025-03-19 08:00,2025-04-15 16:00,2028-07-12 08:00,2028-08-08 16:00,,PT_Normal,,,,,4IOyr+mglUO6UqANmPCdGg,2mn7Z5/auk+PbUXKpN0BHw,,,N,0,0,,,2023-02-08 18:30,2023-02-08 18:31,NotPrmUser,NotPrmUser,
141650,27170,55211,178,0,N,1,N,N,CP_Drtn,TT_Task,DT_FixedDUR2,TK_NotStart,PRO1000,Civil BOM - Long Lead @ 30%,,1224,0,120,0,0,0,120,0,0,0,,,,2026-01-05 08:00,2026-01-23 16:00,,2025-06-04 08:00,2025-06-24 16:00,2025-06-04 08:00,2025-06-24 16:00,2025-06-04 08:00,2025-06-24 16:00,2026-01-05 08:00,2026-01-23 16:00,,PT_Normal,,,,,dvDlkk5Me066W2y9+hxiXw,Pvcns/JdDk6siq+3o180AQ,,,N,0,0,,,2023-02-08 18:30,2023-02-08 18:31,NotPrmUser,NotPrmUser,
141651,27170,55211,178,0,N,1,N,N,CP_Drtn,TT_Task,DT_FixedDUR2,TK_NotStart,PRO1020,Electrical BOM - Long Lead @ 60%,,1464,0,120,0,0,0,120,0,0,0,,,,2026-04-27 08:00,2026-05-15 16:00,,2025-08-13 08:00,2025-09-02 16:00,2025-08-13 08:00,2025-09-02 16:00,2025-08-13 08:00,2025-09-02 16:00,2026-04-27 08:00,2026-05-15 16:00,,PT_Normal,,,,,TojQzB0drEWkN+2EHC1x4Q,K8+NvcDyOky/JhPGcqfhfA,,,N,0,0,,,2023-02-08 18:30,2023-02-08 18:31,NotPrmUser,NotPrmUser,
141652,27170,55211,178,0,N,1,N,N,CP_Drtn,TT_Task,DT_FixedDUR2,TK_NotStart,PRO1040,BOM - Short Lead @ 60%,,1144,0,120,0,0,0,120,0,0,0,,,,2026-06-29 08:00,2026-07-17 16:00,,2025-12-10 08:00,2025-12-30 16:00,2025-12-10 08:00,2025-12-30 16:00,2025-12-10 08:00,2025-12-30 16:00,2026-06-29 08:00,2026-07-17 16:00,,PT_Normal,,,,,hDDQE4oS1EChTzf+V8sujA,QeJCqi5+FEuKxr48mkgjlA,,,N,0,0,,,2023-02-08 18:30,2023-02-08 18:31,NotPrmUser,NotPrmUser,
141653,27170,55212,178,0,N,1,N,N,CP_Drtn,TT_Task,DT_FixedDUR2,TK_NotStart,PER1000,CalTrans Permit,,544,0,2000,0,0,0,2000,0,0,0,,,,2025-09-08 08:00,2026-08-21 16:00,,2025-06-04 08:00,2026-05-19 16:00,2025-06-04 08:00,2026-05-19 16:00,2025-06-04 08:00,2026-05-19 16:00,2025-09-08 08:00,2026-08-21 16:00,,PT_Normal,,,,,6FegxSN12Uydcme1va48rw,Leyosbm/hE6nJSQYbXGuXA,,,N,0,0,,,2023-02-08 18:30,2023-02-08 18:31,NotPrmUser,NotPrmUser,
141654,27170,55212,178,0,N,1,N,N,CP_Drtn,TT_Task,DT_FixedDUR2,TK_NotStart,PER1010,City & County Permits,,1744,1200,800,0,0,0,800,0,0,0,,,,2026-04-06 08:00,2026-08-21 16:00,,2025-06-04 08:00,2025-10-21 16:00,2025-06-04 08:00,2025-10-21 16:00,2025-06-04 08:00,2025-10-21 16:00,2026-04-06 08:00,2026-08-21 16:00,,PT_Normal,,,,,XkXhG8Po+0yXmfizvsksDw,zJ5MzcaHGku+fPk2uX1ZDg,,,N,0,0,,,2023-02-08 18:30,2023-02-08 18:31,NotPrmUser,NotPrmUser,
141655,27170,55212,178,0,N,1,N,N,CP_Drtn,TT_Task,DT_FixedDUR2,TK_NotStart,PER1020,Other Permit (TBD),,1744,1200,800,0,0,0,800,0,0,0,,,,2026-04-06 08:00,2026-08-21 16:00,,2025-06-04 08:00,2025-10-21 16:00,2025-06-04 08:00,2025-10-21 16:00,2025-06-04 08:00,2025-10-21 16:00,2026-04-06 08:00,2026-08-21 16:00,,PT_Normal,,,,,PieQcfZ+oUeV9WasgYQvZw,LPZddiuRZkKvej9u2+fdKw,,,N,0,0,,,2023-02-08 18:30,2023-02-08 18:31,NotPrmUser,NotPrmUser,
141656,27170,55213,178,0,N,1,N,N,CP_Drtn,TT_Task,DT_FixedDUR2,TK_NotStart,PUB1000,Public Affairs / Community Outreach,,6760,6760,800,0,0,0,800,0,0,0,,,,2028-12-06 08:00,2029-04-24 16:00,,2025-09-10 08:00,2026-01-27 16:00,2025-09-10 08:00,2026-01-27 16:00,2025-09-10 08:00,2026-01-27 16:00,2028-12-06 08:00,2029-04-24 16:00,,PT_Normal,,,,,HIWJNXMToE6g0jgMhAOuMg,1OqximwJKkmfzAr5vo/svg,,,N,0,0,,,2023-02-08 18:30,2023-02-08 18:31,NotPrmUser,NotPrmUser,
141657,27170,55214,178,0,N,1,N,N,CP_Drtn,TT_Task,DT_FixedDUR2,TK_NotStart,LAN1000,Land Rights and Easement Acquisition,,1424,1424,1200,0,0,0,1200,0,0,0,,,,2026-01-26 08:00,2026-08-21 16:00,,2025-05-21 08:00,2025-12-16 16:00,2025-05-21 08:00,2025-12-16 16:00,2025-05-21 08:00,2025-12-16 16:00,2026-01-26 08:00,2026-08-21 16:00,,PT_Normal,,,,,/ojhlbNgTEmWz6hmw1Xq1g,HmYkBxdvrE2wt8Z8sMHzCA,,,N,0,0,,,2023-02-08 18:30,2023-02-08 18:31,NotPrmUser,NotPrmUser,
141658,27170,55214,178,0,N,1,N,N,CP_Drtn,TT_Task,DT_FixedDUR2,TK_NotStart,LAN1010,Tribal Land Rights,,1424,1424,1200,0,0,0,1200,0,0,0,,,,2026-01-26 08:00,2026-08-21 16:00,,2025-05-21 08:00,2025-12-16 16:00,2025-05-21 08:00,2025-12-16 16:00,2025-05-21 08:00,2025-12-16 16:00,2026-01-26 08:00,2026-08-21 16:00,,PT_Normal,,,,,6G94i5q11UaB1WE+4CWikQ,OZFvIE5vOE6NBf2oB8ZCuQ,,,N,0,0,,,2023-02-08 18:30,2023-02-08 18:31,NotPrmUser,NotPrmUser,
141659,27170,55214,178,0,N,1,N,N,CP_Drtn,TT_Task,DT_FixedDUR2,TK_NotStart,LAN1020,Laydown Yards,,1424,1424,1200,0,0,0,1200,0,0,0,,,,2026-01-26 08:00,2026-08-21 16:00,,2025-05-21 08:00,2025-12-16 16:00,2025-05-21 08:00,2025-12-16 16:00,2025-05-21 08:00,2025-12-16 16:00,2026-01-26 08:00,2026-08-21 16:00,,PT_Normal,,,,,x4DZkeYNkEWX84WyjzRpaA,0SjeND/k7E+azM97yozckA,,,N,0,0,,,2023-02-08 18:30,2023-02-08 18:31,NotPrmUser,NotPrmUser,
141660,27170,55215,178,0,N,1,N,N,CP_Drtn,TT_Task,DT_FixedDUR2,TK_NotStart,ENV1000,10% Environmental Submittal,,1424,0,200,0,0,0,200,0,0,0,,,,2025-10-13 08:00,2025-11-14 16:00,,2025-02-05 08:00,2025-03-11 16:00,2025-02-05 08:00,2025-03-11 16:00,2025-02-05 08:00,2025-03-11 16:00,2025-10-13 08:00,2025-11-14 16:00,,PT_Normal,,,,,Z7EA4ZOgxEi7t2nXLkl+3A,ct6fHd/x60iZHttQcsQtVg,,,N,0,0,,,2023-02-08 18:30,2023-02-08 18:31,NotPrmUser,NotPrmUser,
141661,27170,55215,178,0,N,1,N,N,CP_Drtn,TT_Task,DT_FixedDUR2,TK_NotStart,ENV1010,10% Environmental Review,,1424,0,120,0,0,0,120,0,0,0,,,,2025-11-17 08:00,2025-12-05 16:00,,2025-03-12 08:00,2025-04-01 16:00,2025-03-12 08:00,2025-04-01 16:00,2025-03-12 08:00,2025-04-01 16:00,2025-11-17 08:00,2025-12-05 16:00,,PT_Normal,,,,,EVYmIUZCyUuEauJ+7J/e8g,VAEmKSeS/UWO0Xhs5TzTyQ,,,N,0,0,,,2023-02-08 18:30,2023-02-08 18:31,NotPrmUser,NotPrmUser,
141662,27170,55215,178,0,N,1,N,N,CP_Drtn,TT_Task,DT_FixedDUR2,TK_NotStart,ENV1020,30% Environmental Submittal,,1384,0,200,0,0,0,200,0,0,0,,,,2026-03-30 08:00,2026-05-01 16:00,,2025-07-30 08:00,2025-09-02 16:00,2025-07-30 08:00,2025-09-02 16:00,2025-07-30 08:00,2025-09-02 16:00,2026-03-30 08:00,2026-05-01 16:00,,PT_Normal,,,,,QEFS7nQprkiMhFNSV5QtbQ,6oZKHFAXMUiTkF875AcBAQ,,,N,0,0,,,2023-02-08 18:30,2023-02-08 18:31,NotPrmUser,NotPrmUser,
141663,27170,55215,178,0,N,1,N,N,CP_Drtn,TT_Task,DT_FixedDUR2,TK_NotStart,ENV1030,30% Environmental Review,,1384,0,120,0,0,0,120,0,0,0,,,,2026-05-04 08:00,2026-05-22 16:00,,2025-09-03 08:00,2025-09-23 16:00,2025-09-03 08:00,2025-09-23 16:00,2025-09-03 08:00,2025-09-23 16:00,2026-05-04 08:00,2026-05-22 16:00,,PT_Normal,,,,,F2OmQMN7V0q7Fkv/xwMBtw,CnIzILo/4027GRHJiB+NZg,,,N,0,0,,,2023-02-08 18:30,2023-02-08 18:31,NotPrmUser,NotPrmUser,
141664,27170,55215,178,0,N,1,N,N,CP_Drtn,TT_Task,DT_FixedDUR2,TK_NotStart,ENV1040,60% Environmental Submittal,,1384,0,280,0,0,0,280,0,0,0,,,,2026-05-25 08:00,2026-07-10 16:00,,2025-09-24 08:00,2025-11-11 16:00,2025-09-24 08:00,2025-11-11 16:00,2025-09-24 08:00,2025-11-11 16:00,2026-05-25 08:00,2026-07-10 16:00,,PT_Normal,,,,,CPpLD4WsW0iVk6DpJiOMCg,M8x5x//MZ0GAlNKeRVpmZg,,,N,0,0,,,2023-02-08 18:30,2023-02-08 18:31,NotPrmUser,NotPrmUser,
141665,27170,55215,178,0,N,1,N,N,CP_Drtn,TT_Task,DT_FixedDUR2,TK_NotStart,ENV1050,60% Environmental Release,,1504,1504,120,0,0,0,120,0,0,0,,,,2026-08-03 08:00,2026-08-21 16:00,,2025-11-12 08:00,2025-12-02 16:00,2025-11-12 08:00,2025-12-02 16:00,2025-11-12 08:00,2025-12-02 16:00,2026-08-03 08:00,2026-08-21 16:00,,PT_Normal,,,,,oWV4dtmC1E2RjvfPhEV4/w,7bk+sXRTA0eqeL5NQSVxYw,,,N,0,0,,,2023-02-08 18:30,2023-02-08 18:31,NotPrmUser,NotPrmUser,
141666,27170,55215,178,0,N,1,N,N,CP_Drtn,TT_Task,DT_FixedDUR2,TK_NotStart,ENV1060,BIA NEPA Submittal,,1384,0,80,0,0,0,80,0,0,0,,,,2026-07-13 08:00,2026-07-24 16:00,,2025-11-12 08:00,2025-11-25 16:00,2025-11-12 08:00,2025-11-25 16:00,2025-11-12 08:00,2025-11-25 16:00,2026-07-13 08:00,2026-07-24 16:00,,PT_Normal,,,,,PeWDJZm9DUai5o33EUPf6g,DWRbV70sPUimgLjtOynu8Q,,,N,0,0,,,2023-02-08 18:30,2023-02-08 18:31,NotPrmUser,NotPrmUser,
141667,27170,55215,178,0,N,1,N,N,CP_Drtn,TT_Task,DT_FixedDUR2,TK_NotStart,ENV1070,"BIA Received (Add 250 days, if needed)",,1384,1384,160,0,0,0,160,0,0,0,,,,2026-07-27 08:00,2026-08-21 16:00,,2025-11-26 08:00,2025-12-23 16:00,2025-11-26 08:00,2025-12-23 16:00,2025-11-26 08:00,2025-12-23 16:00,2026-07-27 08:00,2026-08-21 16:00,,PT_Normal,,,,,zebPhZYkAUmqTfpfiGx0/A,swWtN2EgnkWBLcLS9xMIog,,,N,0,0,,,2023-02-08 18:30,2023-02-08 18:31,NotPrmUser,NotPrmUser,
141668,27170,55205,178,0,N,1,N,N,CP_Drtn,TT_Task,DT_FixedDUR2,TK_NotStart,DES1010,Seismic / Geotech Submittal,,1424,0,200,0,0,0,200,0,0,0,,,,2025-12-08 08:00,2026-01-09 16:00,,2025-04-02 08:00,2025-05-06 16:00,2025-04-02 08:00,2025-05-06 16:00,2025-04-02 08:00,2025-05-06 16:00,2025-12-08 08:00,2026-01-09 16:00,,PT_Normal,,,,,22dq/X7k/kuYMqEPs3cI9Q,GZUMJVEZZkGvFQFVwM/xgQ,,,N,0,0,,,2023-02-08 18:30,2023-02-08 18:31,NotPrmUser,NotPrmUser,
141669,27170,55205,178,0,N,1,N,N,CP_Drtn,TT_Task,DT_FixedDUR2,TK_NotStart,DES1020,Potholing Submittal,,1424,40,200,0,0,0,200,0,0,0,,,,2026-01-12 08:00,2026-02-13 16:00,,2025-05-07 08:00,2025-06-10 16:00,2025-05-07 08:00,2025-06-10 16:00,2025-05-07 08:00,2025-06-10 16:00,2026-01-12 08:00,2026-02-13 16:00,,PT_Normal,,,,,Mnn/Dwq6L0+dRuTARJ0ZEw,IPjX5viry0miB/yWuGWxmQ,,,N,0,0,,,2023-02-08 18:30,2023-02-08 18:31,NotPrmUser,NotPrmUser,
141670,27170,55205,178,0,N,1,N,N,CP_Drtn,TT_Task,DT_FixedDUR2,TK_NotStart,DES1030,Potholing Release /Perform Potholing,,1384,0,240,0,0,0,240,0,0,0,,,,2026-02-16 08:00,2026-03-27 16:00,,2025-06-18 08:00,2025-07-29 16:00,2025-06-18 08:00,2025-07-29 16:00,2025-06-18 08:00,2025-07-29 16:00,2026-02-16 08:00,2026-03-27 16:00,,PT_Normal,,,,,O53kxJifhkKgVObNwVbhYA,oPueRS0J6Ei1FmiXWpeJ3g,,,N,0,0,,,2023-02-08 18:30,2023-02-08 18:31,NotPrmUser,NotPrmUser,
141671,27170,55217,178,0,N,1,N,N,CP_Drtn,TT_Task,DT_FixedDUR2,TK_NotStart,PCON100,Initiate Performance Partnering Process @ 60%,,1544,0,40,0,0,0,40,0,0,0,,,,2026-06-22 08:00,2026-06-26 16:00,,2025-09-24 08:00,2025-09-30 16:00,2025-09-24 08:00,2025-09-30 16:00,2025-09-24 08:00,2025-09-30 16:00,2026-06-22 08:00,2026-06-26 16:00,,PT_Normal,,,,,UZtG7IIvaUCvMm4FzidFAw,dRJEbQn7+0yQ7l7JwefyBw,,,N,0,0,,,2023-02-08 18:30,2023-02-08 18:31,NotPrmUser,NotPrmUser,
141672,27170,55217,178,0,N,1,N,N,CP_Drtn,TT_Task,DT_FixedDUR2,TK_NotStart,PCON110,Receive Estimate from Contractor,,1544,0,120,0,0,0,120,0,0,0,,,,2026-06-29 08:00,2026-07-17 16:00,,2025-10-01 08:00,2025-10-21 16:00,2025-10-01 08:00,2025-10-21 16:00,2025-10-01 08:00,2025-10-21 16:00,2026-06-29 08:00,2026-07-17 16:00,,PT_Normal,,,,,QhVYnrCpl0KOdOLcPYxWjg,OkA96d77bkKzJZqQgOyN3A,,,N,0,0,,,2023-02-08 18:30,2023-02-08 18:31,NotPrmUser,NotPrmUser,
141673,27170,55217,178,0,N,1,N,N,CP_Drtn,TT_Task,DT_FixedDUR2,TK_NotStart,PCON120,Bid Estimate Negotiations,,1544,0,80,0,0,0,80,0,0,0,,,,2026-07-20 08:00,2026-07-31 16:00,,2025-10-22 08:00,2025-11-04 16:00,2025-10-22 08:00,2025-11-04 16:00,2025-10-22 08:00,2025-11-04 16:00,2026-07-20 08:00,2026-07-31 16:00,,PT_Normal,,,,,2d4+1rCiTEaN7Wz5ywLj7A,1iaE/lA6ykOSC5w4sIhYxA,,,N,0,0,,,2023-02-08 18:30,2023-02-08 18:31,NotPrmUser,NotPrmUser,
141674,27170,55217,178,0,N,1,N,N,CP_Drtn,TT_Task,DT_FixedDUR2,TK_NotStart,PCON130,Revise Estimate based on IFC,,1544,0,40,0,0,0,40,0,0,0,,,,2026-08-03 08:00,2026-08-07 16:00,,2025-11-05 08:00,2025-11-11 16:00,2025-11-05 08:00,2025-11-11 16:00,2025-11-05 08:00,2025-11-11 16:00,2026-08-03 08:00,2026-08-07 16:00,,PT_Normal,,,,,YuBZRmdu9kynLm1VY89gVw,7r7TupTCWEqPmulxTX+dnw,,,N,0,0,,,2023-02-08 18:30,2023-02-08 18:31,NotPrmUser,NotPrmUser,
141675,27170,55217,178,0,N,1,N,N,CP_Drtn,TT_Task,DT_FixedDUR2,TK_NotStart,PCON140,Issue Release,,1544,1544,80,0,0,0,80,0,0,0,,,,2026-08-10 08:00,2026-08-21 16:00,,2025-11-12 08:00,2025-11-25 16:00,2025-11-12 08:00,2025-11-25 16:00,2025-11-12 08:00,2025-11-25 16:00,2026-08-10 08:00,2026-08-21 16:00,,PT_Normal,,,,,5uPY7/HW30KoiDjuUKzZ9w,PpqflDeaO0uKBMSdbV26KA,,,N,0,0,,,2023-02-08 18:30,2023-02-08 18:31,NotPrmUser,NotPrmUser,
141676,27170,55219,178,0,N,1,N,N,CP_Drtn,TT_Task,DT_FixedDUR2,TK_NotStart,PCON200,Civil Pre-Construction Meeting (Civil Construction Ready),,0,0,40,0,0,0,40,0,0,0,2026-08-24 00:00,,,2026-08-24 08:00,2026-08-28 16:00,,2026-08-24 08:00,2026-08-28 16:00,2026-08-24 08:00,2026-08-28 16:00,2026-08-24 08:00,2026-08-28 16:00,2026-08-24 08:00,2026-08-28 16:00,CS_MSOA,PT_Normal,,,,,hCiW2JfidEKHBVfQH0/79g,AXm3wh8XD0mveUCKlyBd2A,,,Y,0,0,,,2023-02-08 18:30,2023-02-08 18:31,NotPrmUser,NotPrmUser,
141677,27170,55219,178,0,N,1,N,N,CP_Drtn,TT_Task,DT_FixedDUR2,TK_NotStart,PCON210,Electrical - Pre-Construction Meeting (Electical Construction Ready),,240,0,40,0,0,0,40,0,0,0,2026-08-24 00:00,,,2026-10-05 08:00,2026-10-09 16:00,,2026-08-24 08:00,2026-08-28 16:00,2026-08-24 08:00,2026-08-28 16:00,2026-08-24 08:00,2026-08-28 16:00,2026-10-05 08:00,2026-10-09 16:00,CS_MSOA,PT_Normal,,,,,Th+gpRKuZk+95GYbS0KtZw,qGtLMlVIiE2n2jxFAnOCfQ,,,N,0,0,,,2023-02-08 18:30,2023-02-08 18:31,NotPrmUser,NotPrmUser,
141678,27170,55218,178,0,N,1,N,N,CP_Drtn,TT_Task,DT_FixedDUR2,TK_NotStart,PCON150,Initiate Performance Partnering Process @ 60%,,2024,0,40,0,0,0,40,0,0,0,,,,2026-08-03 08:00,2026-08-07 16:00,,2025-08-13 08:00,2025-08-19 16:00,2025-08-13 08:00,2025-08-19 16:00,2025-08-13 08:00,2025-08-19 16:00,2026-08-03 08:00,2026-08-07 16:00,,PT_Normal,,,,,gB4BjwzIpkCAvC4RqLEqWg,OM8hpAOS0EaXe0kbYlplDA,,,N,0,0,,,2023-02-08 18:30,2023-02-08 18:31,NotPrmUser,NotPrmUser,
141679,27170,55218,178,0,N,1,N,N,CP_Drtn,TT_Task,DT_FixedDUR2,TK_NotStart,PCON160,Receive Estimate from Contractor,,2024,0,120,0,0,0,120,0,0,0,,,,2026-08-10 08:00,2026-08-28 16:00,,2025-08-20 08:00,2025-09-09 16:00,2025-08-20 08:00,2025-09-09 16:00,2025-08-20 08:00,2025-09-09 16:00,2026-08-10 08:00,2026-08-28 16:00,,PT_Normal,,,,,aQBel4FO8k65UjAX89gMOw,Q0QScEaI40OLzGZJjGMlJg,,,N,0,0,,,2023-02-08 18:30,2023-02-08 18:31,NotPrmUser,NotPrmUser,
141680,27170,55218,178,0,N,1,N,N,CP_Drtn,TT_Task,DT_FixedDUR2,TK_NotStart,PCON170,Bid Estimate Negotiations,,2024,0,80,0,0,0,80,0,0,0,,,,2026-08-31 08:00,2026-09-11 16:00,,2025-09-10 08:00,2025-09-23 16:00,2025-09-10 08:00,2025-09-23 16:00,2025-09-10 08:00,2025-09-23 16:00,2026-08-31 08:00,2026-09-11 16:00,,PT_Normal,,,,,ShLsQYMQxE6bwrKyby5bBQ,wY+0p5sfK0y0J3+qja/Xhw,,,N,0,0,,,2023-02-08 18:30,2023-02-08 18:31,NotPrmUser,NotPrmUser,
141681,27170,55218,178,0,N,1,N,N,CP_Drtn,TT_Task,DT_FixedDUR2,TK_NotStart,PCON180,Revise Estimate based on IFC,,2024,0,40,0,0,0,40,0,0,0,,,,2026-09-14 08:00,2026-09-18 16:00,,2025-09-24 08:00,2025-09-30 16:00,2025-09-24 08:00,2025-09-30 16:00,2025-09-24 08:00,2025-09-30 16:00,2026-09-14 08:00,2026-09-18 16:00,,PT_Normal,,,,,dL+AWv1In0KzyPWkph/8gQ,v74xxuPWnkGHaHmH4kzRMw,,,N,0,0,,,2023-02-08 18:30,2023-02-08 18:31,NotPrmUser,NotPrmUser,
141682,27170,55218,178,0,N,1,N,N,CP_Drtn,TT_Task,DT_FixedDUR2,TK_NotStart,PCON190,Issue Release,,2024,1784,80,0,0,0,80,0,0,0,,,,2026-09-21 08:00,2026-10-02 16:00,,2025-10-01 08:00,2025-10-14 16:00,2025-10-01 08:00,2025-10-14 16:00,2025-10-01 08:00,2025-10-14 16:00,2026-09-21 08:00,2026-10-02 16:00,,PT_Normal,,,,,H6Xi9m9R/kacfmrgpai8Lg,F+7jTLAHU02uON8FJOc5qg,,,N,0,0,,,2023-02-08 18:30,2023-02-08 18:31,NotPrmUser,NotPrmUser,
141683,27170,55211,178,0,N,1,N,N,CP_Drtn,TT_Task,DT_FixedDUR2,TK_NotStart,PRO1010,Order Long Lead Civil Material,,1224,1224,1200,0,0,0,1200,0,0,0,,,,2026-01-26 08:00,2026-08-21 16:00,,2025-06-25 08:00,2026-01-20 16:00,2025-06-25 08:00,2026-01-20 16:00,2025-06-25 08:00,2026-01-20 16:00,2026-01-26 08:00,2026-08-21 16:00,,PT_Normal,,,,,MgssqFLYRECxzAWQgVJTEg,ZZJVhCky6EO5yznKWNjyTw,,,N,0,0,,,2023-02-08 18:30,2023-02-08 18:31,NotPrmUser,NotPrmUser,
141684,27170,55211,178,0,N,1,N,N,CP_Drtn,TT_Task,DT_FixedDUR2,TK_NotStart,PRO1050,Order Short Lead Materials,,1144,1144,200,0,0,0,200,0,0,0,,,,2026-07-20 08:00,2026-08-21 16:00,,2025-12-31 08:00,2026-02-03 16:00,2025-12-31 08:00,2026-02-03 16:00,2025-12-31 08:00,2026-02-03 16:00,2026-07-20 08:00,2026-08-21 16:00,,PT_Normal,,,,,ha1VVUSqkECbDFNJj2fY9w,zyUObf5ffU63LpIyPfAnLA,,,N,0,0,,,2023-02-08 18:30,2023-02-08 18:31,NotPrmUser,NotPrmUser,
141685,27170,55211,178,0,N,1,N,N,CP_Drtn,TT_Task,DT_FixedDUR2,TK_NotStart,PRO1030,Order Long Lead Electrical Materials,,1464,1224,800,0,0,0,800,0,0,0,,,,2026-05-18 08:00,2026-10-02 16:00,,2025-09-03 08:00,2026-01-20 16:00,2025-09-03 08:00,2026-01-20 16:00,2025-09-03 08:00,2026-01-20 16:00,2026-05-18 08:00,2026-10-02 16:00,,PT_Normal,,,,,qqnOm6Nb00aSM7puUVpF1A,eEwLL0Y20UmHiOPEP8yERQ,,,N,0,0,,,2023-02-08 18:30,2023-02-08 18:31,NotPrmUser,NotPrmUser,
141686,27170,55221,178,0,N,1,N,N,CP_Drtn,TT_Task,DT_FixedDUR2,TK_NotStart,CON2000,Civil Construction (Trenching 300 feet/day),7730,0,0,3520,0,14248,14248,3520,0,0,0,,,,2026-08-31 08:00,2028-05-05 16:00,,2026-08-31 08:00,2028-05-05 16:00,2026-08-31 08:00,2028-05-05 16:00,2026-08-31 08:00,2028-05-05 16:00,2026-08-31 08:00,2028-05-05 16:00,,PT_Normal,,,,,DT+etUJNcEqZ9QX0BUBkhg,K8MMKFChGkm9wxEMueca8A,,,Y,0,0,,,2023-02-08 18:30,2023-02-08 18:38,NotPrmUser,NotPrmUser,
141687,27170,55222,178,0,N,1,N,N,CP_Drtn,TT_Task,DT_FixedDUR2,TK_NotStart,CON3000,Electrical Construction,7786,0,0,3280,0,1640,1640,3280,0,0,0,,,,2026-10-12 08:00,2028-05-05 16:00,,2026-10-12 08:00,2028-05-05 16:00,2026-10-12 08:00,2028-05-05 16:00,2026-10-12 08:00,2028-05-05 16:00,2026-10-12 08:00,2028-05-05 16:00,,PT_Normal,,,,,Cth17MSw1ESobFD41/Ivfw,sZDbZ/+L3kaiAXE7aopLrA,,,Y,0,0,,,2023-02-08 18:30,2023-02-08 19:37,NotPrmUser,NotPrmUser,
141688,27170,55223,178,0,N,1,N,N,CP_Drtn,TT_Task,DT_FixedDUR2,TK_NotStart,CON4000,Service Cutover,,1056,0,2920,0,0,0,2920,0,0,0,,,,2027-06-16 08:00,2028-11-07 16:00,,2026-12-14 08:00,2028-05-05 16:00,2026-12-14 08:00,2028-05-05 16:00,2026-12-14 08:00,2028-05-05 16:00,2027-06-16 08:00,2028-11-07 16:00,,PT_Normal,,,,,rJOaAwfo6kmZK9sTsBjorg,GstZrm2DpkC2ccloO05WVg,,,N,0,0,,,2023-02-08 18:30,2023-02-08 18:31,NotPrmUser,NotPrmUser,
141689,27170,55224,178,0,N,1,N,N,CP_Drtn,TT_Task,DT_FixedDUR2,TK_NotStart,CON5000,Scada Construction,,1056,0,520,0,0,0,520,0,0,0,,,,2028-08-09 08:00,2028-11-07 16:00,,2028-02-07 08:00,2028-05-05 16:00,2028-02-07 08:00,2028-05-05 16:00,2028-02-07 08:00,2028-05-05 16:00,2028-08-09 08:00,2028-11-07 16:00,,PT_Normal,,,,,LpSZrOHOW0+XZJ9dhmmmbg,kmvxpQ0We0CokFRa8+HiGg,,,N,0,0,,,2023-02-08 18:30,2023-02-08 18:31,NotPrmUser,NotPrmUser,
141690,27170,55225,178,0,N,1,N,N,CP_Drtn,TT_Task,DT_FixedDUR2,TK_NotStart,CON6000,Substation Construction,,1056,0,520,0,0,0,520,0,0,0,,,,2028-08-09 08:00,2028-11-07 16:00,,2028-02-07 08:00,2028-05-05 16:00,2028-02-07 08:00,2028-05-05 16:00,2028-02-07 08:00,2028-05-05 16:00,2028-08-09 08:00,2028-11-07 16:00,,PT_Normal,,,,,nveMB8cEqEqdd1M0G6Hm1Q,4N6KfrJKlk6bfqYfeG0lJQ,,,N,0,0,,,2023-02-08 18:30,2023-02-08 18:31,NotPrmUser,NotPrmUser,
141691,27170,55226,178,0,N,1,N,N,CP_Drtn,TT_Task,DT_FixedDrtn,TK_NotStart,CON7000,Overhead RFS (1000 feet per day),7785,0,0,1056,0,1056,1056,1056,0,0,0,,,,2028-05-08 08:00,2028-11-07 16:00,,2028-05-08 08:00,2028-11-07 16:00,2028-05-08 08:00,2028-11-07 16:00,2028-05-08 08:00,2028-11-07 16:00,2028-05-08 08:00,2028-11-07 16:00,,PT_Normal,,,,,O745JHP9WEOVPsPQ078Izw,VAjpGRV2c0+aNfugzXnPsg,,,Y,0,0,,,2023-02-08 18:30,2023-02-08 18:31,NotPrmUser,NotPrmUser,
141692,27170,55220,178,0,N,1,N,N,CP_Drtn,TT_Task,DT_FixedDUR2,TK_NotStart,ISD1000,ISD - Energize - Put in service,,2008,2008,8,0,0,0,8,25,0,25,,,,2029-04-24 08:00,2029-04-24 16:00,,2028-05-08 08:00,2028-05-08 16:00,2028-05-08 08:00,2028-05-08 16:00,2028-05-08 08:00,2028-05-08 16:00,2029-04-24 08:00,2029-04-24 16:00,,PT_Normal,,,,,Gi2b390GX0eutz16SvhCxg,iW+OvD19+EumtpjJFxhjxw,,,N,0,0,,,2023-02-08 18:30,2023-02-08 18:31,NotPrmUser,NotPrmUser,
141693,27170,55203,178,0,N,1,N,N,CP_Drtn,TT_Task,DT_FixedDUR2,TK_NotStart,SUR1000,Survey and LiDAR,7385,544,0,400,0,9182,9182,400,0,0,0,,,,2025-03-03 08:00,2025-05-09 16:00,,2024-11-27 08:00,2025-02-04 16:00,2024-11-27 08:00,2025-02-04 16:00,2024-11-27 08:00,2025-02-04 16:00,2025-03-03 08:00,2025-05-09 16:00,,PT_Normal,,,,,UFXuHdwvQkmB5euc9Rxw9w,nV0IG4OsakOWJQKRciOgPA,,,N,0,0,,,2023-02-08 18:30,2023-02-08 18:31,NotPrmUser,NotPrmUser,
141694,27170,55208,178,0,N,1,N,N,CP_Drtn,TT_Task,DT_FixedDUR2,TK_NotStart,DES1200,Receive Services Worksheet and Cable Info from Design Firms,,1304,0,160,0,0,0,160,0,0,0,,,,2025-11-24 08:00,2025-12-19 16:00,,2025-04-09 08:00,2025-05-06 16:00,2025-04-09 08:00,2025-05-06 16:00,2025-04-09 08:00,2025-05-06 16:00,2025-11-24 08:00,2025-12-19 16:00,,PT_Normal,,,,,FuMyhmCyMUO1HaAb4Df7Nw,pz8cU8kS4kGgW4LcDWOOOA,,,N,0,0,,,2023-02-08 18:30,2023-02-08 18:31,NotPrmUser,NotPrmUser,
141695,27170,55208,178,0,N,1,N,N,CP_Drtn,TT_Task,DT_FixedDUR2,TK_NotStart,DES1210,Issue to Trench Inspectors,,2920,1864,80,0,0,0,80,0,0,0,,,,2027-06-02 08:00,2027-06-15 16:00,,2026-01-07 08:00,2026-01-20 16:00,2026-01-07 08:00,2026-01-20 16:00,2026-01-07 08:00,2026-01-20 16:00,2027-06-02 08:00,2027-06-15 16:00,,PT_Normal,,,,,so/6UB6FakK4cGrBIxnbLg,cSUBBLLFfUWHDur3m3cvoA,,,N,0,0,,,2023-02-08 18:30,2023-02-08 18:31,NotPrmUser,NotPrmUser,
141696,27170,55220,178,0,N,1,N,N,CP_Drtn,TT_FinMile,DT_FixedDrtn,TK_NotStart,CON1020,Construction Complete,,0,0,0,0,0,0,0,0,0,0,,,,2028-11-07 16:00,2028-11-07 16:00,,2028-11-07 16:00,2028-11-07 16:00,2028-11-07 16:00,2028-11-07 16:00,2028-11-07 16:00,2028-11-07 16:00,2028-11-07 16:00,2028-11-07 16:00,,PT_Normal,,,,,chXa9lsOy02d9Fwk+6ipjg,c9TAJt9kAkSolF6S4tPsRg,,,Y,0,0,,,2023-02-08 18:30,2023-02-08 18:31,NotPrmUser,NotPrmUser,
141697,27170,55220,178,0,N,1,N,N,CP_Drtn,TT_Mile,DT_FixedDrtn,TK_NotStart,CON1010,Construction Start,,5536,5536,0,0,0,0,0,0,0,0,,,,2029-04-24 16:00,2029-04-24 16:00,,2026-08-31 08:00,2026-08-31 08:00,2026-08-31 08:00,2026-08-31 08:00,2026-08-31 08:00,2026-08-31 08:00,2029-04-24 16:00,2029-04-24 16:00,,PT_Normal,,,,,qbIkbPRsoUqdnE6gUSqWAQ,zjL3Bxw/A0uNw51RwUAl4w,,,N,0,0,,,2023-02-08 18:30,2023-02-08 18:31,NotPrmUser,NotPrmUser,
141698,27170,55229,178,0,N,1,N,N,CP_Drtn,TT_Task,DT_FixedDUR2,TK_NotStart,CLO1020,GIS/As-Built and Records Complete,,480,480,480,0,0,0,480,0,0,0,,,,2029-01-31 08:00,2029-04-24 16:00,,2028-11-08 08:00,2029-01-30 16:00,2028-11-08 08:00,2029-01-30 16:00,2028-11-08 08:00,2029-01-30 16:00,2029-01-31 08:00,2029-04-24 16:00,,PT_Normal,,,,,FkB/Nc/m/U+amOrH/oRLkQ,/BjhiC9BT06SGfMCnJth3Q,,,N,0,0,,,2023-02-08 18:30,2023-02-08 18:31,NotPrmUser,NotPrmUser,
141699,27170,55230,178,0,N,1,N,N,CP_Drtn,TT_Task,DT_FixedDUR2,TK_NotStart,CLO1030,"PO's complete, Work Order Reconcilled and Closed",,0,0,960,0,0,0,960,0,0,0,,,,2028-11-08 08:00,2029-04-24 16:00,,2028-11-08 08:00,2029-04-24 16:00,2028-11-08 08:00,2029-04-24 16:00,2028-11-08 08:00,2029-04-24 16:00,2028-11-08 08:00,2029-04-24 16:00,,PT_Normal,,,,,vVFXlrEFy0mcnmVbGD1ErA,626ZG3fdpEy/ZqMzot4XAw,,,Y,0,0,,,2023-02-08 18:30,2023-02-08 18:31,NotPrmUser,NotPrmUser,
141700,27170,55228,178,0,N,1,N,N,CP_Drtn,TT_FinMile,DT_FixedDrtn,TK_NotStart,CLO1010,Project Complete,,0,0,0,0,0,0,0,0,0,0,,,,2029-04-24 16:00,2029-04-24 16:00,,2029-04-24 16:00,2029-04-24 16:00,2029-04-24 16:00,2029-04-24 16:00,2029-04-24 16:00,2029-04-24 16:00,2029-04-24 16:00,2029-04-24 16:00,,PT_Normal,,,,,wIkHQRaOv0qWsRDXmE+h8w,LfHwfqQj90mDh8TxpE5/hQ,,,Y,0,0,,,2023-02-08 18:30,2023-02-08 18:31,NotPrmUser,NotPrmUser,
141701,27170,55204,178,0,N,1,N,N,CP_Drtn,TT_LOE,DT_FixedDUR2,TK_NotStart,DES1000,Design Summary,7257,4640,0,2680,0,16233,16233,2680,0,0,0,,,,2025-05-12 08:00,2028-08-08 16:00,,2025-02-05 08:00,2026-05-19 16:00,2025-02-05 08:00,2026-05-19 16:00,2025-02-05 08:00,2026-05-19 16:00,2025-05-12 08:00,2028-08-08 16:00,,PT_Normal,,,,,P5uW32zuHkSpfc55BbJ19A,J6XjnvsUeEyMzn3LuyC5cQ,,,N,0,0,,,2023-02-08 18:30,2023-02-08 18:31,NotPrmUser,NotPrmUser,
141702,27170,55220,178,0,N,1,N,N,CP_Drtn,TT_LOE,DT_FixedDUR2,TK_NotStart,CON1000,Construction Summary,7385,0,0,4576,0,9972,9972,4576,25,0,25,,,,2028-11-07 16:00,2028-11-07 16:00,,2026-08-31 08:00,2028-11-07 16:00,2026-08-31 08:00,2028-11-07 16:00,2026-08-31 08:00,2028-11-07 16:00,2028-11-07 16:00,2028-11-07 16:00,,PT_Normal,,,,,5qhAFGZ0gUiVg5g2RR3ulg,XR64sZnQuEqNUTgw4kkp6w,,,N,0,0,,,2023-02-08 18:30,2023-02-08 18:31,NotPrmUser,NotPrmUser,
141703,27170,55228,178,0,N,1,N,N,CP_Drtn,TT_LOE,DT_FixedDUR2,TK_NotStart,CLO1000,Close Out Summary,7385,0,0,960,0,4482,4482,960,0,0,0,,,,2028-11-08 08:00,2029-04-24 16:00,,2028-11-08 08:00,2029-04-24 16:00,2028-11-08 08:00,2029-04-24 16:00,2028-11-08 08:00,2029-04-24 16:00,2028-11-08 08:00,2029-04-24 16:00,,PT_Normal,,,,,EQxyCHsdgkG4pcQwgNwIjA,L/rAROB6YEmU7ONCdeDFBA,,,Y,0,0,,,2023-02-08 18:30,2023-02-08 18:31,NotPrmUser,NotPrmUser,
141704,27170,55201,178,0,N,1,N,N,CP_Drtn,TT_LOE,DT_FixedDUR2,TK_NotStart,PCON1000,Pre-Construction Summary,,0,0,3840,0,0,0,3840,0,0,0,,,,2025-01-30 08:00,2026-08-28 16:00,,2024-10-28 08:00,2026-08-28 16:00,2024-10-28 08:00,2026-08-28 16:00,2024-10-28 08:00,2026-08-28 16:00,2025-01-30 08:00,2026-08-28 16:00,,PT_Normal,,,,,echWN8Sx+0ugdIdidyFu+g,jn1XIkpXEEuSzrv2L+P5eQ,,,Y,0,0,,,2023-02-08 18:30,2023-02-08 18:31,NotPrmUser,NotPrmUser,
141705,27171,54992,178,0,N,1,N,N,CP_Drtn,TT_Task,DT_FixedDUR2,TK_NotStart,SCO1000,Bundling / Phasing of circuits for project sequencing,,0,0,80,0,0,0,80,0,0,0,2024-04-01 00:00,,,2024-04-01 08:00,2024-04-12 16:00,,2024-04-01 08:00,2024-04-12 16:00,2024-04-01 08:00,2024-04-12 16:00,2024-04-01 08:00,2024-04-12 16:00,2024-04-01 08:00,2024-04-12 16:00,CS_MSOA,PT_Normal,,,,,RA5vXoHCGEKlsTevvSB0Xg,P4HYajzd1E2EaB4uEI0M6A,,,Y,0,0,,,2023-02-08 18:30,2023-02-08 18:31,NotPrmUser,NotPrmUser,
141706,27171,54992,178,0,N,1,N,N,CP_Drtn,TT_Task,DT_FixedDUR2,TK_NotStart,SCO1010,Constructability Review,,0,0,40,0,0,0,40,0,0,0,,,,2024-04-15 08:00,2024-04-19 16:00,,2024-04-15 08:00,2024-04-19 16:00,2024-04-15 08:00,2024-04-19 16:00,2024-04-15 08:00,2024-04-19 16:00,2024-04-15 08:00,2024-04-19 16:00,,PT_Normal,,,,,CO2OYBeWL0eo84D/FtV8LQ,zCsmINRKLkiMvTvryvOfDQ,,,Y,0,0,,,2023-02-08 18:30,2023-02-08 18:31,NotPrmUser,NotPrmUser,
141707,27171,54992,178,0,N,1,N,N,CP_Drtn,TT_Task,DT_FixedDUR2,TK_NotStart,SCO1020,SDG&E Review,,0,0,16,0,0,0,16,0,0,0,,,,2024-04-22 08:00,2024-04-23 16:00,,2024-04-22 08:00,2024-04-23 16:00,2024-04-22 08:00,2024-04-23 16:00,2024-04-22 08:00,2024-04-23 16:00,2024-04-22 08:00,2024-04-23 16:00,,PT_Normal,,,,,LJhDn+2nDUuUM6tnDRJsvg,EM7qf6fHxUqRmdS0FkSJ7g,,,Y,0,0,,,2023-02-08 18:30,2023-02-08 18:31,NotPrmUser,NotPrmUser,
141708,27171,54993,178,0,N,1,N,N,CP_Drtn,TT_Task,DT_FixedDUR2,TK_NotStart,PLA1000,Workorder Setup,,0,0,40,0,0,0,40,0,0,0,,,,2024-04-24 08:00,2024-04-30 16:00,,2024-04-24 08:00,2024-04-30 16:00,2024-04-24 08:00,2024-04-30 16:00,2024-04-24 08:00,2024-04-30 16:00,2024-04-24 08:00,2024-04-30 16:00,,PT_Normal,,,,,XjKNf1PoNUmFdR2qYsdxlg,McbhbJ99fEOQDSBQIxC5mQ,,,Y,0,0,,,2023-02-08 18:30,2023-02-08 18:31,NotPrmUser,NotPrmUser,
141709,27171,54996,178,0,N,1,N,N,CP_Drtn,TT_Task,DT_FixedDUR2,TK_NotStart,DES1040,10% Submittal,,0,0,200,0,0,0,200,0,0,0,,,,2024-07-10 08:00,2024-08-13 16:00,,2024-07-10 08:00,2024-08-13 16:00,2024-07-10 08:00,2024-08-13 16:00,2024-07-10 08:00,2024-08-13 16:00,2024-07-10 08:00,2024-08-13 16:00,,PT_Normal,,,,,l65cMfszrUORJj4F6htLkA,Y6Gu6stnmEG6hi5rTv/Bpw,,,Y,0,0,,,2023-02-08 18:30,2023-02-08 18:31,NotPrmUser,NotPrmUser,
141710,27171,54996,178,0,N,1,N,N,CP_Drtn,TT_Task,DT_FixedDUR2,TK_NotStart,DES1050,30% Submittal,,0,0,400,0,0,0,400,0,0,0,,,,2024-08-14 08:00,2024-10-22 16:00,,2024-08-14 08:00,2024-10-22 16:00,2024-08-14 08:00,2024-10-22 16:00,2024-08-14 08:00,2024-10-22 16:00,2024-08-14 08:00,2024-10-22 16:00,,PT_Normal,,,,,D+6un4Ae20C16V/G69VO9g,JFQksAaih0KmNTu3JfSS7A,,,Y,0,0,,,2023-02-08 18:30,2023-02-08 18:31,NotPrmUser,NotPrmUser,
141711,27171,54996,178,0,N,1,N,N,CP_Drtn,TT_Task,DT_FixedDUR2,TK_NotStart,DES1060,30% Review,,0,0,80,0,0,0,80,0,0,0,,,,2024-10-23 08:00,2024-11-05 16:00,,2024-10-23 08:00,2024-11-05 16:00,2024-10-23 08:00,2024-11-05 16:00,2024-10-23 08:00,2024-11-05 16:00,2024-10-23 08:00,2024-11-05 16:00,,PT_Normal,,,,,S5f2jFetOUaDPvH+otkM4w,0J4451P7jkqb0vQZm8RRFw,,,Y,0,0,,,2023-02-08 18:30,2023-02-08 18:31,NotPrmUser,NotPrmUser,
141712,27171,54996,178,0,N,1,N,N,CP_Drtn,TT_Task,DT_FixedDUR2,TK_NotStart,DES1070,60% Submittal,,600,0,560,0,0,0,560,0,0,0,,,,2025-02-19 08:00,2025-05-27 16:00,,2024-11-06 08:00,2025-02-11 16:00,2024-11-06 08:00,2025-02-11 16:00,2024-11-06 08:00,2025-02-11 16:00,2025-02-19 08:00,2025-05-27 16:00,,PT_Normal,,,,,jCAM3baQ1k+3HXtFXWiVPg,A4FcVz8kUkuxDS2Ed8/u/g,,,N,0,0,,,2023-02-08 18:30,2023-02-08 18:31,NotPrmUser,NotPrmUser,
141713,27171,54996,178,0,N,1,N,N,CP_Drtn,TT_Task,DT_FixedDUR2,TK_NotStart,DES1080,60% Review,,600,0,80,0,0,0,80,0,0,0,,,,2025-05-28 08:00,2025-06-10 16:00,,2025-02-12 08:00,2025-02-25 16:00,2025-02-12 08:00,2025-02-25 16:00,2025-02-12 08:00,2025-02-25 16:00,2025-05-28 08:00,2025-06-10 16:00,,PT_Normal,,,,,d08u6Xh7fkabG1LveoZv1A,xJ/+mkrpdkqMq6GRa+XCpw,,,N,0,0,,,2023-02-08 18:30,2023-02-08 18:31,NotPrmUser,NotPrmUser,
141714,27171,54996,178,0,N,1,N,N,CP_Drtn,TT_Task,DT_FixedDUR2,TK_NotStart,DES1090,90% Submittal,,600,0,360,0,0,0,360,0,0,0,,,,2025-06-11 08:00,2025-08-12 16:00,,2025-02-26 08:00,2025-04-29 16:00,2025-02-26 08:00,2025-04-29 16:00,2025-02-26 08:00,2025-04-29 16:00,2025-06-11 08:00,2025-08-12 16:00,,PT_Normal,,,,,Lco+VqPWsUOEnb8AGtlX0Q,E2XDeXvd60SrJCS10AxTYQ,,,N,0,0,,,2023-02-08 18:30,2023-02-08 18:31,NotPrmUser,NotPrmUser,
141715,27171,54996,178,0,N,1,N,N,CP_Drtn,TT_Task,DT_FixedDUR2,TK_NotStart,DES1100,90% Review,,600,0,80,0,0,0,80,0,0,0,,,,2025-08-13 08:00,2025-08-26 16:00,,2025-04-30 08:00,2025-05-13 16:00,2025-04-30 08:00,2025-05-13 16:00,2025-04-30 08:00,2025-05-13 16:00,2025-08-13 08:00,2025-08-26 16:00,,PT_Normal,,,,,Wr4HT4sMlkaErKrGdOc52g,CF75JPvakEW/XXALNVIoPA,,,N,0,0,,,2023-02-08 18:30,2023-02-08 18:31,NotPrmUser,NotPrmUser,
141716,27171,54996,178,0,N,1,N,N,CP_Drtn,TT_Task,DT_FixedDUR2,TK_NotStart,DES1110,100% Submittal,,680,0,160,0,0,0,160,0,0,0,,,,2025-09-10 08:00,2025-10-07 16:00,,2025-05-14 08:00,2025-06-10 16:00,2025-05-14 08:00,2025-06-10 16:00,2025-05-14 08:00,2025-06-10 16:00,2025-09-10 08:00,2025-10-07 16:00,,PT_Normal,,,,,X2yLa3KD50Gwyt7X1TaD6A,YFT2fsURhkeU/6Vu/U/JvQ,,,N,0,0,,,2023-02-08 18:30,2023-02-08 18:31,NotPrmUser,NotPrmUser,
141717,27171,54996,178,0,N,1,N,N,CP_Drtn,TT_Task,DT_FixedDUR2,TK_NotStart,DES1120,Issue IFC Design Package,,0,0,80,0,0,0,80,0,0,0,,,,2025-10-08 08:00,2025-10-21 16:00,,2025-10-08 08:00,2025-10-21 16:00,2025-10-08 08:00,2025-10-21 16:00,2025-10-08 08:00,2025-10-21 16:00,2025-10-08 08:00,2025-10-21 16:00,,PT_Normal,,,,,SfP22nVQiEmmtVgmtZITig,cjNw9YCDyEiWSJKEQakAag,,,Y,0,0,,,2023-02-08 18:30,2023-02-08 18:31,NotPrmUser,NotPrmUser,
141718,27171,54997,178,0,N,1,N,N,CP_Drtn,TT_Task,DT_FixedDUR2,TK_NotStart,DES1130,60% Submittal,,840,0,480,0,0,0,480,0,0,0,,,,2025-03-05 08:00,2025-05-27 16:00,,2024-10-09 08:00,2024-12-31 16:00,2024-10-09 08:00,2024-12-31 16:00,2024-10-09 08:00,2024-12-31 16:00,2025-03-05 08:00,2025-05-27 16:00,,PT_Normal,,,,,TX3vcbnxaEOmh1FqQ2r8gw,m0kwr/8z7EK+jIjTtoQIrQ,,,N,0,0,,,2023-02-08 18:30,2023-02-08 18:31,NotPrmUser,NotPrmUser,
141719,27171,54997,178,0,N,1,N,N,CP_Drtn,TT_Task,DT_FixedDUR2,TK_NotStart,DES1140,60% Review,,920,0,80,0,0,0,80,0,0,0,,,,2025-06-11 08:00,2025-06-24 16:00,,2025-01-01 08:00,2025-01-14 16:00,2025-01-01 08:00,2025-01-14 16:00,2025-01-01 08:00,2025-01-14 16:00,2025-06-11 08:00,2025-06-24 16:00,,PT_Normal,,,,,C3TxFAIu+0+KsFCUISTKqA,Oe8oHIPmN0aYXB7nGajPNw,,,N,0,0,,,2023-02-08 18:30,2023-02-08 18:31,NotPrmUser,NotPrmUser,
141720,27171,54997,178,0,N,1,N,N,CP_Drtn,TT_Task,DT_FixedDUR2,TK_NotStart,DES1150,90% Submittal,,1120,0,400,0,0,0,400,0,0,0,,,,2025-07-30 08:00,2025-10-07 16:00,,2025-01-15 08:00,2025-03-25 16:00,2025-01-15 08:00,2025-03-25 16:00,2025-01-15 08:00,2025-03-25 16:00,2025-07-30 08:00,2025-10-07 16:00,,PT_Normal,,,,,tLjICgodhEy/cccgvUs3rA,hdxoWpVthUOHIkiQlgHoJw,,,N,0,0,,,2023-02-08 18:30,2023-02-08 18:31,NotPrmUser,NotPrmUser,
141721,27171,54997,178,0,N,1,N,N,CP_Drtn,TT_Task,DT_FixedDUR2,TK_NotStart,DES1160,90% Review,,1120,0,80,0,0,0,80,0,0,0,,,,2025-10-08 08:00,2025-10-21 16:00,,2025-03-26 08:00,2025-04-08 16:00,2025-03-26 08:00,2025-04-08 16:00,2025-03-26 08:00,2025-04-08 16:00,2025-10-08 08:00,2025-10-21 16:00,,PT_Normal,,,,,MRnPRjn/EEml/Op1omP39A,l6UW22nyMU6Gzm/mn5zzqg,,,N,0,0,,,2023-02-08 18:30,2023-02-08 18:31,NotPrmUser,NotPrmUser,
141722,27171,54997,178,0,N,1,N,N,CP_Drtn,TT_Task,DT_FixedDUR2,TK_NotStart,DES1170,100% Submittal,,1120,880,160,0,0,0,160,0,0,0,,,,2025-10-22 08:00,2025-11-18 16:00,,2025-04-09 08:00,2025-05-06 16:00,2025-04-09 08:00,2025-05-06 16:00,2025-04-09 08:00,2025-05-06 16:00,2025-10-22 08:00,2025-11-18 16:00,,PT_Normal,,,,,Uq0jl2RWgUWbM0KSYY6hxw,BuH82ITv6kymCwUWK/jsXg,,,N,0,0,,,2023-02-08 18:30,2023-02-08 18:31,NotPrmUser,NotPrmUser,
141723,27171,54997,178,0,N,1,N,N,CP_Drtn,TT_Task,DT_FixedDUR2,TK_NotStart,DES1180,Issue IFC Design Package,,240,0,80,0,0,0,80,0,0,0,,,,2025-11-19 08:00,2025-12-02 16:00,,2025-10-08 08:00,2025-10-21 16:00,2025-10-08 08:00,2025-10-21 16:00,2025-10-08 08:00,2025-10-21 16:00,2025-11-19 08:00,2025-12-02 16:00,,PT_Normal,,,,,td8ZgX9T+UOPfsQPuOwzkQ,Lr/5HHzK2ki3DObRuZUyDg,,,N,0,0,,,2023-02-08 18:30,2023-02-08 18:31,NotPrmUser,NotPrmUser,
141724,27171,54998,178,0,N,1,N,N,CP_Drtn,TT_Task,DT_FixedDUR2,TK_NotStart,DES1190,Issue Services Worksheet to Design Firms,,760,0,160,0,0,0,160,0,0,0,,,,2024-12-25 08:00,2025-01-21 16:00,,2024-08-14 08:00,2024-09-10 16:00,2024-08-14 08:00,2024-09-10 16:00,2024-08-14 08:00,2024-09-10 16:00,2024-12-25 08:00,2025-01-21 16:00,,PT_Normal,,,,,o1F/qtoFQkS8+y8+cu3B7g,R7/AQzfn6ECj5LdpGqF1sA,,,N,0,0,,,2023-02-08 18:30,2023-02-08 18:31,NotPrmUser,NotPrmUser,
141725,27171,54999,178,0,N,1,N,N,CP_Drtn,TT_Task,DT_FixedDUR2,TK_NotStart,DES1220,SED Design,,6376,0,240,0,0,0,240,0,0,0,,,,2027-07-30 08:00,2027-09-09 16:00,,2024-07-10 08:00,2024-08-20 16:00,2024-07-10 08:00,2024-08-20 16:00,2024-07-10 08:00,2024-08-20 16:00,2027-07-30 08:00,2027-09-09 16:00,,PT_Normal,,,,,/QuwmOjMp0yhOto8aR/pXg,n+QvW7BqzU+ZxAVoan6u8g,,,N,0,0,,,2023-02-08 18:30,2023-02-08 18:31,NotPrmUser,NotPrmUser,
141726,27171,54999,178,0,N,1,N,N,CP_Drtn,TT_Task,DT_FixedDUR2,TK_NotStart,DES1230,Issue IFC Design Package,,6376,5320,160,0,0,0,160,0,0,0,,,,2027-09-10 08:00,2027-10-07 16:00,,2024-08-21 08:00,2024-09-17 16:00,2024-08-21 08:00,2024-09-17 16:00,2024-08-21 08:00,2024-09-17 16:00,2027-09-10 08:00,2027-10-07 16:00,,PT_Normal,,,,,O3AJnVXcykuCg2zVbDU2CA,WyXPshpNzU+RPfubbhUyQg,,,N,0,0,,,2023-02-08 18:30,2023-02-08 18:31,NotPrmUser,NotPrmUser,
141727,27171,55001,178,0,N,1,N,N,CP_Drtn,TT_Task,DT_FixedDUR2,TK_NotStart,PRO1000,Civil BOM - Long Lead @ 30%,,680,0,120,0,0,0,120,0,0,0,,,,2025-03-05 08:00,2025-03-25 16:00,,2024-11-06 08:00,2024-11-26 16:00,2024-11-06 08:00,2024-11-26 16:00,2024-11-06 08:00,2024-11-26 16:00,2025-03-05 08:00,2025-03-25 16:00,,PT_Normal,,,,,ZVNf2PIZ5EaYvo47csZ/ew,Aopf0LfREUqo5JeQpnsyjw,,,N,0,0,,,2023-02-08 18:30,2023-02-08 18:31,NotPrmUser,NotPrmUser,
141728,27171,55001,178,0,N,1,N,N,CP_Drtn,TT_Task,DT_FixedDUR2,TK_NotStart,PRO1020,Electrical BOM - Long Lead @ 60%,,920,0,120,0,0,0,120,0,0,0,,,,2025-06-25 08:00,2025-07-15 16:00,,2025-01-15 08:00,2025-02-04 16:00,2025-01-15 08:00,2025-02-04 16:00,2025-01-15 08:00,2025-02-04 16:00,2025-06-25 08:00,2025-07-15 16:00,,PT_Normal,,,,,fGSmHQ0KNEWWVeekDKHfAA,tO2Ei8iTsk6vydO1zrSJ0g,,,N,0,0,,,2023-02-08 18:30,2023-02-08 18:31,NotPrmUser,NotPrmUser,
141729,27171,55001,178,0,N,1,N,N,CP_Drtn,TT_Task,DT_FixedDUR2,TK_NotStart,PRO1040,BOM - Short Lead @ 60%,,600,0,120,0,0,0,120,0,0,0,,,,2025-08-27 08:00,2025-09-16 16:00,,2025-05-14 08:00,2025-06-03 16:00,2025-05-14 08:00,2025-06-03 16:00,2025-05-14 08:00,2025-06-03 16:00,2025-08-27 08:00,2025-09-16 16:00,,PT_Normal,,,,,WwK/rLdvOUW42sE4nv8L6w,i9Cla8pnN0GKNmCIlwO6jg,,,N,0,0,,,2023-02-08 18:30,2023-02-08 18:31,NotPrmUser,NotPrmUser,
141730,27171,55002,178,0,N,1,N,N,CP_Drtn,TT_Task,DT_FixedDUR2,TK_NotStart,PER1000,CalTrans Permit,,0,0,2000,0,0,0,2000,0,0,0,,,,2024-11-06 08:00,2025-10-21 16:00,,2024-11-06 08:00,2025-10-21 16:00,2024-11-06 08:00,2025-10-21 16:00,2024-11-06 08:00,2025-10-21 16:00,2024-11-06 08:00,2025-10-21 16:00,,PT_Normal,,,,,mKGEys9D8UilTMSzwPIRTQ,ZowfoEt8jkGd/7Ipl2aaFA,,,Y,0,0,,,2023-02-08 18:30,2023-02-08 18:31,NotPrmUser,NotPrmUser,
141731,27171,55002,178,0,N,1,N,N,CP_Drtn,TT_Task,DT_FixedDUR2,TK_NotStart,PER1010,City & County Permits,,1200,1200,800,0,0,0,800,0,0,0,,,,2025-06-04 08:00,2025-10-21 16:00,,2024-11-06 08:00,2025-03-25 16:00,2024-11-06 08:00,2025-03-25 16:00,2024-11-06 08:00,2025-03-25 16:00,2025-06-04 08:00,2025-10-21 16:00,,PT_Normal,,,,,E0mvk3XggUybV9o2ZJCdNA,AT+0sFpOqEuoQmFeQ/D9kA,,,N,0,0,,,2023-02-08 18:30,2023-02-08 18:31,NotPrmUser,NotPrmUser,
141732,27171,55002,178,0,N,1,N,N,CP_Drtn,TT_Task,DT_FixedDUR2,TK_NotStart,PER1020,Other Permit (TBD),,1200,1200,800,0,0,0,800,0,0,0,,,,2025-06-04 08:00,2025-10-21 16:00,,2024-11-06 08:00,2025-03-25 16:00,2024-11-06 08:00,2025-03-25 16:00,2024-11-06 08:00,2025-03-25 16:00,2025-06-04 08:00,2025-10-21 16:00,,PT_Normal,,,,,Sgc0kErzDU+sueoLN+jYIA,xuzGWo6dcU627asG7bzJyQ,,,N,0,0,,,2023-02-08 18:30,2023-02-08 18:31,NotPrmUser,NotPrmUser,
141733,27171,55003,178,0,N,1,N,N,CP_Drtn,TT_Task,DT_FixedDUR2,TK_NotStart,PUB1000,Public Affairs / Community Outreach,,6216,6216,800,0,0,0,800,0,0,0,,,,2028-02-04 08:00,2028-06-22 16:00,,2025-02-12 08:00,2025-07-01 16:00,2025-02-12 08:00,2025-07-01 16:00,2025-02-12 08:00,2025-07-01 16:00,2028-02-04 08:00,2028-06-22 16:00,,PT_Normal,,,,,Cshf6wC2okWh2O9nHPH7yg,+FB54gd+j0iR2ATQhMkYyg,,,N,0,0,,,2023-02-08 18:30,2023-02-08 18:31,NotPrmUser,NotPrmUser,
141734,27171,55004,178,0,N,1,N,N,CP_Drtn,TT_Task,DT_FixedDUR2,TK_NotStart,LAN1000,Land Rights and Easement Acquisition,,880,880,1200,0,0,0,1200,0,0,0,,,,2025-03-26 08:00,2025-10-21 16:00,,2024-10-23 08:00,2025-05-20 16:00,2024-10-23 08:00,2025-05-20 16:00,2024-10-23 08:00,2025-05-20 16:00,2025-03-26 08:00,2025-10-21 16:00,,PT_Normal,,,,,JMlwa9XFWU+DnYgv+JDgcA,Tr2mpjJR3kazl54myOyBuw,,,N,0,0,,,2023-02-08 18:30,2023-02-08 18:31,NotPrmUser,NotPrmUser,
141735,27171,55004,178,0,N,1,N,N,CP_Drtn,TT_Task,DT_FixedDUR2,TK_NotStart,LAN1010,Tribal Land Rights,,880,880,1200,0,0,0,1200,0,0,0,,,,2025-03-26 08:00,2025-10-21 16:00,,2024-10-23 08:00,2025-05-20 16:00,2024-10-23 08:00,2025-05-20 16:00,2024-10-23 08:00,2025-05-20 16:00,2025-03-26 08:00,2025-10-21 16:00,,PT_Normal,,,,,sbrE9kWufki8VD7v9fOlJg,n/04wUFgS02NIIYGFMpeXw,,,N,0,0,,,2023-02-08 18:30,2023-02-08 18:31,NotPrmUser,NotPrmUser,
141736,27171,55004,178,0,N,1,N,N,CP_Drtn,TT_Task,DT_FixedDUR2,TK_NotStart,LAN1020,Laydown Yards,,880,880,1200,0,0,0,1200,0,0,0,,,,2025-03-26 08:00,2025-10-21 16:00,,2024-10-23 08:00,2025-05-20 16:00,2024-10-23 08:00,2025-05-20 16:00,2024-10-23 08:00,2025-05-20 16:00,2025-03-26 08:00,2025-10-21 16:00,,PT_Normal,,,,,M6Yjk7DbqkiNBEdDCWEz6w,1PGSqcUVGUKYkmHlnkAOuw,,,N,0,0,,,2023-02-08 18:30,2023-02-08 18:31,NotPrmUser,NotPrmUser,
141737,27171,55005,178,0,N,1,N,N,CP_Drtn,TT_Task,DT_FixedDUR2,TK_NotStart,ENV1000,10% Environmental Submittal,,880,0,200,0,0,0,200,0,0,0,,,,2024-12-11 08:00,2025-01-14 16:00,,2024-07-10 08:00,2024-08-13 16:00,2024-07-10 08:00,2024-08-13 16:00,2024-07-10 08:00,2024-08-13 16:00,2024-12-11 08:00,2025-01-14 16:00,,PT_Normal,,,,,VDXuYh8pK0O9opXX0vXlJQ,1CPY8dvSoEu7K8Rd0QlmoA,,,N,0,0,,,2023-02-08 18:30,2023-02-08 18:31,NotPrmUser,NotPrmUser,
141738,27171,55005,178,0,N,1,N,N,CP_Drtn,TT_Task,DT_FixedDUR2,TK_NotStart,ENV1010,10% Environmental Review,,880,0,120,0,0,0,120,0,0,0,,,,2025-01-15 08:00,2025-02-04 16:00,,2024-08-14 08:00,2024-09-03 16:00,2024-08-14 08:00,2024-09-03 16:00,2024-08-14 08:00,2024-09-03 16:00,2025-01-15 08:00,2025-02-04 16:00,,PT_Normal,,,,,XfRiiPmxcEK+d3X4AdGEEg,Q8vzHgZuRUarFqLjr2kPTA,,,N,0,0,,,2023-02-08 18:30,2023-02-08 18:31,NotPrmUser,NotPrmUser,
141739,27171,55005,178,0,N,1,N,N,CP_Drtn,TT_Task,DT_FixedDUR2,TK_NotStart,ENV1020,30% Environmental Submittal,,840,0,200,0,0,0,200,0,0,0,,,,2025-05-28 08:00,2025-07-01 16:00,,2025-01-01 08:00,2025-02-04 16:00,2025-01-01 08:00,2025-02-04 16:00,2025-01-01 08:00,2025-02-04 16:00,2025-05-28 08:00,2025-07-01 16:00,,PT_Normal,,,,,lDyK2z3KrE6xKCJ7XKcX9g,vYfpZ24sqka2ZsF1dvUUew,,,N,0,0,,,2023-02-08 18:30,2023-02-08 18:31,NotPrmUser,NotPrmUser,
141740,27171,55005,178,0,N,1,N,N,CP_Drtn,TT_Task,DT_FixedDUR2,TK_NotStart,ENV1030,30% Environmental Review,,840,0,120,0,0,0,120,0,0,0,,,,2025-07-02 08:00,2025-07-22 16:00,,2025-02-05 08:00,2025-02-25 16:00,2025-02-05 08:00,2025-02-25 16:00,2025-02-05 08:00,2025-02-25 16:00,2025-07-02 08:00,2025-07-22 16:00,,PT_Normal,,,,,f3fyRHyoFEystj8ezxJtnw,3BbjCXeL4US6b8rq4XGlqQ,,,N,0,0,,,2023-02-08 18:30,2023-02-08 18:31,NotPrmUser,NotPrmUser,
141741,27171,55005,178,0,N,1,N,N,CP_Drtn,TT_Task,DT_FixedDUR2,TK_NotStart,ENV1040,60% Environmental Submittal,,840,0,280,0,0,0,280,0,0,0,,,,2025-07-23 08:00,2025-09-09 16:00,,2025-02-26 08:00,2025-04-15 16:00,2025-02-26 08:00,2025-04-15 16:00,2025-02-26 08:00,2025-04-15 16:00,2025-07-23 08:00,2025-09-09 16:00,,PT_Normal,,,,,5XnpsQzAaE2K4fdccKGa8w,R6FUMBuWvUaAJSuFp0Ozjg,,,N,0,0,,,2023-02-08 18:30,2023-02-08 18:31,NotPrmUser,NotPrmUser,
141742,27171,55005,178,0,N,1,N,N,CP_Drtn,TT_Task,DT_FixedDUR2,TK_NotStart,ENV1050,60% Environmental Release,,960,960,120,0,0,0,120,0,0,0,,,,2025-10-01 08:00,2025-10-21 16:00,,2025-04-16 08:00,2025-05-06 16:00,2025-04-16 08:00,2025-05-06 16:00,2025-04-16 08:00,2025-05-06 16:00,2025-10-01 08:00,2025-10-21 16:00,,PT_Normal,,,,,41iRDEaeVU+uThn2TSgjJQ,CSJVEGd6yUatQmkbCtWB4A,,,N,0,0,,,2023-02-08 18:30,2023-02-08 18:31,NotPrmUser,NotPrmUser,
141743,27171,55005,178,0,N,1,N,N,CP_Drtn,TT_Task,DT_FixedDUR2,TK_NotStart,ENV1060,BIA NEPA Submittal,,840,0,80,0,0,0,80,0,0,0,,,,2025-09-10 08:00,2025-09-23 16:00,,2025-04-16 08:00,2025-04-29 16:00,2025-04-16 08:00,2025-04-29 16:00,2025-04-16 08:00,2025-04-29 16:00,2025-09-10 08:00,2025-09-23 16:00,,PT_Normal,,,,,fMSr5vOaWUictnq7t7dX1w,g4L4pYx5TUGxBrAc+zQM0w,,,N,0,0,,,2023-02-08 18:30,2023-02-08 18:31,NotPrmUser,NotPrmUser,
141744,27171,55005,178,0,N,1,N,N,CP_Drtn,TT_Task,DT_FixedDUR2,TK_NotStart,ENV1070,"BIA Received (Add 250 days, if needed)",,840,840,160,0,0,0,160,0,0,0,,,,2025-09-24 08:00,2025-10-21 16:00,,2025-04-30 08:00,2025-05-27 16:00,2025-04-30 08:00,2025-05-27 16:00,2025-04-30 08:00,2025-05-27 16:00,2025-09-24 08:00,2025-10-21 16:00,,PT_Normal,,,,,zGWuT28MU0KNJCma1+STHg,rN9ewIANhkSXxhdoZepniA,,,N,0,0,,,2023-02-08 18:30,2023-02-08 18:31,NotPrmUser,NotPrmUser,
141745,27171,54995,178,0,N,1,N,N,CP_Drtn,TT_Task,DT_FixedDUR2,TK_NotStart,DES1010,Seismic / Geotech Submittal,,880,0,200,0,0,0,200,0,0,0,,,,2025-02-05 08:00,2025-03-11 16:00,,2024-09-04 08:00,2024-10-08 16:00,2024-09-04 08:00,2024-10-08 16:00,2024-09-04 08:00,2024-10-08 16:00,2025-02-05 08:00,2025-03-11 16:00,,PT_Normal,,,,,4IfY6WpZhEiuhASk3rbjeg,vn2Te7qaZkGT10KHIrf0hQ,,,N,0,0,,,2023-02-08 18:30,2023-02-08 18:31,NotPrmUser,NotPrmUser,
141746,27171,54995,178,0,N,1,N,N,CP_Drtn,TT_Task,DT_FixedDUR2,TK_NotStart,DES1020,Potholing Submittal,,880,40,200,0,0,0,200,0,0,0,,,,2025-03-12 08:00,2025-04-15 16:00,,2024-10-09 08:00,2024-11-12 16:00,2024-10-09 08:00,2024-11-12 16:00,2024-10-09 08:00,2024-11-12 16:00,2025-03-12 08:00,2025-04-15 16:00,,PT_Normal,,,,,0W/yhodk4ESMK14zwK6enQ,higAFBIYXUaSxcRBqJOJEQ,,,N,0,0,,,2023-02-08 18:30,2023-02-08 18:31,NotPrmUser,NotPrmUser,
141747,27171,54995,178,0,N,1,N,N,CP_Drtn,TT_Task,DT_FixedDUR2,TK_NotStart,DES1030,Potholing Release /Perform Potholing,,840,0,240,0,0,0,240,0,0,0,,,,2025-04-16 08:00,2025-05-27 16:00,,2024-11-20 08:00,2024-12-31 16:00,2024-11-20 08:00,2024-12-31 16:00,2024-11-20 08:00,2024-12-31 16:00,2025-04-16 08:00,2025-05-27 16:00,,PT_Normal,,,,,LQDwI4yQqUeKi4Zg4zQ9lw,edH6U9BezkCZs2vQxtF+NQ,,,N,0,0,,,2023-02-08 18:30,2023-02-08 18:31,NotPrmUser,NotPrmUser,
141748,27171,55007,178,0,N,1,N,N,CP_Drtn,TT_Task,DT_FixedDUR2,TK_NotStart,PCON100,Initiate Performance Partnering Process @ 60%,,1000,0,40,0,0,0,40,0,0,0,,,,2025-08-20 08:00,2025-08-26 16:00,,2025-02-26 08:00,2025-03-04 16:00,2025-02-26 08:00,2025-03-04 16:00,2025-02-26 08:00,2025-03-04 16:00,2025-08-20 08:00,2025-08-26 16:00,,PT_Normal,,,,,RgWwVoJ4yUqc70TwSty4Ug,4skbPxuwdEiEToQiN/lBbQ,,,N,0,0,,,2023-02-08 18:30,2023-02-08 18:31,NotPrmUser,NotPrmUser,
141749,27171,55007,178,0,N,1,N,N,CP_Drtn,TT_Task,DT_FixedDUR2,TK_NotStart,PCON110,Receive Estimate from Contractor,,1000,0,120,0,0,0,120,0,0,0,,,,2025-08-27 08:00,2025-09-16 16:00,,2025-03-05 08:00,2025-03-25 16:00,2025-03-05 08:00,2025-03-25 16:00,2025-03-05 08:00,2025-03-25 16:00,2025-08-27 08:00,2025-09-16 16:00,,PT_Normal,,,,,fkq8ZdjfpEG74k3R74R6aw,c9VDLfgz5ECHxxY5bEPpkQ,,,N,0,0,,,2023-02-08 18:30,2023-02-08 18:31,NotPrmUser,NotPrmUser,
141750,27171,55007,178,0,N,1,N,N,CP_Drtn,TT_Task,DT_FixedDUR2,TK_NotStart,PCON120,Bid Estimate Negotiations,,1000,0,80,0,0,0,80,0,0,0,,,,2025-09-17 08:00,2025-09-30 16:00,,2025-03-26 08:00,2025-04-08 16:00,2025-03-26 08:00,2025-04-08 16:00,2025-03-26 08:00,2025-04-08 16:00,2025-09-17 08:00,2025-09-30 16:00,,PT_Normal,,,,,vhPs94fCjUWC6mLtxUU/wg,WrD4rGPGw0Ko7z/7pu9L8A,,,N,0,0,,,2023-02-08 18:30,2023-02-08 18:31,NotPrmUser,NotPrmUser,
141751,27171,55007,178,0,N,1,N,N,CP_Drtn,TT_Task,DT_FixedDUR2,TK_NotStart,PCON130,Revise Estimate based on IFC,,1000,0,40,0,0,0,40,0,0,0,,,,2025-10-01 08:00,2025-10-07 16:00,,2025-04-09 08:00,2025-04-15 16:00,2025-04-09 08:00,2025-04-15 16:00,2025-04-09 08:00,2025-04-15 16:00,2025-10-01 08:00,2025-10-07 16:00,,PT_Normal,,,,,yk8f51Y1Y0mBZxAkCnok+A,NVn4h2cFfkWgvltxkwg30A,,,N,0,0,,,2023-02-08 18:30,2023-02-08 18:31,NotPrmUser,NotPrmUser,
141752,27171,55007,178,0,N,1,N,N,CP_Drtn,TT_Task,DT_FixedDUR2,TK_NotStart,PCON140,Issue Release,,1000,1000,80,0,0,0,80,0,0,0,,,,2025-10-08 08:00,2025-10-21 16:00,,2025-04-16 08:00,2025-04-29 16:00,2025-04-16 08:00,2025-04-29 16:00,2025-04-16 08:00,2025-04-29 16:00,2025-10-08 08:00,2025-10-21 16:00,,PT_Normal,,,,,SJaEJEFo/kW4ymXrT6eI6Q,iL4Kf5zJJ0GKdZHG0vaVcw,,,N,0,0,,,2023-02-08 18:30,2023-02-08 18:31,NotPrmUser,NotPrmUser,
141753,27171,55009,178,0,N,1,N,N,CP_Drtn,TT_Task,DT_FixedDUR2,TK_NotStart,PCON200,Civil Pre-Construction Meeting (Civil Construction Ready),,0,0,40,0,0,0,40,0,0,0,,,,2025-10-22 08:00,2025-10-28 16:00,,2025-10-22 08:00,2025-10-28 16:00,2025-10-22 08:00,2025-10-28 16:00,2025-10-22 08:00,2025-10-28 16:00,2025-10-22 08:00,2025-10-28 16:00,,PT_Normal,,,,,t9pabCaXF02QSHLX/S/yaQ,S1QW1Y4VX0+MathYbstlsA,,,Y,0,0,,,2023-02-08 18:30,2023-02-08 18:31,NotPrmUser,NotPrmUser,
141754,27171,55009,178,0,N,1,N,N,CP_Drtn,TT_Task,DT_FixedDUR2,TK_NotStart,PCON210,Electrical - Pre-Construction Meeting (Electical Construction Ready),,240,0,40,0,0,0,40,0,0,0,,,,2025-12-03 08:00,2025-12-09 16:00,,2025-10-22 08:00,2025-10-28 16:00,2025-10-22 08:00,2025-10-28 16:00,2025-10-22 08:00,2025-10-28 16:00,2025-12-03 08:00,2025-12-09 16:00,,PT_Normal,,,,,XEtlld7vF0ytX/9JTWhidg,iG92Ku9DAU69drzTDJG4+A,,,N,0,0,,,2023-02-08 18:30,2023-02-08 18:31,NotPrmUser,NotPrmUser,
141755,27171,55008,178,0,N,1,N,N,CP_Drtn,TT_Task,DT_FixedDUR2,TK_NotStart,PCON150,Initiate Performance Partnering Process @ 60%,,1480,0,40,0,0,0,40,0,0,0,,,,2025-10-01 08:00,2025-10-07 16:00,,2025-01-15 08:00,2025-01-21 16:00,2025-01-15 08:00,2025-01-21 16:00,2025-01-15 08:00,2025-01-21 16:00,2025-10-01 08:00,2025-10-07 16:00,,PT_Normal,,,,,SEwQ2S9lZ0uTUfYRPNnyWA,SnjAq5/HZ0GO9ZRn9W6Owg,,,N,0,0,,,2023-02-08 18:30,2023-02-08 18:31,NotPrmUser,NotPrmUser,
141756,27171,55008,178,0,N,1,N,N,CP_Drtn,TT_Task,DT_FixedDUR2,TK_NotStart,PCON160,Receive Estimate from Contractor,,1480,0,120,0,0,0,120,0,0,0,,,,2025-10-08 08:00,2025-10-28 16:00,,2025-01-22 08:00,2025-02-11 16:00,2025-01-22 08:00,2025-02-11 16:00,2025-01-22 08:00,2025-02-11 16:00,2025-10-08 08:00,2025-10-28 16:00,,PT_Normal,,,,,uDSPot2yN0+UvhD7esWKYw,JzzlASiyp0u1SBWBN3pDRg,,,N,0,0,,,2023-02-08 18:30,2023-02-08 18:31,NotPrmUser,NotPrmUser,
141757,27171,55008,178,0,N,1,N,N,CP_Drtn,TT_Task,DT_FixedDUR2,TK_NotStart,PCON170,Bid Estimate Negotiations,,1480,0,80,0,0,0,80,0,0,0,,,,2025-10-29 08:00,2025-11-11 16:00,,2025-02-12 08:00,2025-02-25 16:00,2025-02-12 08:00,2025-02-25 16:00,2025-02-12 08:00,2025-02-25 16:00,2025-10-29 08:00,2025-11-11 16:00,,PT_Normal,,,,,sXNM5eaEqk276jwKe5dfxQ,jVH+Y4naoEOtpcc9JkJa8w,,,N,0,0,,,2023-02-08 18:30,2023-02-08 18:31,NotPrmUser,NotPrmUser,
141758,27171,55008,178,0,N,1,N,N,CP_Drtn,TT_Task,DT_FixedDUR2,TK_NotStart,PCON180,Revise Estimate based on IFC,,1480,0,40,0,0,0,40,0,0,0,,,,2025-11-12 08:00,2025-11-18 16:00,,2025-02-26 08:00,2025-03-04 16:00,2025-02-26 08:00,2025-03-04 16:00,2025-02-26 08:00,2025-03-04 16:00,2025-11-12 08:00,2025-11-18 16:00,,PT_Normal,,,,,O4gbct1Vr0ernFRCHIgDMg,E5wFDM0DGkyEYjh9KACnuw,,,N,0,0,,,2023-02-08 18:30,2023-02-08 18:31,NotPrmUser,NotPrmUser,
141759,27171,55008,178,0,N,1,N,N,CP_Drtn,TT_Task,DT_FixedDUR2,TK_NotStart,PCON190,Issue Release,,1480,1240,80,0,0,0,80,0,0,0,,,,2025-11-19 08:00,2025-12-02 16:00,,2025-03-05 08:00,2025-03-18 16:00,2025-03-05 08:00,2025-03-18 16:00,2025-03-05 08:00,2025-03-18 16:00,2025-11-19 08:00,2025-12-02 16:00,,PT_Normal,,,,,a3wX8e2q7069Nw09Sn26IQ,l8m++9UxW0eVVA7MMGjlnA,,,N,0,0,,,2023-02-08 18:30,2023-02-08 18:31,NotPrmUser,NotPrmUser,
141760,27171,55001,178,0,N,1,N,N,CP_Drtn,TT_Task,DT_FixedDUR2,TK_NotStart,PRO1010,Order Long Lead Civil Material,,680,680,1200,0,0,0,1200,0,0,0,,,,2025-03-26 08:00,2025-10-21 16:00,,2024-11-27 08:00,2025-06-24 16:00,2024-11-27 08:00,2025-06-24 16:00,2024-11-27 08:00,2025-06-24 16:00,2025-03-26 08:00,2025-10-21 16:00,,PT_Normal,,,,,C6h9/X4GVUWP7QJ2ZTxnZQ,k4HoSiOzG0yWcfIMQlps9g,,,N,0,0,,,2023-02-08 18:30,2023-02-08 18:31,NotPrmUser,NotPrmUser,
141761,27171,55001,178,0,N,1,N,N,CP_Drtn,TT_Task,DT_FixedDUR2,TK_NotStart,PRO1050,Order Short Lead Materials,,600,600,200,0,0,0,200,0,0,0,,,,2025-09-17 08:00,2025-10-21 16:00,,2025-06-04 08:00,2025-07-08 16:00,2025-06-04 08:00,2025-07-08 16:00,2025-06-04 08:00,2025-07-08 16:00,2025-09-17 08:00,2025-10-21 16:00,,PT_Normal,,,,,S6qNwMLWUkCWPKHpk9Dr0A,7enZ2+VQA0aOAGcvUcBFsw,,,N,0,0,,,2023-02-08 18:30,2023-02-08 18:31,NotPrmUser,NotPrmUser,
141762,27171,55001,178,0,N,1,N,N,CP_Drtn,TT_Task,DT_FixedDUR2,TK_NotStart,PRO1030,Order Long Lead Electrical Materials,,920,680,800,0,0,0,800,0,0,0,,,,2025-07-16 08:00,2025-12-02 16:00,,2025-02-05 08:00,2025-06-24 16:00,2025-02-05 08:00,2025-06-24 16:00,2025-02-05 08:00,2025-06-24 16:00,2025-07-16 08:00,2025-12-02 16:00,,PT_Normal,,,,,OABCSxxrCkWo2d5+8lWgAg,53U9+5T0mEqHkYPcWkvXsw,,,N,0,0,,,2023-02-08 18:30,2023-02-08 18:31,NotPrmUser,NotPrmUser,
141763,27171,55011,178,0,N,1,N,N,CP_Drtn,TT_Task,DT_FixedDUR2,TK_NotStart,CON2000,Civil Construction (Trenching 300 feet/day),7730,0,0,3520,0,14248,14248,3520,0,0,0,,,,2025-10-29 08:00,2027-07-06 16:00,,2025-10-29 08:00,2027-07-06 16:00,2025-10-29 08:00,2027-07-06 16:00,2025-10-29 08:00,2027-07-06 16:00,2025-10-29 08:00,2027-07-06 16:00,,PT_Normal,,,,,9kHfs0l/z0OtB1m8HY0Jdg,9YN0m1JS9EOT1MEd/tm8sA,,,Y,0,0,,,2023-02-08 18:30,2023-02-08 18:38,NotPrmUser,NotPrmUser,
141764,27171,55012,178,0,N,1,N,N,CP_Drtn,TT_Task,DT_FixedDUR2,TK_NotStart,CON3000,Electrical Construction,7786,0,0,3280,0,1640,1640,3280,0,0,0,,,,2025-12-10 08:00,2027-07-06 16:00,,2025-12-10 08:00,2027-07-06 16:00,2025-12-10 08:00,2027-07-06 16:00,2025-12-10 08:00,2027-07-06 16:00,2025-12-10 08:00,2027-07-06 16:00,,PT_Normal,,,,,2BwRkwwX5Ey9wds7/qCvdw,6HjKdDLnIUqP1Lra0Elj2g,,,Y,0,0,,,2023-02-08 18:30,2023-02-08 19:36,NotPrmUser,NotPrmUser,
141765,27171,55013,178,0,N,1,N,N,CP_Drtn,TT_Task,DT_FixedDUR2,TK_NotStart,CON4000,Service Cutover,,1056,0,2920,0,0,0,2920,0,0,0,,,,2026-08-14 08:00,2028-01-06 16:00,,2026-02-11 08:00,2027-07-06 16:00,2026-02-11 08:00,2027-07-06 16:00,2026-02-11 08:00,2027-07-06 16:00,2026-08-14 08:00,2028-01-06 16:00,,PT_Normal,,,,,/5v1grC5dkOubS4bG8YTgQ,goxClqnvfU+XUMN6jCpKOw,,,N,0,0,,,2023-02-08 18:30,2023-02-08 18:31,NotPrmUser,NotPrmUser,
141766,27171,55014,178,0,N,1,N,N,CP_Drtn,TT_Task,DT_FixedDUR2,TK_NotStart,CON5000,Scada Construction,,1056,0,520,0,0,0,520,0,0,0,,,,2027-10-08 08:00,2028-01-06 16:00,,2027-04-07 08:00,2027-07-06 16:00,2027-04-07 08:00,2027-07-06 16:00,2027-04-07 08:00,2027-07-06 16:00,2027-10-08 08:00,2028-01-06 16:00,,PT_Normal,,,,,iuhZYZppVkGPYx6jllGlFA,0PwBb0Gp0UOXsgtwFTIWJg,,,N,0,0,,,2023-02-08 18:30,2023-02-08 18:31,NotPrmUser,NotPrmUser,
141767,27171,55015,178,0,N,1,N,N,CP_Drtn,TT_Task,DT_FixedDUR2,TK_NotStart,CON6000,Substation Construction,,1056,0,520,0,0,0,520,0,0,0,,,,2027-10-08 08:00,2028-01-06 16:00,,2027-04-07 08:00,2027-07-06 16:00,2027-04-07 08:00,2027-07-06 16:00,2027-04-07 08:00,2027-07-06 16:00,2027-10-08 08:00,2028-01-06 16:00,,PT_Normal,,,,,0CmF5uj4aEO2WYNq5m/+Bg,Vj73xvPAYk6ODvmkUfNz0g,,,N,0,0,,,2023-02-08 18:30,2023-02-08 18:31,NotPrmUser,NotPrmUser,
141768,27171,55016,178,0,N,1,N,N,CP_Drtn,TT_Task,DT_FixedDrtn,TK_NotStart,CON7000,Overhead RFS (1000 feet per day),7785,0,0,1056,0,1056,1056,1056,0,0,0,,,,2027-07-07 08:00,2028-01-06 16:00,,2027-07-07 08:00,2028-01-06 16:00,2027-07-07 08:00,2028-01-06 16:00,2027-07-07 08:00,2028-01-06 16:00,2027-07-07 08:00,2028-01-06 16:00,,PT_Normal,,,,,TaKSV4516UOqLQftP+oMYw,U9lUVlZta0y8drT2Tr/5wg,,,Y,0,0,,,2023-02-08 18:30,2023-02-08 18:31,NotPrmUser,NotPrmUser,
141769,27171,55010,178,0,N,1,N,N,CP_Drtn,TT_Task,DT_FixedDUR2,TK_NotStart,ISD1000,ISD - Energize - Put in service,,2008,2008,8,0,0,0,8,25,0,25,,,,2028-06-22 08:00,2028-06-22 16:00,,2027-07-07 08:00,2027-07-07 16:00,2027-07-07 08:00,2027-07-07 16:00,2027-07-07 08:00,2027-07-07 16:00,2028-06-22 08:00,2028-06-22 16:00,,PT_Normal,,,,,eMs/Kd4uLEOlhKmAvzdEDg,wxt7GJHmKkqZCr8fwluEJA,,,N,0,0,,,2023-02-08 18:30,2023-02-08 18:31,NotPrmUser,NotPrmUser,
141770,27171,54993,178,0,N,1,N,N,CP_Drtn,TT_Task,DT_FixedDUR2,TK_NotStart,SUR1000,Survey and LiDAR,7385,0,0,400,0,9182,9182,400,0,0,0,,,,2024-05-01 08:00,2024-07-09 16:00,,2024-05-01 08:00,2024-07-09 16:00,2024-05-01 08:00,2024-07-09 16:00,2024-05-01 08:00,2024-07-09 16:00,2024-05-01 08:00,2024-07-09 16:00,,PT_Normal,,,,,lrGqawVi7kyB8WenTSOHvA,9LAhkQWN10au3bwxQed6mw,,,Y,0,0,,,2023-02-08 18:30,2023-02-08 18:31,NotPrmUser,NotPrmUser,
141771,27171,54998,178,0,N,1,N,N,CP_Drtn,TT_Task,DT_FixedDUR2,TK_NotStart,DES1200,Receive Services Worksheet and Cable Info from Design Firms,,760,0,160,0,0,0,160,0,0,0,,,,2025-01-22 08:00,2025-02-18 16:00,,2024-09-11 08:00,2024-10-08 16:00,2024-09-11 08:00,2024-10-08 16:00,2024-09-11 08:00,2024-10-08 16:00,2025-01-22 08:00,2025-02-18 16:00,,PT_Normal,,,,,XNO2aFTAqUm4vZOHNSaYcg,/Ye+KH7OoU+7kKnzOA9ZLg,,,N,0,0,,,2023-02-08 18:30,2023-02-08 18:31,NotPrmUser,NotPrmUser,
141772,27171,54998,178,0,N,1,N,N,CP_Drtn,TT_Task,DT_FixedDUR2,TK_NotStart,DES1210,Issue to Trench Inspectors,,2376,1320,80,0,0,0,80,0,0,0,,,,2026-07-31 08:00,2026-08-13 16:00,,2025-06-11 08:00,2025-06-24 16:00,2025-06-11 08:00,2025-06-24 16:00,2025-06-11 08:00,2025-06-24 16:00,2026-07-31 08:00,2026-08-13 16:00,,PT_Normal,,,,,l5/rmGWw/UaByy1l6zxFDg,KbXlCAqwlkeJ2vXcK7h8hw,,,N,0,0,,,2023-02-08 18:30,2023-02-08 18:31,NotPrmUser,NotPrmUser,
141773,27171,55010,178,0,N,1,N,N,CP_Drtn,TT_FinMile,DT_FixedDrtn,TK_NotStart,CON1020,Construction Complete,,0,0,0,0,0,0,0,0,0,0,,,,2028-01-06 16:00,2028-01-06 16:00,,2028-01-06 16:00,2028-01-06 16:00,2028-01-06 16:00,2028-01-06 16:00,2028-01-06 16:00,2028-01-06 16:00,2028-01-06 16:00,2028-01-06 16:00,,PT_Normal,,,,,AAwQybw00EmAzXYL+6WzQA,53wuPFGgUkKLvBe/gf53sg,,,Y,0,0,,,2023-02-08 18:30,2023-02-08 18:31,NotPrmUser,NotPrmUser,
141774,27171,55010,178,0,N,1,N,N,CP_Drtn,TT_Mile,DT_FixedDrtn,TK_NotStart,CON1010,Construction Start,,5536,5536,0,0,0,0,0,0,0,0,,,,2028-06-22 16:00,2028-06-22 16:00,,2025-10-29 08:00,2025-10-29 08:00,2025-10-29 08:00,2025-10-29 08:00,2025-10-29 08:00,2025-10-29 08:00,2028-06-22 16:00,2028-06-22 16:00,,PT_Normal,,,,,2Ffk4nPckUqu7zF70AVR4Q,jZNJaw8l6EOibUXVHmEI7A,,,N,0,0,,,2023-02-08 18:30,2023-02-08 18:31,NotPrmUser,NotPrmUser,
141775,27171,55019,178,0,N,1,N,N,CP_Drtn,TT_Task,DT_FixedDUR2,TK_NotStart,CLO1020,GIS/As-Built and Records Complete,,480,480,480,0,0,0,480,0,0,0,,,,2028-03-31 08:00,2028-06-22 16:00,,2028-01-07 08:00,2028-03-30 16:00,2028-01-07 08:00,2028-03-30 16:00,2028-01-07 08:00,2028-03-30 16:00,2028-03-31 08:00,2028-06-22 16:00,,PT_Normal,,,,,HqT6p9A81UeBC9pkEvw69w,rMd9cjA2P0icuhSli1X1Sw,,,N,0,0,,,2023-02-08 18:30,2023-02-08 18:31,NotPrmUser,NotPrmUser,
141776,27171,55020,178,0,N,1,N,N,CP_Drtn,TT_Task,DT_FixedDUR2,TK_NotStart,CLO1030,"PO's complete, Work Order Reconcilled and Closed",,0,0,960,0,0,0,960,0,0,0,,,,2028-01-07 08:00,2028-06-22 16:00,,2028-01-07 08:00,2028-06-22 16:00,2028-01-07 08:00,2028-06-22 16:00,2028-01-07 08:00,2028-06-22 16:00,2028-01-07 08:00,2028-06-22 16:00,,PT_Normal,,,,,u+s013FL8027H3bKYiIbmQ,4PyKrHPppE2FUVsFp0MRJw,,,Y,0,0,,,2023-02-08 18:30,2023-02-08 18:31,NotPrmUser,NotPrmUser,
141777,27171,55018,178,0,N,1,N,N,CP_Drtn,TT_FinMile,DT_FixedDrtn,TK_NotStart,CLO1010,Project Complete,,0,0,0,0,0,0,0,0,0,0,,,,2028-06-22 16:00,2028-06-22 16:00,,2028-06-22 16:00,2028-06-22 16:00,2028-06-22 16:00,2028-06-22 16:00,2028-06-22 16:00,2028-06-22 16:00,2028-06-22 16:00,2028-06-22 16:00,,PT_Normal,,,,,TmUE8WsH+kqe/tDG4+CA9A,ojM7I4+Ql0WeFi2CQqyUAg,,,Y,0,0,,,2023-02-08 18:30,2023-02-08 18:31,NotPrmUser,NotPrmUser,
141778,27171,54994,178,0,N,1,N,N,CP_Drtn,TT_LOE,DT_FixedDUR2,TK_NotStart,DES1000,Design Summary,7257,4096,0,2680,0,16233,16233,2680,0,0,0,,,,2024-07-10 08:00,2027-10-07 16:00,,2024-07-10 08:00,2025-10-21 16:00,2024-07-10 08:00,2025-10-21 16:00,2024-07-10 08:00,2025-10-21 16:00,2024-07-10 08:00,2027-10-07 16:00,,PT_Normal,,,,,+VqitT/9oUeIIuB7b4Bz6w,HclJNVpT0k64RHYk6MBebw,,,Y,0,0,,,2023-02-08 18:30,2023-02-08 18:31,NotPrmUser,NotPrmUser,
141779,27171,55010,178,0,N,1,N,N,CP_Drtn,TT_LOE,DT_FixedDUR2,TK_NotStart,CON1000,Construction Summary,7385,0,0,4576,0,9972,9972,4576,25,0,25,,,,2028-01-06 16:00,2028-01-06 16:00,,2025-10-29 08:00,2028-01-06 16:00,2025-10-29 08:00,2028-01-06 16:00,2025-10-29 08:00,2028-01-06 16:00,2028-01-06 16:00,2028-01-06 16:00,,PT_Normal,,,,,zT23oEMeJEmRV1GV2Eh2NQ,nj0706MSbU+B8Bd8n/fjXg,,,N,0,0,,,2023-02-08 18:30,2023-02-08 18:31,NotPrmUser,NotPrmUser,
141780,27171,55018,178,0,N,1,N,N,CP_Drtn,TT_LOE,DT_FixedDUR2,TK_NotStart,CLO1000,Close Out Summary,7385,0,0,960,0,4482,4482,960,0,0,0,,,,2028-01-07 08:00,2028-06-22 16:00,,2028-01-07 08:00,2028-06-22 16:00,2028-01-07 08:00,2028-06-22 16:00,2028-01-07 08:00,2028-06-22 16:00,2028-01-07 08:00,2028-06-22 16:00,,PT_Normal,,,,,jTnJYrq0GEybqwWVoW7Xmg,+j6nqvDaWk+bLxMjN+LWkQ,,,Y,0,0,,,2023-02-08 18:30,2023-02-08 18:31,NotPrmUser,NotPrmUser,
141781,27171,54991,178,0,N,1,N,N,CP_Drtn,TT_LOE,DT_FixedDUR2,TK_NotStart,PCON1000,Pre-Construction Summary,,0,0,3296,0,0,0,3296,0,0,0,,,,2024-04-01 08:00,2025-10-28 16:00,,2024-04-01 08:00,2025-10-28 16:00,2024-04-01 08:00,2025-10-28 16:00,2024-04-01 08:00,2025-10-28 16:00,2024-04-01 08:00,2025-10-28 16:00,,PT_Normal,,,,,09K0cYgE0U6M7wvRQ/y44A,zrPGkeKOdkuucoYarlNMOg,,,Y,0,0,,,2023-02-08 18:30,2023-02-08 18:31,NotPrmUser,NotPrmUser,
141782,27172,55022,178,0,N,1,N,N,CP_Drtn,TT_Task,DT_FixedDUR2,TK_NotStart,SCO1000,Bundling / Phasing of circuits for project sequencing,,0,0,80,0,0,0,80,0,0,0,2024-05-01 00:00,,,2024-05-01 08:00,2024-05-14 16:00,,2024-05-01 08:00,2024-05-14 16:00,2024-05-01 08:00,2024-05-14 16:00,2024-05-01 08:00,2024-05-14 16:00,2024-05-01 08:00,2024-05-14 16:00,CS_MSOA,PT_Normal,,,,,HTMAVaxaDUSoZABDyJPDEQ,g5qq+KTeRkSslsAXI8t0YA,,,Y,0,0,,,2023-02-08 18:30,2023-02-08 18:31,NotPrmUser,NotPrmUser,
141783,27172,55022,178,0,N,1,N,N,CP_Drtn,TT_Task,DT_FixedDUR2,TK_NotStart,SCO1010,Constructability Review,,0,0,40,0,0,0,40,0,0,0,,,,2024-05-15 08:00,2024-05-21 16:00,,2024-05-15 08:00,2024-05-21 16:00,2024-05-15 08:00,2024-05-21 16:00,2024-05-15 08:00,2024-05-21 16:00,2024-05-15 08:00,2024-05-21 16:00,,PT_Normal,,,,,3eKFWarVOE+l4Dgkk+dmVA,umjZMrGe7EyFoKg0xv2JgQ,,,Y,0,0,,,2023-02-08 18:30,2023-02-08 18:31,NotPrmUser,NotPrmUser,
141784,27172,55022,178,0,N,1,N,N,CP_Drtn,TT_Task,DT_FixedDUR2,TK_NotStart,SCO1020,SDG&E Review,,0,0,16,0,0,0,16,0,0,0,,,,2024-05-22 08:00,2024-05-23 16:00,,2024-05-22 08:00,2024-05-23 16:00,2024-05-22 08:00,2024-05-23 16:00,2024-05-22 08:00,2024-05-23 16:00,2024-05-22 08:00,2024-05-23 16:00,,PT_Normal,,,,,zBPccOHe4kKPYoP8Am14HQ,i17qQP68wkur33fkIpZkYw,,,Y,0,0,,,2023-02-08 18:30,2023-02-08 18:31,NotPrmUser,NotPrmUser,
141785,27172,55023,178,0,N,1,N,N,CP_Drtn,TT_Task,DT_FixedDUR2,TK_NotStart,PLA1000,Workorder Setup,,0,0,40,0,0,0,40,0,0,0,,,,2024-05-24 08:00,2024-05-30 16:00,,2024-05-24 08:00,2024-05-30 16:00,2024-05-24 08:00,2024-05-30 16:00,2024-05-24 08:00,2024-05-30 16:00,2024-05-24 08:00,2024-05-30 16:00,,PT_Normal,,,,,FsqwfbVb7Uu4sio2vvmuvw,1PcAwoFY8ke/DT0QUwYjgQ,,,Y,0,0,,,2023-02-08 18:30,2023-02-08 18:31,NotPrmUser,NotPrmUser,
141786,27172,55026,178,0,N,1,N,N,CP_Drtn,TT_Task,DT_FixedDUR2,TK_NotStart,DES1040,10% Submittal,,0,0,200,0,0,0,200,0,0,0,,,,2024-08-09 08:00,2024-09-12 16:00,,2024-08-09 08:00,2024-09-12 16:00,2024-08-09 08:00,2024-09-12 16:00,2024-08-09 08:00,2024-09-12 16:00,2024-08-09 08:00,2024-09-12 16:00,,PT_Normal,,,,,Q1OeUvDyVEST47OPmnO8eQ,5WoQUGsCsEeD1fF6ZZZRLQ,,,Y,0,0,,,2023-02-08 18:30,2023-02-08 18:31,NotPrmUser,NotPrmUser,
141787,27172,55026,178,0,N,1,N,N,CP_Drtn,TT_Task,DT_FixedDUR2,TK_NotStart,DES1050,30% Submittal,,0,0,400,0,0,0,400,0,0,0,,,,2024-09-13 08:00,2024-11-21 16:00,,2024-09-13 08:00,2024-11-21 16:00,2024-09-13 08:00,2024-11-21 16:00,2024-09-13 08:00,2024-11-21 16:00,2024-09-13 08:00,2024-11-21 16:00,,PT_Normal,,,,,ypVy1m6XFkCuzOSvpRbrQg,HeVCMouGik6KW0r/BJ0ZhA,,,Y,0,0,,,2023-02-08 18:30,2023-02-08 18:31,NotPrmUser,NotPrmUser,
141788,27172,55026,178,0,N,1,N,N,CP_Drtn,TT_Task,DT_FixedDUR2,TK_NotStart,DES1060,30% Review,,0,0,80,0,0,0,80,0,0,0,,,,2024-11-22 08:00,2024-12-05 16:00,,2024-11-22 08:00,2024-12-05 16:00,2024-11-22 08:00,2024-12-05 16:00,2024-11-22 08:00,2024-12-05 16:00,2024-11-22 08:00,2024-12-05 16:00,,PT_Normal,,,,,va793IQec0OShHTKBm86MA,R2qLca9X6U2NQFidTt+bnA,,,Y,0,0,,,2023-02-08 18:30,2023-02-08 18:31,NotPrmUser,NotPrmUser,
141789,27172,55026,178,0,N,1,N,N,CP_Drtn,TT_Task,DT_FixedDUR2,TK_NotStart,DES1070,60% Submittal,,600,0,560,0,0,0,560,0,0,0,,,,2025-03-21 08:00,2025-06-26 16:00,,2024-12-06 08:00,2025-03-13 16:00,2024-12-06 08:00,2025-03-13 16:00,2024-12-06 08:00,2025-03-13 16:00,2025-03-21 08:00,2025-06-26 16:00,,PT_Normal,,,,,J+MXKMSZ/Em3XWSJf5ITIA,4KGNeNeoKEqL/XDQFFJ2Pg,,,N,0,0,,,2023-02-08 18:30,2023-02-08 18:31,NotPrmUser,NotPrmUser,
141790,27172,55026,178,0,N,1,N,N,CP_Drtn,TT_Task,DT_FixedDUR2,TK_NotStart,DES1080,60% Review,,600,0,80,0,0,0,80,0,0,0,,,,2025-06-27 08:00,2025-07-10 16:00,,2025-03-14 08:00,2025-03-27 16:00,2025-03-14 08:00,2025-03-27 16:00,2025-03-14 08:00,2025-03-27 16:00,2025-06-27 08:00,2025-07-10 16:00,,PT_Normal,,,,,xk1ocPBBNkOtxdPyaDvKZw,+ZDQNyTH00WAOLzPmof2+w,,,N,0,0,,,2023-02-08 18:30,2023-02-08 18:31,NotPrmUser,NotPrmUser,
141791,27172,55026,178,0,N,1,N,N,CP_Drtn,TT_Task,DT_FixedDUR2,TK_NotStart,DES1090,90% Submittal,,600,0,360,0,0,0,360,0,0,0,,,,2025-07-11 08:00,2025-09-11 16:00,,2025-03-28 08:00,2025-05-29 16:00,2025-03-28 08:00,2025-05-29 16:00,2025-03-28 08:00,2025-05-29 16:00,2025-07-11 08:00,2025-09-11 16:00,,PT_Normal,,,,,N5A1byrZJ0Wfm0p/kapvGw,tpa5KO/cx0WpoCTQXc4aVQ,,,N,0,0,,,2023-02-08 18:30,2023-02-08 18:31,NotPrmUser,NotPrmUser,
141792,27172,55026,178,0,N,1,N,N,CP_Drtn,TT_Task,DT_FixedDUR2,TK_NotStart,DES1100,90% Review,,600,0,80,0,0,0,80,0,0,0,,,,2025-09-12 08:00,2025-09-25 16:00,,2025-05-30 08:00,2025-06-12 16:00,2025-05-30 08:00,2025-06-12 16:00,2025-05-30 08:00,2025-06-12 16:00,2025-09-12 08:00,2025-09-25 16:00,,PT_Normal,,,,,3uGlVAXebEu48w7Fzo3T7w,alLnEnWB/kOAgOaPvf/5Hw,,,N,0,0,,,2023-02-08 18:30,2023-02-08 18:31,NotPrmUser,NotPrmUser,
141793,27172,55026,178,0,N,1,N,N,CP_Drtn,TT_Task,DT_FixedDUR2,TK_NotStart,DES1110,100% Submittal,,680,0,160,0,0,0,160,0,0,0,,,,2025-10-10 08:00,2025-11-06 16:00,,2025-06-13 08:00,2025-07-10 16:00,2025-06-13 08:00,2025-07-10 16:00,2025-06-13 08:00,2025-07-10 16:00,2025-10-10 08:00,2025-11-06 16:00,,PT_Normal,,,,,TgiOfD5Xx0eWAzWJ+5YShg,e6kAHLBjiEO7S+afijX3Ww,,,N,0,0,,,2023-02-08 18:30,2023-02-08 18:31,NotPrmUser,NotPrmUser,
141794,27172,55026,178,0,N,1,N,N,CP_Drtn,TT_Task,DT_FixedDUR2,TK_NotStart,DES1120,Issue IFC Design Package,,0,0,80,0,0,0,80,0,0,0,,,,2025-11-07 08:00,2025-11-20 16:00,,2025-11-07 08:00,2025-11-20 16:00,2025-11-07 08:00,2025-11-20 16:00,2025-11-07 08:00,2025-11-20 16:00,2025-11-07 08:00,2025-11-20 16:00,,PT_Normal,,,,,KMHG4jGD8ECRwdVjYKHkcg,15sp4T7xAUae8dE0SGF/LA,,,Y,0,0,,,2023-02-08 18:30,2023-02-08 18:31,NotPrmUser,NotPrmUser,
141795,27172,55027,178,0,N,1,N,N,CP_Drtn,TT_Task,DT_FixedDUR2,TK_NotStart,DES1130,60% Submittal,,840,0,480,0,0,0,480,0,0,0,,,,2025-04-04 08:00,2025-06-26 16:00,,2024-11-08 08:00,2025-01-30 16:00,2024-11-08 08:00,2025-01-30 16:00,2024-11-08 08:00,2025-01-30 16:00,2025-04-04 08:00,2025-06-26 16:00,,PT_Normal,,,,,ZX4M6IYlJEqYml36LvbjNQ,bfAmKtmra0uUQhQzZ7QWZw,,,N,0,0,,,2023-02-08 18:30,2023-02-08 18:31,NotPrmUser,NotPrmUser,
141796,27172,55027,178,0,N,1,N,N,CP_Drtn,TT_Task,DT_FixedDUR2,TK_NotStart,DES1140,60% Review,,920,0,80,0,0,0,80,0,0,0,,,,2025-07-11 08:00,2025-07-24 16:00,,2025-01-31 08:00,2025-02-13 16:00,2025-01-31 08:00,2025-02-13 16:00,2025-01-31 08:00,2025-02-13 16:00,2025-07-11 08:00,2025-07-24 16:00,,PT_Normal,,,,,sJTV7np4E0yjD5IYjMwAnw,tvegRpnwqE+fO5Bm+geO4w,,,N,0,0,,,2023-02-08 18:30,2023-02-08 18:31,NotPrmUser,NotPrmUser,
141797,27172,55027,178,0,N,1,N,N,CP_Drtn,TT_Task,DT_FixedDUR2,TK_NotStart,DES1150,90% Submittal,,1120,0,400,0,0,0,400,0,0,0,,,,2025-08-29 08:00,2025-11-06 16:00,,2025-02-14 08:00,2025-04-24 16:00,2025-02-14 08:00,2025-04-24 16:00,2025-02-14 08:00,2025-04-24 16:00,2025-08-29 08:00,2025-11-06 16:00,,PT_Normal,,,,,f5rzTAi9j0SIy+VvwxTTBQ,p/k7fvA5wUCGtO5vUiZYTw,,,N,0,0,,,2023-02-08 18:30,2023-02-08 18:31,NotPrmUser,NotPrmUser,
141798,27172,55027,178,0,N,1,N,N,CP_Drtn,TT_Task,DT_FixedDUR2,TK_NotStart,DES1160,90% Review,,1120,0,80,0,0,0,80,0,0,0,,,,2025-11-07 08:00,2025-11-20 16:00,,2025-04-25 08:00,2025-05-08 16:00,2025-04-25 08:00,2025-05-08 16:00,2025-04-25 08:00,2025-05-08 16:00,2025-11-07 08:00,2025-11-20 16:00,,PT_Normal,,,,,HJt0CsOmA0aCdiWE6Rufbg,RxKtSfbjj0ybxI6jVWKQFQ,,,N,0,0,,,2023-02-08 18:30,2023-02-08 18:31,NotPrmUser,NotPrmUser,
141799,27172,55027,178,0,N,1,N,N,CP_Drtn,TT_Task,DT_FixedDUR2,TK_NotStart,DES1170,100% Submittal,,1120,880,160,0,0,0,160,0,0,0,,,,2025-11-21 08:00,2025-12-18 16:00,,2025-05-09 08:00,2025-06-05 16:00,2025-05-09 08:00,2025-06-05 16:00,2025-05-09 08:00,2025-06-05 16:00,2025-11-21 08:00,2025-12-18 16:00,,PT_Normal,,,,,7YStb1fhFE6tfzMysDSyPA,c0P97cJCJ0mPVVH8Aa4kAg,,,N,0,0,,,2023-02-08 18:30,2023-02-08 18:31,NotPrmUser,NotPrmUser,
141800,27172,55027,178,0,N,1,N,N,CP_Drtn,TT_Task,DT_FixedDUR2,TK_NotStart,DES1180,Issue IFC Design Package,,240,0,80,0,0,0,80,0,0,0,,,,2025-12-19 08:00,2026-01-01 16:00,,2025-11-07 08:00,2025-11-20 16:00,2025-11-07 08:00,2025-11-20 16:00,2025-11-07 08:00,2025-11-20 16:00,2025-12-19 08:00,2026-01-01 16:00,,PT_Normal,,,,,ftjHT43NB0eZQtYV8vzcvQ,ZclEHpmQoESd3FbEtV8jjw,,,N,0,0,,,2023-02-08 18:30,2023-02-08 18:31,NotPrmUser,NotPrmUser,
141801,27172,55028,178,0,N,1,N,N,CP_Drtn,TT_Task,DT_FixedDUR2,TK_NotStart,DES1190,Issue Services Worksheet to Design Firms,,760,0,160,0,0,0,160,0,0,0,,,,2025-01-24 08:00,2025-02-20 16:00,,2024-09-13 08:00,2024-10-10 16:00,2024-09-13 08:00,2024-10-10 16:00,2024-09-13 08:00,2024-10-10 16:00,2025-01-24 08:00,2025-02-20 16:00,,PT_Normal,,,,,93DOOD89fkinCpR7ZPxNVQ,p7i4U5c2/0O8QfiJh0WuCg,,,N,0,0,,,2023-02-08 18:30,2023-02-08 18:31,NotPrmUser,NotPrmUser,
141802,27172,55029,178,0,N,1,N,N,CP_Drtn,TT_Task,DT_FixedDUR2,TK_NotStart,DES1220,SED Design,,6376,0,240,0,0,0,240,0,0,0,,,,2027-08-31 08:00,2027-10-11 16:00,,2024-08-09 08:00,2024-09-19 16:00,2024-08-09 08:00,2024-09-19 16:00,2024-08-09 08:00,2024-09-19 16:00,2027-08-31 08:00,2027-10-11 16:00,,PT_Normal,,,,,2aapHMkBXkWPmLRhzWPF9w,YPrKQdThxkWTeVugGOJh0w,,,N,0,0,,,2023-02-08 18:30,2023-02-08 18:31,NotPrmUser,NotPrmUser,
141803,27172,55029,178,0,N,1,N,N,CP_Drtn,TT_Task,DT_FixedDUR2,TK_NotStart,DES1230,Issue IFC Design Package,,6376,5320,160,0,0,0,160,0,0,0,,,,2027-10-12 08:00,2027-11-08 16:00,,2024-09-20 08:00,2024-10-17 16:00,2024-09-20 08:00,2024-10-17 16:00,2024-09-20 08:00,2024-10-17 16:00,2027-10-12 08:00,2027-11-08 16:00,,PT_Normal,,,,,poX+7Qhc0EygF3+PsrSy5A,kxARIrK7hEy7J6y9bO+LAg,,,N,0,0,,,2023-02-08 18:30,2023-02-08 18:31,NotPrmUser,NotPrmUser,
141804,27172,55031,178,0,N,1,N,N,CP_Drtn,TT_Task,DT_FixedDUR2,TK_NotStart,PRO1000,Civil BOM - Long Lead @ 30%,,680,0,120,0,0,0,120,0,0,0,,,,2025-04-04 08:00,2025-04-24 16:00,,2024-12-06 08:00,2024-12-26 16:00,2024-12-06 08:00,2024-12-26 16:00,2024-12-06 08:00,2024-12-26 16:00,2025-04-04 08:00,2025-04-24 16:00,,PT_Normal,,,,,o5UgQTLbjU+kvEXCb/pJRw,I2eweoOth0qJaoRCY2mSvA,,,N,0,0,,,2023-02-08 18:30,2023-02-08 18:31,NotPrmUser,NotPrmUser,
141805,27172,55031,178,0,N,1,N,N,CP_Drtn,TT_Task,DT_FixedDUR2,TK_NotStart,PRO1020,Electrical BOM - Long Lead @ 60%,,920,0,120,0,0,0,120,0,0,0,,,,2025-07-25 08:00,2025-08-14 16:00,,2025-02-14 08:00,2025-03-06 16:00,2025-02-14 08:00,2025-03-06 16:00,2025-02-14 08:00,2025-03-06 16:00,2025-07-25 08:00,2025-08-14 16:00,,PT_Normal,,,,,mfhkEEMG20aXAYir3QVkrw,UlMXuOsH6EySokgGs93m6A,,,N,0,0,,,2023-02-08 18:30,2023-02-08 18:31,NotPrmUser,NotPrmUser,
141806,27172,55031,178,0,N,1,N,N,CP_Drtn,TT_Task,DT_FixedDUR2,TK_NotStart,PRO1040,BOM - Short Lead @ 60%,,600,0,120,0,0,0,120,0,0,0,,,,2025-09-26 08:00,2025-10-16 16:00,,2025-06-13 08:00,2025-07-03 16:00,2025-06-13 08:00,2025-07-03 16:00,2025-06-13 08:00,2025-07-03 16:00,2025-09-26 08:00,2025-10-16 16:00,,PT_Normal,,,,,OGl27rbvXEOwNM8KZZft1w,WGDLULnbdEqtUrQF3ustag,,,N,0,0,,,2023-02-08 18:30,2023-02-08 18:31,NotPrmUser,NotPrmUser,
141807,27172,55032,178,0,N,1,N,N,CP_Drtn,TT_Task,DT_FixedDUR2,TK_NotStart,PER1000,CalTrans Permit,,0,0,2000,0,0,0,2000,0,0,0,,,,2024-12-06 08:00,2025-11-20 16:00,,2024-12-06 08:00,2025-11-20 16:00,2024-12-06 08:00,2025-11-20 16:00,2024-12-06 08:00,2025-11-20 16:00,2024-12-06 08:00,2025-11-20 16:00,,PT_Normal,,,,,G40Hidje60irYidhYZ4iJg,3VJEGKaMukWd66NBFrcpgw,,,Y,0,0,,,2023-02-08 18:30,2023-02-08 18:31,NotPrmUser,NotPrmUser,
141808,27172,55032,178,0,N,1,N,N,CP_Drtn,TT_Task,DT_FixedDUR2,TK_NotStart,PER1010,City & County Permits,,1200,1200,800,0,0,0,800,0,0,0,,,,2025-07-04 08:00,2025-11-20 16:00,,2024-12-06 08:00,2025-04-24 16:00,2024-12-06 08:00,2025-04-24 16:00,2024-12-06 08:00,2025-04-24 16:00,2025-07-04 08:00,2025-11-20 16:00,,PT_Normal,,,,,+r64kJjTr0SQ3BIk+bBrTQ,2mGmtyaYLkum+UDyJQuKUQ,,,N,0,0,,,2023-02-08 18:30,2023-02-08 18:31,NotPrmUser,NotPrmUser,
141809,27172,55032,178,0,N,1,N,N,CP_Drtn,TT_Task,DT_FixedDUR2,TK_NotStart,PER1020,Other Permit (TBD),,1200,1200,800,0,0,0,800,0,0,0,,,,2025-07-04 08:00,2025-11-20 16:00,,2024-12-06 08:00,2025-04-24 16:00,2024-12-06 08:00,2025-04-24 16:00,2024-12-06 08:00,2025-04-24 16:00,2025-07-04 08:00,2025-11-20 16:00,,PT_Normal,,,,,yr6qLnkHZ0GDNF3FmR3fZQ,vmqY68PoakKKRsfRxezLmA,,,N,0,0,,,2023-02-08 18:30,2023-02-08 18:31,NotPrmUser,NotPrmUser,
141810,27172,55033,178,0,N,1,N,N,CP_Drtn,TT_Task,DT_FixedDUR2,TK_NotStart,PUB1000,Public Affairs / Community Outreach,,6216,6216,800,0,0,0,800,0,0,0,,,,2028-03-07 08:00,2028-07-24 16:00,,2025-03-14 08:00,2025-07-31 16:00,2025-03-14 08:00,2025-07-31 16:00,2025-03-14 08:00,2025-07-31 16:00,2028-03-07 08:00,2028-07-24 16:00,,PT_Normal,,,,,rXdAGo1cXUexFBkI96o2mA,0jjgEi0r6UGw5ok4IsS9Bw,,,N,0,0,,,2023-02-08 18:30,2023-02-08 18:31,NotPrmUser,NotPrmUser,
141811,27172,55034,178,0,N,1,N,N,CP_Drtn,TT_Task,DT_FixedDUR2,TK_NotStart,LAN1000,Land Rights and Easement Acquisition,,880,880,1200,0,0,0,1200,0,0,0,,,,2025-04-25 08:00,2025-11-20 16:00,,2024-11-22 08:00,2025-06-19 16:00,2024-11-22 08:00,2025-06-19 16:00,2024-11-22 08:00,2025-06-19 16:00,2025-04-25 08:00,2025-11-20 16:00,,PT_Normal,,,,,idcOW0BhuEO+5X8LS7KBMg,yW1n3cW9VkOqZgKHz/InBQ,,,N,0,0,,,2023-02-08 18:30,2023-02-08 18:31,NotPrmUser,NotPrmUser,
141812,27172,55034,178,0,N,1,N,N,CP_Drtn,TT_Task,DT_FixedDUR2,TK_NotStart,LAN1010,Tribal Land Rights,,880,880,1200,0,0,0,1200,0,0,0,,,,2025-04-25 08:00,2025-11-20 16:00,,2024-11-22 08:00,2025-06-19 16:00,2024-11-22 08:00,2025-06-19 16:00,2024-11-22 08:00,2025-06-19 16:00,2025-04-25 08:00,2025-11-20 16:00,,PT_Normal,,,,,X2ep3QaGmUahwFf90Jo7NQ,cjllV71Cq0C0iAlNRnx/dQ,,,N,0,0,,,2023-02-08 18:30,2023-02-08 18:31,NotPrmUser,NotPrmUser,
141813,27172,55034,178,0,N,1,N,N,CP_Drtn,TT_Task,DT_FixedDUR2,TK_NotStart,LAN1020,Laydown Yards,,880,880,1200,0,0,0,1200,0,0,0,,,,2025-04-25 08:00,2025-11-20 16:00,,2024-11-22 08:00,2025-06-19 16:00,2024-11-22 08:00,2025-06-19 16:00,2024-11-22 08:00,2025-06-19 16:00,2025-04-25 08:00,2025-11-20 16:00,,PT_Normal,,,,,4fuADLEwB0OdD0v2uSyIYQ,lENdwCrmkUq2hCThZJb+fw,,,N,0,0,,,2023-02-08 18:30,2023-02-08 18:31,NotPrmUser,NotPrmUser,
141814,27172,55035,178,0,N,1,N,N,CP_Drtn,TT_Task,DT_FixedDUR2,TK_NotStart,ENV1000,10% Environmental Submittal,,880,0,200,0,0,0,200,0,0,0,,,,2025-01-10 08:00,2025-02-13 16:00,,2024-08-09 08:00,2024-09-12 16:00,2024-08-09 08:00,2024-09-12 16:00,2024-08-09 08:00,2024-09-12 16:00,2025-01-10 08:00,2025-02-13 16:00,,PT_Normal,,,,,Mdwme8bx40O50BFLNtHg0Q,VusPZGxMskWgIev2hRGRVQ,,,N,0,0,,,2023-02-08 18:30,2023-02-08 18:31,NotPrmUser,NotPrmUser,
141815,27172,55035,178,0,N,1,N,N,CP_Drtn,TT_Task,DT_FixedDUR2,TK_NotStart,ENV1010,10% Environmental Review,,880,0,120,0,0,0,120,0,0,0,,,,2025-02-14 08:00,2025-03-06 16:00,,2024-09-13 08:00,2024-10-03 16:00,2024-09-13 08:00,2024-10-03 16:00,2024-09-13 08:00,2024-10-03 16:00,2025-02-14 08:00,2025-03-06 16:00,,PT_Normal,,,,,SDvI/kSCo0eZ3SRdMQ0XUQ,U2SpACJnVk2TubffyhNoyQ,,,N,0,0,,,2023-02-08 18:30,2023-02-08 18:31,NotPrmUser,NotPrmUser,
141816,27172,55035,178,0,N,1,N,N,CP_Drtn,TT_Task,DT_FixedDUR2,TK_NotStart,ENV1020,30% Environmental Submittal,,840,0,200,0,0,0,200,0,0,0,,,,2025-06-27 08:00,2025-07-31 16:00,,2025-01-31 08:00,2025-03-06 16:00,2025-01-31 08:00,2025-03-06 16:00,2025-01-31 08:00,2025-03-06 16:00,2025-06-27 08:00,2025-07-31 16:00,,PT_Normal,,,,,yE6uY/lN2EC43vqY1PtxdA,jHax/rJ9k0+4gPxRKywxBw,,,N,0,0,,,2023-02-08 18:30,2023-02-08 18:31,NotPrmUser,NotPrmUser,
141817,27172,55035,178,0,N,1,N,N,CP_Drtn,TT_Task,DT_FixedDUR2,TK_NotStart,ENV1030,30% Environmental Review,,840,0,120,0,0,0,120,0,0,0,,,,2025-08-01 08:00,2025-08-21 16:00,,2025-03-07 08:00,2025-03-27 16:00,2025-03-07 08:00,2025-03-27 16:00,2025-03-07 08:00,2025-03-27 16:00,2025-08-01 08:00,2025-08-21 16:00,,PT_Normal,,,,,zg8Mils7F06PdfH3DHt/vA,w2PCvsq890yNp1TLbsi2Qg,,,N,0,0,,,2023-02-08 18:30,2023-02-08 18:31,NotPrmUser,NotPrmUser,
141818,27172,55035,178,0,N,1,N,N,CP_Drtn,TT_Task,DT_FixedDUR2,TK_NotStart,ENV1040,60% Environmental Submittal,,840,0,280,0,0,0,280,0,0,0,,,,2025-08-22 08:00,2025-10-09 16:00,,2025-03-28 08:00,2025-05-15 16:00,2025-03-28 08:00,2025-05-15 16:00,2025-03-28 08:00,2025-05-15 16:00,2025-08-22 08:00,2025-10-09 16:00,,PT_Normal,,,,,v4tfiEdFGECc9x7VHemOhg,gY5R9Z2f1EmxdCEutFgJBA,,,N,0,0,,,2023-02-08 18:30,2023-02-08 18:31,NotPrmUser,NotPrmUser,
141819,27172,55035,178,0,N,1,N,N,CP_Drtn,TT_Task,DT_FixedDUR2,TK_NotStart,ENV1050,60% Environmental Release,,960,960,120,0,0,0,120,0,0,0,,,,2025-10-31 08:00,2025-11-20 16:00,,2025-05-16 08:00,2025-06-05 16:00,2025-05-16 08:00,2025-06-05 16:00,2025-05-16 08:00,2025-06-05 16:00,2025-10-31 08:00,2025-11-20 16:00,,PT_Normal,,,,,+ehzj5VyNEytmG/kvP8z3Q,PwkrgfrumU+KtwlGo4vYeA,,,N,0,0,,,2023-02-08 18:30,2023-02-08 18:31,NotPrmUser,NotPrmUser,
141820,27172,55035,178,0,N,1,N,N,CP_Drtn,TT_Task,DT_FixedDUR2,TK_NotStart,ENV1060,BIA NEPA Submittal,,840,0,80,0,0,0,80,0,0,0,,,,2025-10-10 08:00,2025-10-23 16:00,,2025-05-16 08:00,2025-05-29 16:00,2025-05-16 08:00,2025-05-29 16:00,2025-05-16 08:00,2025-05-29 16:00,2025-10-10 08:00,2025-10-23 16:00,,PT_Normal,,,,,3Z2IBHDkq0CEDQuIvqFA/g,sMZePJsBQkW6NACOinNXEQ,,,N,0,0,,,2023-02-08 18:30,2023-02-08 18:31,NotPrmUser,NotPrmUser,
141821,27172,55035,178,0,N,1,N,N,CP_Drtn,TT_Task,DT_FixedDUR2,TK_NotStart,ENV1070,"BIA Received (Add 250 days, if needed)",,840,840,160,0,0,0,160,0,0,0,,,,2025-10-24 08:00,2025-11-20 16:00,,2025-05-30 08:00,2025-06-26 16:00,2025-05-30 08:00,2025-06-26 16:00,2025-05-30 08:00,2025-06-26 16:00,2025-10-24 08:00,2025-11-20 16:00,,PT_Normal,,,,,k10SBThIlEu6P2JbQfbZig,J+DZJ9p5bUSG3825T3Ihvg,,,N,0,0,,,2023-02-08 18:30,2023-02-08 18:31,NotPrmUser,NotPrmUser,
141822,27172,55025,178,0,N,1,N,N,CP_Drtn,TT_Task,DT_FixedDUR2,TK_NotStart,DES1010,Seismic / Geotech Submittal,,880,0,200,0,0,0,200,0,0,0,,,,2025-03-07 08:00,2025-04-10 16:00,,2024-10-04 08:00,2024-11-07 16:00,2024-10-04 08:00,2024-11-07 16:00,2024-10-04 08:00,2024-11-07 16:00,2025-03-07 08:00,2025-04-10 16:00,,PT_Normal,,,,,9mnZ1sM2P0qnlmId5QZBvQ,zzFEEWlbU0eDgFKpyy3njw,,,N,0,0,,,2023-02-08 18:30,2023-02-08 18:31,NotPrmUser,NotPrmUser,
141823,27172,55025,178,0,N,1,N,N,CP_Drtn,TT_Task,DT_FixedDUR2,TK_NotStart,DES1020,Potholing Submittal,,880,40,200,0,0,0,200,0,0,0,,,,2025-04-11 08:00,2025-05-15 16:00,,2024-11-08 08:00,2024-12-12 16:00,2024-11-08 08:00,2024-12-12 16:00,2024-11-08 08:00,2024-12-12 16:00,2025-04-11 08:00,2025-05-15 16:00,,PT_Normal,,,,,bu96LsbiMEKlEpLek/cvpA,VSFrCpxkXU6y2Pr4wvRweA,,,N,0,0,,,2023-02-08 18:30,2023-02-08 18:31,NotPrmUser,NotPrmUser,
141824,27172,55025,178,0,N,1,N,N,CP_Drtn,TT_Task,DT_FixedDUR2,TK_NotStart,DES1030,Potholing Release /Perform Potholing,,840,0,240,0,0,0,240,0,0,0,,,,2025-05-16 08:00,2025-06-26 16:00,,2024-12-20 08:00,2025-01-30 16:00,2024-12-20 08:00,2025-01-30 16:00,2024-12-20 08:00,2025-01-30 16:00,2025-05-16 08:00,2025-06-26 16:00,,PT_Normal,,,,,l/JWUoW4lUe6sd2+hNN4jg,0K1yRiZmi0aj7tLlcMVV/A,,,N,0,0,,,2023-02-08 18:30,2023-02-08 18:31,NotPrmUser,NotPrmUser,
141825,27172,55037,178,0,N,1,N,N,CP_Drtn,TT_Task,DT_FixedDUR2,TK_NotStart,PCON100,Initiate Performance Partnering Process @ 60%,,1000,0,40,0,0,0,40,0,0,0,,,,2025-09-19 08:00,2025-09-25 16:00,,2025-03-28 08:00,2025-04-03 16:00,2025-03-28 08:00,2025-04-03 16:00,2025-03-28 08:00,2025-04-03 16:00,2025-09-19 08:00,2025-09-25 16:00,,PT_Normal,,,,,TixWNlpMYk2iH84u4hjnKA,nqL7myWK6EuonYr16bsxUQ,,,N,0,0,,,2023-02-08 18:30,2023-02-08 18:31,NotPrmUser,NotPrmUser,
141826,27172,55037,178,0,N,1,N,N,CP_Drtn,TT_Task,DT_FixedDUR2,TK_NotStart,PCON110,Receive Estimate from Contractor,,1000,0,120,0,0,0,120,0,0,0,,,,2025-09-26 08:00,2025-10-16 16:00,,2025-04-04 08:00,2025-04-24 16:00,2025-04-04 08:00,2025-04-24 16:00,2025-04-04 08:00,2025-04-24 16:00,2025-09-26 08:00,2025-10-16 16:00,,PT_Normal,,,,,BUgIEVykYESHQgfNGCMgPA,OMNKKr+bxEOhpc2PO8E0XA,,,N,0,0,,,2023-02-08 18:30,2023-02-08 18:31,NotPrmUser,NotPrmUser,
141827,27172,55037,178,0,N,1,N,N,CP_Drtn,TT_Task,DT_FixedDUR2,TK_NotStart,PCON120,Bid Estimate Negotiations,,1000,0,80,0,0,0,80,0,0,0,,,,2025-10-17 08:00,2025-10-30 16:00,,2025-04-25 08:00,2025-05-08 16:00,2025-04-25 08:00,2025-05-08 16:00,2025-04-25 08:00,2025-05-08 16:00,2025-10-17 08:00,2025-10-30 16:00,,PT_Normal,,,,,VgVm1QJVKUyxcawAUe9DgA,UnNNyu3yUE6bqNN9Yas5Hg,,,N,0,0,,,2023-02-08 18:30,2023-02-08 18:31,NotPrmUser,NotPrmUser,
141828,27172,55037,178,0,N,1,N,N,CP_Drtn,TT_Task,DT_FixedDUR2,TK_NotStart,PCON130,Revise Estimate based on IFC,,1000,0,40,0,0,0,40,0,0,0,,,,2025-10-31 08:00,2025-11-06 16:00,,2025-05-09 08:00,2025-05-15 16:00,2025-05-09 08:00,2025-05-15 16:00,2025-05-09 08:00,2025-05-15 16:00,2025-10-31 08:00,2025-11-06 16:00,,PT_Normal,,,,,3Hs+0ykZ2ECP1glDYxXswg,mL/6RI3VY0GbOwjp51DOOQ,,,N,0,0,,,2023-02-08 18:30,2023-02-08 18:31,NotPrmUser,NotPrmUser,
141829,27172,55037,178,0,N,1,N,N,CP_Drtn,TT_Task,DT_FixedDUR2,TK_NotStart,PCON140,Issue Release,,1000,1000,80,0,0,0,80,0,0,0,,,,2025-11-07 08:00,2025-11-20 16:00,,2025-05-16 08:00,2025-05-29 16:00,2025-05-16 08:00,2025-05-29 16:00,2025-05-16 08:00,2025-05-29 16:00,2025-11-07 08:00,2025-11-20 16:00,,PT_Normal,,,,,jCs3YlztYkGWDZyUayiVnQ,xzXYGsGc3Um87uWqp3x6vA,,,N,0,0,,,2023-02-08 18:30,2023-02-08 18:31,NotPrmUser,NotPrmUser,
141830,27172,55039,178,0,N,1,N,N,CP_Drtn,TT_Task,DT_FixedDUR2,TK_NotStart,PCON200,Civil Pre-Construction Meeting (Civil Construction Ready),,0,0,40,0,0,0,40,0,0,0,,,,2025-11-21 08:00,2025-11-27 16:00,,2025-11-21 08:00,2025-11-27 16:00,2025-11-21 08:00,2025-11-27 16:00,2025-11-21 08:00,2025-11-27 16:00,2025-11-21 08:00,2025-11-27 16:00,,PT_Normal,,,,,jHifeTIvM0SCfSb+AsaeIw,yT+QX/Gh0EWqhfqYAB6rWQ,,,Y,0,0,,,2023-02-08 18:30,2023-02-08 18:31,NotPrmUser,NotPrmUser,
141831,27172,55039,178,0,N,1,N,N,CP_Drtn,TT_Task,DT_FixedDUR2,TK_NotStart,PCON210,Electrical - Pre-Construction Meeting (Electical Construction Ready),,240,0,40,0,0,0,40,0,0,0,,,,2026-01-02 08:00,2026-01-08 16:00,,2025-11-21 08:00,2025-11-27 16:00,2025-11-21 08:00,2025-11-27 16:00,2025-11-21 08:00,2025-11-27 16:00,2026-01-02 08:00,2026-01-08 16:00,,PT_Normal,,,,,flR05fudIki2P1R8eXswWw,Lih9Zcg9DkSLwVwIcN6XAw,,,N,0,0,,,2023-02-08 18:30,2023-02-08 18:31,NotPrmUser,NotPrmUser,
141832,27172,55038,178,0,N,1,N,N,CP_Drtn,TT_Task,DT_FixedDUR2,TK_NotStart,PCON150,Initiate Performance Partnering Process @ 60%,,1480,0,40,0,0,0,40,0,0,0,,,,2025-10-31 08:00,2025-11-06 16:00,,2025-02-14 08:00,2025-02-20 16:00,2025-02-14 08:00,2025-02-20 16:00,2025-02-14 08:00,2025-02-20 16:00,2025-10-31 08:00,2025-11-06 16:00,,PT_Normal,,,,,VnJdB1QJTUCCC5xyqlRuXg,2WTYiIqNxEKPqoqg7NI3kQ,,,N,0,0,,,2023-02-08 18:30,2023-02-08 18:31,NotPrmUser,NotPrmUser,
141833,27172,55038,178,0,N,1,N,N,CP_Drtn,TT_Task,DT_FixedDUR2,TK_NotStart,PCON160,Receive Estimate from Contractor,,1480,0,120,0,0,0,120,0,0,0,,,,2025-11-07 08:00,2025-11-27 16:00,,2025-02-21 08:00,2025-03-13 16:00,2025-02-21 08:00,2025-03-13 16:00,2025-02-21 08:00,2025-03-13 16:00,2025-11-07 08:00,2025-11-27 16:00,,PT_Normal,,,,,U6YFNohQ7EeesD4bwqfbgg,iYOmTDFRnkKVgs9NxpSNjg,,,N,0,0,,,2023-02-08 18:30,2023-02-08 18:31,NotPrmUser,NotPrmUser,
141834,27172,55038,178,0,N,1,N,N,CP_Drtn,TT_Task,DT_FixedDUR2,TK_NotStart,PCON170,Bid Estimate Negotiations,,1480,0,80,0,0,0,80,0,0,0,,,,2025-11-28 08:00,2025-12-11 16:00,,2025-03-14 08:00,2025-03-27 16:00,2025-03-14 08:00,2025-03-27 16:00,2025-03-14 08:00,2025-03-27 16:00,2025-11-28 08:00,2025-12-11 16:00,,PT_Normal,,,,,vX7j2PqS/EqVyvI9vBNcMQ,dgolMhiEqEawmDFGwY+wUg,,,N,0,0,,,2023-02-08 18:30,2023-02-08 18:31,NotPrmUser,NotPrmUser,
141835,27172,55038,178,0,N,1,N,N,CP_Drtn,TT_Task,DT_FixedDUR2,TK_NotStart,PCON180,Revise Estimate based on IFC,,1480,0,40,0,0,0,40,0,0,0,,,,2025-12-12 08:00,2025-12-18 16:00,,2025-03-28 08:00,2025-04-03 16:00,2025-03-28 08:00,2025-04-03 16:00,2025-03-28 08:00,2025-04-03 16:00,2025-12-12 08:00,2025-12-18 16:00,,PT_Normal,,,,,JWPqh3MIYUe3lsbDK0M3Pg,BTEFKTtVVkaj6XglyXIrhQ,,,N,0,0,,,2023-02-08 18:30,2023-02-08 18:31,NotPrmUser,NotPrmUser,
141836,27172,55038,178,0,N,1,N,N,CP_Drtn,TT_Task,DT_FixedDUR2,TK_NotStart,PCON190,Issue Release,,1480,1240,80,0,0,0,80,0,0,0,,,,2025-12-19 08:00,2026-01-01 16:00,,2025-04-04 08:00,2025-04-17 16:00,2025-04-04 08:00,2025-04-17 16:00,2025-04-04 08:00,2025-04-17 16:00,2025-12-19 08:00,2026-01-01 16:00,,PT_Normal,,,,,yHFJMVKfIky+3ghHoXhx/g,g4aHT+Y9FUediWTj1sEc7w,,,N,0,0,,,2023-02-08 18:30,2023-02-08 18:31,NotPrmUser,NotPrmUser,
141837,27172,55031,178,0,N,1,N,N,CP_Drtn,TT_Task,DT_FixedDUR2,TK_NotStart,PRO1010,Order Long Lead Civil Material,,680,680,1200,0,0,0,1200,0,0,0,,,,2025-04-25 08:00,2025-11-20 16:00,,2024-12-27 08:00,2025-07-24 16:00,2024-12-27 08:00,2025-07-24 16:00,2024-12-27 08:00,2025-07-24 16:00,2025-04-25 08:00,2025-11-20 16:00,,PT_Normal,,,,,2j8scHOjXEaoU8vpHCs32g,nNvuUsZQt0iIKb8U/yZTyQ,,,N,0,0,,,2023-02-08 18:30,2023-02-08 18:31,NotPrmUser,NotPrmUser,
141838,27172,55031,178,0,N,1,N,N,CP_Drtn,TT_Task,DT_FixedDUR2,TK_NotStart,PRO1050,Order Short Lead Materials,,600,600,200,0,0,0,200,0,0,0,,,,2025-10-17 08:00,2025-11-20 16:00,,2025-07-04 08:00,2025-08-07 16:00,2025-07-04 08:00,2025-08-07 16:00,2025-07-04 08:00,2025-08-07 16:00,2025-10-17 08:00,2025-11-20 16:00,,PT_Normal,,,,,siS8ZUiQQ0Gcfh+ph/wAAg,fu6nOCKzDEiTwC8ACEchAg,,,N,0,0,,,2023-02-08 18:30,2023-02-08 18:31,NotPrmUser,NotPrmUser,
141839,27172,55031,178,0,N,1,N,N,CP_Drtn,TT_Task,DT_FixedDUR2,TK_NotStart,PRO1030,Order Long Lead Electrical Materials,,920,680,800,0,0,0,800,0,0,0,,,,2025-08-15 08:00,2026-01-01 16:00,,2025-03-07 08:00,2025-07-24 16:00,2025-03-07 08:00,2025-07-24 16:00,2025-03-07 08:00,2025-07-24 16:00,2025-08-15 08:00,2026-01-01 16:00,,PT_Normal,,,,,Kjs5wTctiECmxZcUtpdE4w,cU/H1CQEw0uPNsJozOSxJA,,,N,0,0,,,2023-02-08 18:30,2023-02-08 18:31,NotPrmUser,NotPrmUser,
141840,27172,55041,178,0,N,1,N,N,CP_Drtn,TT_Task,DT_FixedDUR2,TK_NotStart,CON2000,Civil Construction (Trenching 300 feet/day),7730,0,0,3520,0,7208,7208,3520,0,0,0,,,,2025-11-28 08:00,2027-08-05 16:00,,2025-11-28 08:00,2027-08-05 16:00,2025-11-28 08:00,2027-08-05 16:00,2025-11-28 08:00,2027-08-05 16:00,2025-11-28 08:00,2027-08-05 16:00,,PT_Normal,,,,,C7eWBCC0sU2sMOG7k7qB1g,NhaPLTK6Ik+31FvS6g0Sng,,,Y,0,0,,,2023-02-08 18:30,2023-02-08 19:12,NotPrmUser,NotPrmUser,
141841,27172,55042,178,0,N,1,N,N,CP_Drtn,TT_Task,DT_FixedDUR2,TK_NotStart,CON3000,Electrical Construction,7786,0,0,3280,0,1640,1640,3280,0,0,0,,,,2026-01-09 08:00,2027-08-05 16:00,,2026-01-09 08:00,2027-08-05 16:00,2026-01-09 08:00,2027-08-05 16:00,2026-01-09 08:00,2027-08-05 16:00,2026-01-09 08:00,2027-08-05 16:00,,PT_Normal,,,,,+fPAvaHhhkWTdILAUn0RMw,hCINqAHFmUCrYTjHHPlW7g,,,Y,0,0,,,2023-02-08 18:30,2023-02-08 19:36,NotPrmUser,NotPrmUser,
141842,27172,55043,178,0,N,1,N,N,CP_Drtn,TT_Task,DT_FixedDUR2,TK_NotStart,CON4000,Service Cutover,,1056,0,2920,0,0,0,2920,0,0,0,,,,2026-09-15 08:00,2028-02-07 16:00,,2026-03-13 08:00,2027-08-05 16:00,2026-03-13 08:00,2027-08-05 16:00,2026-03-13 08:00,2027-08-05 16:00,2026-09-15 08:00,2028-02-07 16:00,,PT_Normal,,,,,wja3nkyf8EWIr+e8lv7inA,hgdTWUDd90mEStNnc1ZERQ,,,N,0,0,,,2023-02-08 18:30,2023-02-08 18:31,NotPrmUser,NotPrmUser,
141843,27172,55044,178,0,N,1,N,N,CP_Drtn,TT_Task,DT_FixedDUR2,TK_NotStart,CON5000,Scada Construction,,1056,0,520,0,0,0,520,0,0,0,,,,2027-11-09 08:00,2028-02-07 16:00,,2027-05-07 08:00,2027-08-05 16:00,2027-05-07 08:00,2027-08-05 16:00,2027-05-07 08:00,2027-08-05 16:00,2027-11-09 08:00,2028-02-07 16:00,,PT_Normal,,,,,2rCISfPNhECud8b105taRw,VBK0tevuHUGDcEwef35rMg,,,N,0,0,,,2023-02-08 18:30,2023-02-08 18:31,NotPrmUser,NotPrmUser,
141844,27172,55045,178,0,N,1,N,N,CP_Drtn,TT_Task,DT_FixedDUR2,TK_NotStart,CON6000,Substation Construction,,1056,0,520,0,0,0,520,0,0,0,,,,2027-11-09 08:00,2028-02-07 16:00,,2027-05-07 08:00,2027-08-05 16:00,2027-05-07 08:00,2027-08-05 16:00,2027-05-07 08:00,2027-08-05 16:00,2027-11-09 08:00,2028-02-07 16:00,,PT_Normal,,,,,074DVonGRkSiO5OwBGrvUA,DVvEgTbAaEiTMcBgc8fK+Q,,,N,0,0,,,2023-02-08 18:30,2023-02-08 18:31,NotPrmUser,NotPrmUser,
141845,27172,55046,178,0,N,1,N,N,CP_Drtn,TT_Task,DT_FixedDrtn,TK_NotStart,CON7000,Overhead RFS (1000 feet per day),7785,0,0,1056,0,1056,1056,1056,0,0,0,,,,2027-08-06 08:00,2028-02-07 16:00,,2027-08-06 08:00,2028-02-07 16:00,2027-08-06 08:00,2028-02-07 16:00,2027-08-06 08:00,2028-02-07 16:00,2027-08-06 08:00,2028-02-07 16:00,,PT_Normal,,,,,QjtW0VO0bUqTI5edCEvfbg,0GbBAn+K9UOzcc1Z2V2U3A,,,Y,0,0,,,2023-02-08 18:30,2023-02-08 18:31,NotPrmUser,NotPrmUser,
141846,27172,55040,178,0,N,1,N,N,CP_Drtn,TT_Task,DT_FixedDUR2,TK_NotStart,ISD1000,ISD - Energize - Put in service,,2008,2008,8,0,0,0,8,25,0,25,,,,2028-07-24 08:00,2028-07-24 16:00,,2027-08-06 08:00,2027-08-06 16:00,2027-08-06 08:00,2027-08-06 16:00,2027-08-06 08:00,2027-08-06 16:00,2028-07-24 08:00,2028-07-24 16:00,,PT_Normal,,,,,Yydzbi8BQU2cOZVRmE47AA,bEei9cYW5E6NKAk54AF/Pw,,,N,0,0,,,2023-02-08 18:30,2023-02-08 18:31,NotPrmUser,NotPrmUser,
141847,27172,55023,178,0,N,1,N,N,CP_Drtn,TT_Task,DT_FixedDUR2,TK_NotStart,SUR1000,Survey and LiDAR,7385,0,0,400,0,9182,9182,400,0,0,0,,,,2024-05-31 08:00,2024-08-08 16:00,,2024-05-31 08:00,2024-08-08 16:00,2024-05-31 08:00,2024-08-08 16:00,2024-05-31 08:00,2024-08-08 16:00,2024-05-31 08:00,2024-08-08 16:00,,PT_Normal,,,,,gEMnA73f2EOShd+YCsNyjw,9cebTEENcUqJAaOf4qe0Hw,,,Y,0,0,,,2023-02-08 18:30,2023-02-08 18:31,NotPrmUser,NotPrmUser,
141848,27172,55028,178,0,N,1,N,N,CP_Drtn,TT_Task,DT_FixedDUR2,TK_NotStart,DES1200,Receive Services Worksheet and Cable Info from Design Firms,,760,0,160,0,0,0,160,0,0,0,,,,2025-02-21 08:00,2025-03-20 16:00,,2024-10-11 08:00,2024-11-07 16:00,2024-10-11 08:00,2024-11-07 16:00,2024-10-11 08:00,2024-11-07 16:00,2025-02-21 08:00,2025-03-20 16:00,,PT_Normal,,,,,zsyrrTI8NkSSwJeKqqNGTg,z5U3nBl4h02hPId9vyVS3Q,,,N,0,0,,,2023-02-08 18:30,2023-02-08 18:31,NotPrmUser,NotPrmUser,
141849,27172,55028,178,0,N,1,N,N,CP_Drtn,TT_Task,DT_FixedDUR2,TK_NotStart,DES1210,Issue to Trench Inspectors,,2376,1320,80,0,0,0,80,0,0,0,,,,2026-09-01 08:00,2026-09-14 16:00,,2025-07-11 08:00,2025-07-24 16:00,2025-07-11 08:00,2025-07-24 16:00,2025-07-11 08:00,2025-07-24 16:00,2026-09-01 08:00,2026-09-14 16:00,,PT_Normal,,,,,lZzForDDC02EnEPZ7YAyeA,WPXb0SwOGUyukNplNMMfZQ,,,N,0,0,,,2023-02-08 18:30,2023-02-08 18:31,NotPrmUser,NotPrmUser,
141850,27172,55040,178,0,N,1,N,N,CP_Drtn,TT_FinMile,DT_FixedDrtn,TK_NotStart,CON1020,Construction Complete,,0,0,0,0,0,0,0,0,0,0,,,,2028-02-07 16:00,2028-02-07 16:00,,2028-02-07 16:00,2028-02-07 16:00,2028-02-07 16:00,2028-02-07 16:00,2028-02-07 16:00,2028-02-07 16:00,2028-02-07 16:00,2028-02-07 16:00,,PT_Normal,,,,,RIBTklwO1EKvf4R5yJQu+w,UTwgiMejpESbswXjZ1fwmg,,,Y,0,0,,,2023-02-08 18:30,2023-02-08 18:31,NotPrmUser,NotPrmUser,
141851,27172,55040,178,0,N,1,N,N,CP_Drtn,TT_Mile,DT_FixedDrtn,TK_NotStart,CON1010,Construction Start,,5536,5536,0,0,0,0,0,0,0,0,,,,2028-07-24 16:00,2028-07-24 16:00,,2025-11-28 08:00,2025-11-28 08:00,2025-11-28 08:00,2025-11-28 08:00,2025-11-28 08:00,2025-11-28 08:00,2028-07-24 16:00,2028-07-24 16:00,,PT_Normal,,,,,IRt7Us4xMkix4auHGDebJA,dzt3K4MQ30mjDbteSdr7aQ,,,N,0,0,,,2023-02-08 18:30,2023-02-08 18:31,NotPrmUser,NotPrmUser,
141852,27172,55049,178,0,N,1,N,N,CP_Drtn,TT_Task,DT_FixedDUR2,TK_NotStart,CLO1020,GIS/As-Built and Records Complete,,480,480,480,0,0,0,480,0,0,0,,,,2028-05-02 08:00,2028-07-24 16:00,,2028-02-08 08:00,2028-05-01 16:00,2028-02-08 08:00,2028-05-01 16:00,2028-02-08 08:00,2028-05-01 16:00,2028-05-02 08:00,2028-07-24 16:00,,PT_Normal,,,,,DNru+053OEuyhca+XFMRwA,1glVdZ4KPUiXS+URh0LQkA,,,N,0,0,,,2023-02-08 18:30,2023-02-08 18:31,NotPrmUser,NotPrmUser,
141853,27172,55050,178,0,N,1,N,N,CP_Drtn,TT_Task,DT_FixedDUR2,TK_NotStart,CLO1030,"PO's complete, Work Order Reconcilled and Closed",,0,0,960,0,0,0,960,0,0,0,,,,2028-02-08 08:00,2028-07-24 16:00,,2028-02-08 08:00,2028-07-24 16:00,2028-02-08 08:00,2028-07-24 16:00,2028-02-08 08:00,2028-07-24 16:00,2028-02-08 08:00,2028-07-24 16:00,,PT_Normal,,,,,rBZlZKOy4kqF32xnqz82/g,FBgKt5hIdkicwpQ6xq4vsg,,,Y,0,0,,,2023-02-08 18:30,2023-02-08 18:31,NotPrmUser,NotPrmUser,
141854,27172,55048,178,0,N,1,N,N,CP_Drtn,TT_FinMile,DT_FixedDrtn,TK_NotStart,CLO1010,Project Complete,,0,0,0,0,0,0,0,0,0,0,,,,2028-07-24 16:00,2028-07-24 16:00,,2028-07-24 16:00,2028-07-24 16:00,2028-07-24 16:00,2028-07-24 16:00,2028-07-24 16:00,2028-07-24 16:00,2028-07-24 16:00,2028-07-24 16:00,,PT_Normal,,,,,SO0LkakbN0uUBEqZjOCWJw,zVrGWRG8fkSHFlk29OXyYw,,,Y,0,0,,,2023-02-08 18:30,2023-02-08 18:31,NotPrmUser,NotPrmUser,
141855,27172,55024,178,0,N,1,N,N,CP_Drtn,TT_LOE,DT_FixedDUR2,TK_NotStart,DES1000,Design Summary,7257,4096,0,2680,0,16233,16233,2680,0,0,0,,,,2024-08-09 08:00,2027-11-08 16:00,,2024-08-09 08:00,2025-11-20 16:00,2024-08-09 08:00,2025-11-20 16:00,2024-08-09 08:00,2025-11-20 16:00,2024-08-09 08:00,2027-11-08 16:00,,PT_Normal,,,,,AimNA/nrzU2Nz9QN5aYU0g,K/hVYQrBS0OK4qcdrw+ZBQ,,,Y,0,0,,,2023-02-08 18:30,2023-02-08 18:31,NotPrmUser,NotPrmUser,
141856,27172,55040,178,0,N,1,N,N,CP_Drtn,TT_LOE,DT_FixedDUR2,TK_NotStart,CON1000,Construction Summary,7385,0,0,4576,0,9972,9972,4576,25,0,25,,,,2028-02-07 16:00,2028-02-07 16:00,,2025-11-28 08:00,2028-02-07 16:00,2025-11-28 08:00,2028-02-07 16:00,2025-11-28 08:00,2028-02-07 16:00,2028-02-07 16:00,2028-02-07 16:00,,PT_Normal,,,,,xXBfTW1upEezjjyZTAK8KQ,e63FQ5ptYkyVzU4j3BvmXw,,,N,0,0,,,2023-02-08 18:30,2023-02-08 18:31,NotPrmUser,NotPrmUser,
141857,27172,55048,178,0,N,1,N,N,CP_Drtn,TT_LOE,DT_FixedDUR2,TK_NotStart,CLO1000,Close Out Summary,7385,0,0,960,0,4482,4482,960,0,0,0,,,,2028-02-08 08:00,2028-07-24 16:00,,2028-02-08 08:00,2028-07-24 16:00,2028-02-08 08:00,2028-07-24 16:00,2028-02-08 08:00,2028-07-24 16:00,2028-02-08 08:00,2028-07-24 16:00,,PT_Normal,,,,,UkKk9cdcJEqUX9BR/a5XAA,p1vASKI4xkq+3Qox39jtgA,,,Y,0,0,,,2023-02-08 18:30,2023-02-08 18:31,NotPrmUser,NotPrmUser,
141858,27172,55021,178,0,N,1,N,N,CP_Drtn,TT_LOE,DT_FixedDUR2,TK_NotStart,PCON1000,Pre-Construction Summary,,0,0,3296,0,0,0,3296,0,0,0,,,,2024-05-01 08:00,2025-11-27 16:00,,2024-05-01 08:00,2025-11-27 16:00,2024-05-01 08:00,2025-11-27 16:00,2024-05-01 08:00,2025-11-27 16:00,2024-05-01 08:00,2025-11-27 16:00,,PT_Normal,,,,,WKg7Im+/tUiDt3oc8ukriw,MsLHpqZcgEyhNXJ9U5j9tw,,,Y,0,0,,,2023-02-08 18:30,2023-02-08 18:31,NotPrmUser,NotPrmUser,
141859,27173,55052,178,0,N,1,N,N,CP_Drtn,TT_Task,DT_FixedDUR2,TK_NotStart,SCO1000,Bundling / Phasing of circuits for project sequencing,,0,0,80,0,0,0,80,0,0,0,2024-06-03 00:00,,,2024-06-03 08:00,2024-06-14 16:00,,2024-06-03 08:00,2024-06-14 16:00,2024-06-03 08:00,2024-06-14 16:00,2024-06-03 08:00,2024-06-14 16:00,2024-06-03 08:00,2024-06-14 16:00,CS_MSOA,PT_Normal,,,,,ySDOuaTq40qW3OWDBaiqvQ,lDllyvglDUSErZYxDWqKSA,,,Y,0,0,,,2023-02-08 18:30,2023-02-08 18:31,NotPrmUser,NotPrmUser,
141860,27173,55052,178,0,N,1,N,N,CP_Drtn,TT_Task,DT_FixedDUR2,TK_NotStart,SCO1010,Constructability Review,,0,0,40,0,0,0,40,0,0,0,,,,2024-06-17 08:00,2024-06-21 16:00,,2024-06-17 08:00,2024-06-21 16:00,2024-06-17 08:00,2024-06-21 16:00,2024-06-17 08:00,2024-06-21 16:00,2024-06-17 08:00,2024-06-21 16:00,,PT_Normal,,,,,Jr4RY+cjEkiAnpv3er1WXg,nFdqi9TClkOAmXpSIs6HwA,,,Y,0,0,,,2023-02-08 18:30,2023-02-08 18:31,NotPrmUser,NotPrmUser,
141861,27173,55052,178,0,N,1,N,N,CP_Drtn,TT_Task,DT_FixedDUR2,TK_NotStart,SCO1020,SDG&E Review,,0,0,16,0,0,0,16,0,0,0,,,,2024-06-24 08:00,2024-06-25 16:00,,2024-06-24 08:00,2024-06-25 16:00,2024-06-24 08:00,2024-06-25 16:00,2024-06-24 08:00,2024-06-25 16:00,2024-06-24 08:00,2024-06-25 16:00,,PT_Normal,,,,,yKXQ1Wz2pEuDPOmDEWTUOg,rfAVxbdU8EO9etNocyA2Uw,,,Y,0,0,,,2023-02-08 18:30,2023-02-08 18:31,NotPrmUser,NotPrmUser,
141862,27173,55053,178,0,N,1,N,N,CP_Drtn,TT_Task,DT_FixedDUR2,TK_NotStart,PLA1000,Workorder Setup,,0,0,40,0,0,0,40,0,0,0,,,,2024-06-26 08:00,2024-07-02 16:00,,2024-06-26 08:00,2024-07-02 16:00,2024-06-26 08:00,2024-07-02 16:00,2024-06-26 08:00,2024-07-02 16:00,2024-06-26 08:00,2024-07-02 16:00,,PT_Normal,,,,,p6dizisgckGnai7zOS6Y0g,pV4pOEBWdEW6rAOwSErDsA,,,Y,0,0,,,2023-02-08 18:30,2023-02-08 18:31,NotPrmUser,NotPrmUser,
141863,27173,55056,178,0,N,1,N,N,CP_Drtn,TT_Task,DT_FixedDUR2,TK_NotStart,DES1040,10% Submittal,,0,0,200,0,0,0,200,0,0,0,,,,2024-09-11 08:00,2024-10-15 16:00,,2024-09-11 08:00,2024-10-15 16:00,2024-09-11 08:00,2024-10-15 16:00,2024-09-11 08:00,2024-10-15 16:00,2024-09-11 08:00,2024-10-15 16:00,,PT_Normal,,,,,lPwMUfm4hkentFPZwXSllg,N3yhxlrX70aqkSYk1l2BlQ,,,Y,0,0,,,2023-02-08 18:30,2023-02-08 18:31,NotPrmUser,NotPrmUser,
141864,27173,55056,178,0,N,1,N,N,CP_Drtn,TT_Task,DT_FixedDUR2,TK_NotStart,DES1050,30% Submittal,,0,0,400,0,0,0,400,0,0,0,,,,2024-10-16 08:00,2024-12-24 16:00,,2024-10-16 08:00,2024-12-24 16:00,2024-10-16 08:00,2024-12-24 16:00,2024-10-16 08:00,2024-12-24 16:00,2024-10-16 08:00,2024-12-24 16:00,,PT_Normal,,,,,hQWQ7ehoBEO8+hyqA/aI1Q,6mV/Yr/VTkOu6YincBW7FQ,,,Y,0,0,,,2023-02-08 18:30,2023-02-08 18:31,NotPrmUser,NotPrmUser,
141865,27173,55056,178,0,N,1,N,N,CP_Drtn,TT_Task,DT_FixedDUR2,TK_NotStart,DES1060,30% Review,,0,0,80,0,0,0,80,0,0,0,,,,2024-12-25 08:00,2025-01-07 16:00,,2024-12-25 08:00,2025-01-07 16:00,2024-12-25 08:00,2025-01-07 16:00,2024-12-25 08:00,2025-01-07 16:00,2024-12-25 08:00,2025-01-07 16:00,,PT_Normal,,,,,3A4ZJVaqI0+Vnmxxj2+G4g,SBCStIbiv0+71grIE9djJA,,,Y,0,0,,,2023-02-08 18:30,2023-02-08 18:31,NotPrmUser,NotPrmUser,
141866,27173,55056,178,0,N,1,N,N,CP_Drtn,TT_Task,DT_FixedDUR2,TK_NotStart,DES1070,60% Submittal,,600,0,560,0,0,0,560,0,0,0,,,,2025-04-23 08:00,2025-07-29 16:00,,2025-01-08 08:00,2025-04-15 16:00,2025-01-08 08:00,2025-04-15 16:00,2025-01-08 08:00,2025-04-15 16:00,2025-04-23 08:00,2025-07-29 16:00,,PT_Normal,,,,,tzjfG9DRXUSFXC8PNackqg,zranFaB/aUmQf0OuaxNuAA,,,N,0,0,,,2023-02-08 18:30,2023-02-08 18:31,NotPrmUser,NotPrmUser,
141867,27173,55056,178,0,N,1,N,N,CP_Drtn,TT_Task,DT_FixedDUR2,TK_NotStart,DES1080,60% Review,,600,0,80,0,0,0,80,0,0,0,,,,2025-07-30 08:00,2025-08-12 16:00,,2025-04-16 08:00,2025-04-29 16:00,2025-04-16 08:00,2025-04-29 16:00,2025-04-16 08:00,2025-04-29 16:00,2025-07-30 08:00,2025-08-12 16:00,,PT_Normal,,,,,iTYEns56pEWXoV4FPvUnlA,D6VZDPOg/06WUO2h16Iuww,,,N,0,0,,,2023-02-08 18:30,2023-02-08 18:31,NotPrmUser,NotPrmUser,
141868,27173,55056,178,0,N,1,N,N,CP_Drtn,TT_Task,DT_FixedDUR2,TK_NotStart,DES1090,90% Submittal,,600,0,360,0,0,0,360,0,0,0,,,,2025-08-13 08:00,2025-10-14 16:00,,2025-04-30 08:00,2025-07-01 16:00,2025-04-30 08:00,2025-07-01 16:00,2025-04-30 08:00,2025-07-01 16:00,2025-08-13 08:00,2025-10-14 16:00,,PT_Normal,,,,,4o3z/4j5iEyRcztKLPdr0g,jBh1+r2sYE+xoEWS6TrdoQ,,,N,0,0,,,2023-02-08 18:30,2023-02-08 18:31,NotPrmUser,NotPrmUser,
141869,27173,55056,178,0,N,1,N,N,CP_Drtn,TT_Task,DT_FixedDUR2,TK_NotStart,DES1100,90% Review,,600,0,80,0,0,0,80,0,0,0,,,,2025-10-15 08:00,2025-10-28 16:00,,2025-07-02 08:00,2025-07-15 16:00,2025-07-02 08:00,2025-07-15 16:00,2025-07-02 08:00,2025-07-15 16:00,2025-10-15 08:00,2025-10-28 16:00,,PT_Normal,,,,,uXPy3OmT3EWJEOkkzwJzUQ,rAIBLH2+xUeGTlgr4vnqOA,,,N,0,0,,,2023-02-08 18:30,2023-02-08 18:31,NotPrmUser,NotPrmUser,
141870,27173,55056,178,0,N,1,N,N,CP_Drtn,TT_Task,DT_FixedDUR2,TK_NotStart,DES1110,100% Submittal,,680,0,160,0,0,0,160,0,0,0,,,,2025-11-12 08:00,2025-12-09 16:00,,2025-07-16 08:00,2025-08-12 16:00,2025-07-16 08:00,2025-08-12 16:00,2025-07-16 08:00,2025-08-12 16:00,2025-11-12 08:00,2025-12-09 16:00,,PT_Normal,,,,,pmlA1HwBSEmW1eK2boUYlw,SPYsUD3ktECrNVUS/JgMeg,,,N,0,0,,,2023-02-08 18:30,2023-02-08 18:31,NotPrmUser,NotPrmUser,
141871,27173,55056,178,0,N,1,N,N,CP_Drtn,TT_Task,DT_FixedDUR2,TK_NotStart,DES1120,Issue IFC Design Package,,0,0,80,0,0,0,80,0,0,0,,,,2025-12-10 08:00,2025-12-23 16:00,,2025-12-10 08:00,2025-12-23 16:00,2025-12-10 08:00,2025-12-23 16:00,2025-12-10 08:00,2025-12-23 16:00,2025-12-10 08:00,2025-12-23 16:00,,PT_Normal,,,,,Kd5Zb1Lb90SRbErQAaSMWQ,haukrCVIeU2U+osvVU6Emg,,,Y,0,0,,,2023-02-08 18:30,2023-02-08 18:31,NotPrmUser,NotPrmUser,
141872,27173,55057,178,0,N,1,N,N,CP_Drtn,TT_Task,DT_FixedDUR2,TK_NotStart,DES1130,60% Submittal,,840,0,480,0,0,0,480,0,0,0,,,,2025-05-07 08:00,2025-07-29 16:00,,2024-12-11 08:00,2025-03-04 16:00,2024-12-11 08:00,2025-03-04 16:00,2024-12-11 08:00,2025-03-04 16:00,2025-05-07 08:00,2025-07-29 16:00,,PT_Normal,,,,,rvgxiqzQWkmoOPt/jw5g2Q,/EOTS9dq/kas/+0Fe5Byug,,,N,0,0,,,2023-02-08 18:30,2023-02-08 18:31,NotPrmUser,NotPrmUser,
141873,27173,55057,178,0,N,1,N,N,CP_Drtn,TT_Task,DT_FixedDUR2,TK_NotStart,DES1140,60% Review,,920,0,80,0,0,0,80,0,0,0,,,,2025-08-13 08:00,2025-08-26 16:00,,2025-03-05 08:00,2025-03-18 16:00,2025-03-05 08:00,2025-03-18 16:00,2025-03-05 08:00,2025-03-18 16:00,2025-08-13 08:00,2025-08-26 16:00,,PT_Normal,,,,,2KjwSNHt5UibMB08c8osXw,bv/yegJvsUO2XtCqmevFCA,,,N,0,0,,,2023-02-08 18:30,2023-02-08 18:31,NotPrmUser,NotPrmUser,
141874,27173,55057,178,0,N,1,N,N,CP_Drtn,TT_Task,DT_FixedDUR2,TK_NotStart,DES1150,90% Submittal,,1120,0,400,0,0,0,400,0,0,0,,,,2025-10-01 08:00,2025-12-09 16:00,,2025-03-19 08:00,2025-05-27 16:00,2025-03-19 08:00,2025-05-27 16:00,2025-03-19 08:00,2025-05-27 16:00,2025-10-01 08:00,2025-12-09 16:00,,PT_Normal,,,,,uUSmp8M6PkCIJ4LH8jb8SA,/5uHGyDxuUypGQg7j5xsUQ,,,N,0,0,,,2023-02-08 18:30,2023-02-08 18:31,NotPrmUser,NotPrmUser,
141875,27173,55057,178,0,N,1,N,N,CP_Drtn,TT_Task,DT_FixedDUR2,TK_NotStart,DES1160,90% Review,,1120,0,80,0,0,0,80,0,0,0,,,,2025-12-10 08:00,2025-12-23 16:00,,2025-05-28 08:00,2025-06-10 16:00,2025-05-28 08:00,2025-06-10 16:00,2025-05-28 08:00,2025-06-10 16:00,2025-12-10 08:00,2025-12-23 16:00,,PT_Normal,,,,,sw9/CtvYiUa/jD1YrEleRw,brvhLes8mEOxy7bWTPyfTQ,,,N,0,0,,,2023-02-08 18:30,2023-02-08 18:31,NotPrmUser,NotPrmUser,
141876,27173,55057,178,0,N,1,N,N,CP_Drtn,TT_Task,DT_FixedDUR2,TK_NotStart,DES1170,100% Submittal,,1120,880,160,0,0,0,160,0,0,0,,,,2025-12-24 08:00,2026-01-20 16:00,,2025-06-11 08:00,2025-07-08 16:00,2025-06-11 08:00,2025-07-08 16:00,2025-06-11 08:00,2025-07-08 16:00,2025-12-24 08:00,2026-01-20 16:00,,PT_Normal,,,,,WRIdX5lqck26ZR6yYCQI+A,2D7huK0KaEiB/aScDvg+TQ,,,N,0,0,,,2023-02-08 18:30,2023-02-08 18:31,NotPrmUser,NotPrmUser,
141877,27173,55057,178,0,N,1,N,N,CP_Drtn,TT_Task,DT_FixedDUR2,TK_NotStart,DES1180,Issue IFC Design Package,,240,0,80,0,0,0,80,0,0,0,,,,2026-01-21 08:00,2026-02-03 16:00,,2025-12-10 08:00,2025-12-23 16:00,2025-12-10 08:00,2025-12-23 16:00,2025-12-10 08:00,2025-12-23 16:00,2026-01-21 08:00,2026-02-03 16:00,,PT_Normal,,,,,k60hKpPHl0Con9SONda9ig,PHGT4aZvZkqK/oK7TnEpYQ,,,N,0,0,,,2023-02-08 18:30,2023-02-08 18:31,NotPrmUser,NotPrmUser,
141878,27173,55058,178,0,N,1,N,N,CP_Drtn,TT_Task,DT_FixedDUR2,TK_NotStart,DES1190,Issue Services Worksheet to Design Firms,,760,0,160,0,0,0,160,0,0,0,,,,2025-02-26 08:00,2025-03-25 16:00,,2024-10-16 08:00,2024-11-12 16:00,2024-10-16 08:00,2024-11-12 16:00,2024-10-16 08:00,2024-11-12 16:00,2025-02-26 08:00,2025-03-25 16:00,,PT_Normal,,,,,t0X9hhavJU6gaFWtejdSpg,mWntqFd3aUq9DsjmVAyEfA,,,N,0,0,,,2023-02-08 18:30,2023-02-08 18:31,NotPrmUser,NotPrmUser,
141879,27173,55059,178,0,N,1,N,N,CP_Drtn,TT_Task,DT_FixedDUR2,TK_NotStart,DES1220,SED Design,,6376,0,240,0,0,0,240,0,0,0,,,,2027-10-01 08:00,2027-11-11 16:00,,2024-09-11 08:00,2024-10-22 16:00,2024-09-11 08:00,2024-10-22 16:00,2024-09-11 08:00,2024-10-22 16:00,2027-10-01 08:00,2027-11-11 16:00,,PT_Normal,,,,,TzrS/viFg0uV2KQ6yte2/w,8dX1m3OhTEmgLckf8f6wdQ,,,N,0,0,,,2023-02-08 18:30,2023-02-08 18:31,NotPrmUser,NotPrmUser,
141880,27173,55059,178,0,N,1,N,N,CP_Drtn,TT_Task,DT_FixedDUR2,TK_NotStart,DES1230,Issue IFC Design Package,,6376,5320,160,0,0,0,160,0,0,0,,,,2027-11-12 08:00,2027-12-09 16:00,,2024-10-23 08:00,2024-11-19 16:00,2024-10-23 08:00,2024-11-19 16:00,2024-10-23 08:00,2024-11-19 16:00,2027-11-12 08:00,2027-12-09 16:00,,PT_Normal,,,,,I6Zyhs425EOjjeQdAKfv3A,j7eC37VLuk2KvyZPz+/8iQ,,,N,0,0,,,2023-02-08 18:30,2023-02-08 18:31,NotPrmUser,NotPrmUser,
141881,27173,55061,178,0,N,1,N,N,CP_Drtn,TT_Task,DT_FixedDUR2,TK_NotStart,PRO1000,Civil BOM - Long Lead @ 30%,,680,0,120,0,0,0,120,0,0,0,,,,2025-05-07 08:00,2025-05-27 16:00,,2025-01-08 08:00,2025-01-28 16:00,2025-01-08 08:00,2025-01-28 16:00,2025-01-08 08:00,2025-01-28 16:00,2025-05-07 08:00,2025-05-27 16:00,,PT_Normal,,,,,HaUEHqxLPU+d1Zruwe7U9w,58gbql9DcEGt8i8eKSu08A,,,N,0,0,,,2023-02-08 18:30,2023-02-08 18:31,NotPrmUser,NotPrmUser,
141882,27173,55061,178,0,N,1,N,N,CP_Drtn,TT_Task,DT_FixedDUR2,TK_NotStart,PRO1020,Electrical BOM - Long Lead @ 60%,,920,0,120,0,0,0,120,0,0,0,,,,2025-08-27 08:00,2025-09-16 16:00,,2025-03-19 08:00,2025-04-08 16:00,2025-03-19 08:00,2025-04-08 16:00,2025-03-19 08:00,2025-04-08 16:00,2025-08-27 08:00,2025-09-16 16:00,,PT_Normal,,,,,6D9P1z/MO0S2eNCed6e0nQ,wAsl1MYx1EC85XBLj3cP6w,,,N,0,0,,,2023-02-08 18:30,2023-02-08 18:31,NotPrmUser,NotPrmUser,
141883,27173,55061,178,0,N,1,N,N,CP_Drtn,TT_Task,DT_FixedDUR2,TK_NotStart,PRO1040,BOM - Short Lead @ 60%,,600,0,120,0,0,0,120,0,0,0,,,,2025-10-29 08:00,2025-11-18 16:00,,2025-07-16 08:00,2025-08-05 16:00,2025-07-16 08:00,2025-08-05 16:00,2025-07-16 08:00,2025-08-05 16:00,2025-10-29 08:00,2025-11-18 16:00,,PT_Normal,,,,,4NJWwskO906O8Pzmkj8gig,qJNX6Gs+lUCMud3c/Ry3aA,,,N,0,0,,,2023-02-08 18:30,2023-02-08 18:31,NotPrmUser,NotPrmUser,
141884,27173,55062,178,0,N,1,N,N,CP_Drtn,TT_Task,DT_FixedDUR2,TK_NotStart,PER1000,CalTrans Permit,,0,0,2000,0,0,0,2000,0,0,0,,,,2025-01-08 08:00,2025-12-23 16:00,,2025-01-08 08:00,2025-12-23 16:00,2025-01-08 08:00,2025-12-23 16:00,2025-01-08 08:00,2025-12-23 16:00,2025-01-08 08:00,2025-12-23 16:00,,PT_Normal,,,,,ndzSrCRx/Em3f2Kc0Rr87w,RhqQZL56ukehxFps+qsOpA,,,Y,0,0,,,2023-02-08 18:30,2023-02-08 18:31,NotPrmUser,NotPrmUser,
141885,27173,55062,178,0,N,1,N,N,CP_Drtn,TT_Task,DT_FixedDUR2,TK_NotStart,PER1010,City & County Permits,,1200,1200,800,0,0,0,800,0,0,0,,,,2025-08-06 08:00,2025-12-23 16:00,,2025-01-08 08:00,2025-05-27 16:00,2025-01-08 08:00,2025-05-27 16:00,2025-01-08 08:00,2025-05-27 16:00,2025-08-06 08:00,2025-12-23 16:00,,PT_Normal,,,,,9dI/jlpbyU6H++t8RjVyYQ,0BdyV4GoFUe24XyfEvqJmg,,,N,0,0,,,2023-02-08 18:30,2023-02-08 18:31,NotPrmUser,NotPrmUser,
141886,27173,55062,178,0,N,1,N,N,CP_Drtn,TT_Task,DT_FixedDUR2,TK_NotStart,PER1020,Other Permit (TBD),,1200,1200,800,0,0,0,800,0,0,0,,,,2025-08-06 08:00,2025-12-23 16:00,,2025-01-08 08:00,2025-05-27 16:00,2025-01-08 08:00,2025-05-27 16:00,2025-01-08 08:00,2025-05-27 16:00,2025-08-06 08:00,2025-12-23 16:00,,PT_Normal,,,,,O+h2h69tBUqWeSF0UQyuvQ,x7gtI5ZZ9Ee6HTsAzFzM5Q,,,N,0,0,,,2023-02-08 18:30,2023-02-08 18:31,NotPrmUser,NotPrmUser,
141887,27173,55063,178,0,N,1,N,N,CP_Drtn,TT_Task,DT_FixedDUR2,TK_NotStart,PUB1000,Public Affairs / Community Outreach,,6216,6216,800,0,0,0,800,0,0,0,,,,2028-04-07 08:00,2028-08-24 16:00,,2025-04-16 08:00,2025-09-02 16:00,2025-04-16 08:00,2025-09-02 16:00,2025-04-16 08:00,2025-09-02 16:00,2028-04-07 08:00,2028-08-24 16:00,,PT_Normal,,,,,MKiLNnE30E2+MjA4YdtEkQ,KZixWGbPkU6KVeVt2rFvrQ,,,N,0,0,,,2023-02-08 18:30,2023-02-08 18:31,NotPrmUser,NotPrmUser,
141888,27173,55064,178,0,N,1,N,N,CP_Drtn,TT_Task,DT_FixedDUR2,TK_NotStart,LAN1000,Land Rights and Easement Acquisition,,880,880,1200,0,0,0,1200,0,0,0,,,,2025-05-28 08:00,2025-12-23 16:00,,2024-12-25 08:00,2025-07-22 16:00,2024-12-25 08:00,2025-07-22 16:00,2024-12-25 08:00,2025-07-22 16:00,2025-05-28 08:00,2025-12-23 16:00,,PT_Normal,,,,,xjzoBW94rE+Tu9psbMl22w,sYmaf4BfuES8Vn2NZaQysg,,,N,0,0,,,2023-02-08 18:30,2023-02-08 18:31,NotPrmUser,NotPrmUser,
141889,27173,55064,178,0,N,1,N,N,CP_Drtn,TT_Task,DT_FixedDUR2,TK_NotStart,LAN1010,Tribal Land Rights,,880,880,1200,0,0,0,1200,0,0,0,,,,2025-05-28 08:00,2025-12-23 16:00,,2024-12-25 08:00,2025-07-22 16:00,2024-12-25 08:00,2025-07-22 16:00,2024-12-25 08:00,2025-07-22 16:00,2025-05-28 08:00,2025-12-23 16:00,,PT_Normal,,,,,TuLP5dcVcEe22J0CULnjUA,bxr0qNywTUa2PPVbIThtWA,,,N,0,0,,,2023-02-08 18:30,2023-02-08 18:31,NotPrmUser,NotPrmUser,
141890,27173,55064,178,0,N,1,N,N,CP_Drtn,TT_Task,DT_FixedDUR2,TK_NotStart,LAN1020,Laydown Yards,,880,880,1200,0,0,0,1200,0,0,0,,,,2025-05-28 08:00,2025-12-23 16:00,,2024-12-25 08:00,2025-07-22 16:00,2024-12-25 08:00,2025-07-22 16:00,2024-12-25 08:00,2025-07-22 16:00,2025-05-28 08:00,2025-12-23 16:00,,PT_Normal,,,,,OjJ8quaE/UaA+saowJgZjw,GfUNXNYJtUiWduU9wPi5ow,,,N,0,0,,,2023-02-08 18:30,2023-02-08 18:31,NotPrmUser,NotPrmUser,
141891,27173,55065,178,0,N,1,N,N,CP_Drtn,TT_Task,DT_FixedDUR2,TK_NotStart,ENV1000,10% Environmental Submittal,,880,0,200,0,0,0,200,0,0,0,,,,2025-02-12 08:00,2025-03-18 16:00,,2024-09-11 08:00,2024-10-15 16:00,2024-09-11 08:00,2024-10-15 16:00,2024-09-11 08:00,2024-10-15 16:00,2025-02-12 08:00,2025-03-18 16:00,,PT_Normal,,,,,3btsEN4mhUyI5MVtX1x0bA,Jc33guDp/EW6xKL8kYPc+A,,,N,0,0,,,2023-02-08 18:30,2023-02-08 18:31,NotPrmUser,NotPrmUser,
141892,27173,55065,178,0,N,1,N,N,CP_Drtn,TT_Task,DT_FixedDUR2,TK_NotStart,ENV1010,10% Environmental Review,,880,0,120,0,0,0,120,0,0,0,,,,2025-03-19 08:00,2025-04-08 16:00,,2024-10-16 08:00,2024-11-05 16:00,2024-10-16 08:00,2024-11-05 16:00,2024-10-16 08:00,2024-11-05 16:00,2025-03-19 08:00,2025-04-08 16:00,,PT_Normal,,,,,00f9BTEeNkCDF7IyuzZmqQ,99jvQXPcQU6cplUBs6pxYQ,,,N,0,0,,,2023-02-08 18:30,2023-02-08 18:31,NotPrmUser,NotPrmUser,
141893,27173,55065,178,0,N,1,N,N,CP_Drtn,TT_Task,DT_FixedDUR2,TK_NotStart,ENV1020,30% Environmental Submittal,,840,0,200,0,0,0,200,0,0,0,,,,2025-07-30 08:00,2025-09-02 16:00,,2025-03-05 08:00,2025-04-08 16:00,2025-03-05 08:00,2025-04-08 16:00,2025-03-05 08:00,2025-04-08 16:00,2025-07-30 08:00,2025-09-02 16:00,,PT_Normal,,,,,bRbUMLwFJUusFObT7Xv9+Q,9sWM/q6OAUybyXQqbcaaHQ,,,N,0,0,,,2023-02-08 18:30,2023-02-08 18:31,NotPrmUser,NotPrmUser,
141894,27173,55065,178,0,N,1,N,N,CP_Drtn,TT_Task,DT_FixedDUR2,TK_NotStart,ENV1030,30% Environmental Review,,840,0,120,0,0,0,120,0,0,0,,,,2025-09-03 08:00,2025-09-23 16:00,,2025-04-09 08:00,2025-04-29 16:00,2025-04-09 08:00,2025-04-29 16:00,2025-04-09 08:00,2025-04-29 16:00,2025-09-03 08:00,2025-09-23 16:00,,PT_Normal,,,,,NummXKUktEuubKiLf3rJdQ,7r0xIg9avEKoEF4btrpmjw,,,N,0,0,,,2023-02-08 18:30,2023-02-08 18:31,NotPrmUser,NotPrmUser,
141895,27173,55065,178,0,N,1,N,N,CP_Drtn,TT_Task,DT_FixedDUR2,TK_NotStart,ENV1040,60% Environmental Submittal,,840,0,280,0,0,0,280,0,0,0,,,,2025-09-24 08:00,2025-11-11 16:00,,2025-04-30 08:00,2025-06-17 16:00,2025-04-30 08:00,2025-06-17 16:00,2025-04-30 08:00,2025-06-17 16:00,2025-09-24 08:00,2025-11-11 16:00,,PT_Normal,,,,,LAGI67CBpkuJroG+vGQ4Ag,2HeTV8M6mkGCHlkzu1lWuQ,,,N,0,0,,,2023-02-08 18:30,2023-02-08 18:31,NotPrmUser,NotPrmUser,
141896,27173,55065,178,0,N,1,N,N,CP_Drtn,TT_Task,DT_FixedDUR2,TK_NotStart,ENV1050,60% Environmental Release,,960,960,120,0,0,0,120,0,0,0,,,,2025-12-03 08:00,2025-12-23 16:00,,2025-06-18 08:00,2025-07-08 16:00,2025-06-18 08:00,2025-07-08 16:00,2025-06-18 08:00,2025-07-08 16:00,2025-12-03 08:00,2025-12-23 16:00,,PT_Normal,,,,,DJSGfG7DbUyH7US5FlUrYA,J77H0N47nU6VmvuGDNBhlQ,,,N,0,0,,,2023-02-08 18:30,2023-02-08 18:31,NotPrmUser,NotPrmUser,
141897,27173,55065,178,0,N,1,N,N,CP_Drtn,TT_Task,DT_FixedDUR2,TK_NotStart,ENV1060,BIA NEPA Submittal,,840,0,80,0,0,0,80,0,0,0,,,,2025-11-12 08:00,2025-11-25 16:00,,2025-06-18 08:00,2025-07-01 16:00,2025-06-18 08:00,2025-07-01 16:00,2025-06-18 08:00,2025-07-01 16:00,2025-11-12 08:00,2025-11-25 16:00,,PT_Normal,,,,,U0PprFCMF0a4FQo3Uah/uQ,GrQ1m6zUj0mbTpPljv8AJw,,,N,0,0,,,2023-02-08 18:30,2023-02-08 18:31,NotPrmUser,NotPrmUser,
141898,27173,55065,178,0,N,1,N,N,CP_Drtn,TT_Task,DT_FixedDUR2,TK_NotStart,ENV1070,"BIA Received (Add 250 days, if needed)",,840,840,160,0,0,0,160,0,0,0,,,,2025-11-26 08:00,2025-12-23 16:00,,2025-07-02 08:00,2025-07-29 16:00,2025-07-02 08:00,2025-07-29 16:00,2025-07-02 08:00,2025-07-29 16:00,2025-11-26 08:00,2025-12-23 16:00,,PT_Normal,,,,,EKswHrBiVUGBf2i7BOlBWw,fvFJ0rPWE0i6KjEE0EoleQ,,,N,0,0,,,2023-02-08 18:30,2023-02-08 18:31,NotPrmUser,NotPrmUser,
141899,27173,55055,178,0,N,1,N,N,CP_Drtn,TT_Task,DT_FixedDUR2,TK_NotStart,DES1010,Seismic / Geotech Submittal,,880,0,200,0,0,0,200,0,0,0,,,,2025-04-09 08:00,2025-05-13 16:00,,2024-11-06 08:00,2024-12-10 16:00,2024-11-06 08:00,2024-12-10 16:00,2024-11-06 08:00,2024-12-10 16:00,2025-04-09 08:00,2025-05-13 16:00,,PT_Normal,,,,,n8y18GO+wEScAbuMDDr/Lg,ctq7xFI4Q0iEak6teLZP6w,,,N,0,0,,,2023-02-08 18:30,2023-02-08 18:31,NotPrmUser,NotPrmUser,
141900,27173,55055,178,0,N,1,N,N,CP_Drtn,TT_Task,DT_FixedDUR2,TK_NotStart,DES1020,Potholing Submittal,,880,40,200,0,0,0,200,0,0,0,,,,2025-05-14 08:00,2025-06-17 16:00,,2024-12-11 08:00,2025-01-14 16:00,2024-12-11 08:00,2025-01-14 16:00,2024-12-11 08:00,2025-01-14 16:00,2025-05-14 08:00,2025-06-17 16:00,,PT_Normal,,,,,tCB70Fey2UOZV61Y4hy9fg,C+Rc6C+pQkSo2LPU3lABPA,,,N,0,0,,,2023-02-08 18:30,2023-02-08 18:31,NotPrmUser,NotPrmUser,
141901,27173,55055,178,0,N,1,N,N,CP_Drtn,TT_Task,DT_FixedDUR2,TK_NotStart,DES1030,Potholing Release /Perform Potholing,,840,0,240,0,0,0,240,0,0,0,,,,2025-06-18 08:00,2025-07-29 16:00,,2025-01-22 08:00,2025-03-04 16:00,2025-01-22 08:00,2025-03-04 16:00,2025-01-22 08:00,2025-03-04 16:00,2025-06-18 08:00,2025-07-29 16:00,,PT_Normal,,,,,VJhWqzfR/Uq9h42X+N3adw,/l2TW3YSR0KswbshcFV1Bg,,,N,0,0,,,2023-02-08 18:30,2023-02-08 18:31,NotPrmUser,NotPrmUser,
141902,27173,55067,178,0,N,1,N,N,CP_Drtn,TT_Task,DT_FixedDUR2,TK_NotStart,PCON100,Initiate Performance Partnering Process @ 60%,,1000,0,40,0,0,0,40,0,0,0,,,,2025-10-22 08:00,2025-10-28 16:00,,2025-04-30 08:00,2025-05-06 16:00,2025-04-30 08:00,2025-05-06 16:00,2025-04-30 08:00,2025-05-06 16:00,2025-10-22 08:00,2025-10-28 16:00,,PT_Normal,,,,,o9Hr0C8PMkGBGiy9yeEu5g,GqZz3rg84U++C5aMz6wRMA,,,N,0,0,,,2023-02-08 18:30,2023-02-08 18:31,NotPrmUser,NotPrmUser,
141903,27173,55067,178,0,N,1,N,N,CP_Drtn,TT_Task,DT_FixedDUR2,TK_NotStart,PCON110,Receive Estimate from Contractor,,1000,0,120,0,0,0,120,0,0,0,,,,2025-10-29 08:00,2025-11-18 16:00,,2025-05-07 08:00,2025-05-27 16:00,2025-05-07 08:00,2025-05-27 16:00,2025-05-07 08:00,2025-05-27 16:00,2025-10-29 08:00,2025-11-18 16:00,,PT_Normal,,,,,m6/aSbzUUUuWP4pxm9gtAA,tas/26lVGE+7ga541DH7tw,,,N,0,0,,,2023-02-08 18:30,2023-02-08 18:31,NotPrmUser,NotPrmUser,
141904,27173,55067,178,0,N,1,N,N,CP_Drtn,TT_Task,DT_FixedDUR2,TK_NotStart,PCON120,Bid Estimate Negotiations,,1000,0,80,0,0,0,80,0,0,0,,,,2025-11-19 08:00,2025-12-02 16:00,,2025-05-28 08:00,2025-06-10 16:00,2025-05-28 08:00,2025-06-10 16:00,2025-05-28 08:00,2025-06-10 16:00,2025-11-19 08:00,2025-12-02 16:00,,PT_Normal,,,,,W+mzLE5o2kOnzAFmxOx9JA,K4anOVAKFUmEqytzgJ5vaw,,,N,0,0,,,2023-02-08 18:30,2023-02-08 18:31,NotPrmUser,NotPrmUser,
141905,27173,55067,178,0,N,1,N,N,CP_Drtn,TT_Task,DT_FixedDUR2,TK_NotStart,PCON130,Revise Estimate based on IFC,,1000,0,40,0,0,0,40,0,0,0,,,,2025-12-03 08:00,2025-12-09 16:00,,2025-06-11 08:00,2025-06-17 16:00,2025-06-11 08:00,2025-06-17 16:00,2025-06-11 08:00,2025-06-17 16:00,2025-12-03 08:00,2025-12-09 16:00,,PT_Normal,,,,,HiX27uci3km9lGcOCCxiAg,ZGg3YKVVMUO8cDHMw9g2Xg,,,N,0,0,,,2023-02-08 18:30,2023-02-08 18:31,NotPrmUser,NotPrmUser,
141906,27173,55067,178,0,N,1,N,N,CP_Drtn,TT_Task,DT_FixedDUR2,TK_NotStart,PCON140,Issue Release,,1000,1000,80,0,0,0,80,0,0,0,,,,2025-12-10 08:00,2025-12-23 16:00,,2025-06-18 08:00,2025-07-01 16:00,2025-06-18 08:00,2025-07-01 16:00,2025-06-18 08:00,2025-07-01 16:00,2025-12-10 08:00,2025-12-23 16:00,,PT_Normal,,,,,TPbTBMqQ9Ueq8rCHaMGSqA,DymBSZU4w0SLOL9XkSK2tQ,,,N,0,0,,,2023-02-08 18:30,2023-02-08 18:31,NotPrmUser,NotPrmUser,
141907,27173,55069,178,0,N,1,N,N,CP_Drtn,TT_Task,DT_FixedDUR2,TK_NotStart,PCON200,Civil Pre-Construction Meeting (Civil Construction Ready),,0,0,40,0,0,0,40,0,0,0,,,,2025-12-24 08:00,2025-12-30 16:00,,2025-12-24 08:00,2025-12-30 16:00,2025-12-24 08:00,2025-12-30 16:00,2025-12-24 08:00,2025-12-30 16:00,2025-12-24 08:00,2025-12-30 16:00,,PT_Normal,,,,,6NBUzuRYjEqgzV/J598OmA,dCUJRIzXAkKJZK7XztIl2g,,,Y,0,0,,,2023-02-08 18:30,2023-02-08 18:31,NotPrmUser,NotPrmUser,
141908,27173,55069,178,0,N,1,N,N,CP_Drtn,TT_Task,DT_FixedDUR2,TK_NotStart,PCON210,Electrical - Pre-Construction Meeting (Electical Construction Ready),,240,0,40,0,0,0,40,0,0,0,,,,2026-02-04 08:00,2026-02-10 16:00,,2025-12-24 08:00,2025-12-30 16:00,2025-12-24 08:00,2025-12-30 16:00,2025-12-24 08:00,2025-12-30 16:00,2026-02-04 08:00,2026-02-10 16:00,,PT_Normal,,,,,7n3RZXJX0EOK+o4A7NTIhg,vUAe07irMUO+ebdT21H4sA,,,N,0,0,,,2023-02-08 18:30,2023-02-08 18:31,NotPrmUser,NotPrmUser,
141909,27173,55068,178,0,N,1,N,N,CP_Drtn,TT_Task,DT_FixedDUR2,TK_NotStart,PCON150,Initiate Performance Partnering Process @ 60%,,1480,0,40,0,0,0,40,0,0,0,,,,2025-12-03 08:00,2025-12-09 16:00,,2025-03-19 08:00,2025-03-25 16:00,2025-03-19 08:00,2025-03-25 16:00,2025-03-19 08:00,2025-03-25 16:00,2025-12-03 08:00,2025-12-09 16:00,,PT_Normal,,,,,qyizkC6O7EKZ164ENEOzJw,udckKT9hQUSmthU+fjrHtw,,,N,0,0,,,2023-02-08 18:30,2023-02-08 18:31,NotPrmUser,NotPrmUser,
141910,27173,55068,178,0,N,1,N,N,CP_Drtn,TT_Task,DT_FixedDUR2,TK_NotStart,PCON160,Receive Estimate from Contractor,,1480,0,120,0,0,0,120,0,0,0,,,,2025-12-10 08:00,2025-12-30 16:00,,2025-03-26 08:00,2025-04-15 16:00,2025-03-26 08:00,2025-04-15 16:00,2025-03-26 08:00,2025-04-15 16:00,2025-12-10 08:00,2025-12-30 16:00,,PT_Normal,,,,,Ej6Y2VKI4kCLUfmgLUowcw,cmB5V9+iNUq79KSRfGc3QA,,,N,0,0,,,2023-02-08 18:30,2023-02-08 18:31,NotPrmUser,NotPrmUser,
141911,27173,55068,178,0,N,1,N,N,CP_Drtn,TT_Task,DT_FixedDUR2,TK_NotStart,PCON170,Bid Estimate Negotiations,,1480,0,80,0,0,0,80,0,0,0,,,,2025-12-31 08:00,2026-01-13 16:00,,2025-04-16 08:00,2025-04-29 16:00,2025-04-16 08:00,2025-04-29 16:00,2025-04-16 08:00,2025-04-29 16:00,2025-12-31 08:00,2026-01-13 16:00,,PT_Normal,,,,,dZata6Vu+Ee5pAntQFeFlA,w7tUwkViyE+k8Iz/OoB/Zw,,,N,0,0,,,2023-02-08 18:30,2023-02-08 18:31,NotPrmUser,NotPrmUser,
141912,27173,55068,178,0,N,1,N,N,CP_Drtn,TT_Task,DT_FixedDUR2,TK_NotStart,PCON180,Revise Estimate based on IFC,,1480,0,40,0,0,0,40,0,0,0,,,,2026-01-14 08:00,2026-01-20 16:00,,2025-04-30 08:00,2025-05-06 16:00,2025-04-30 08:00,2025-05-06 16:00,2025-04-30 08:00,2025-05-06 16:00,2026-01-14 08:00,2026-01-20 16:00,,PT_Normal,,,,,JMusi0i3cUCdMQV/RAg/bg,2yI8rgp05kOWioF1M/wmGg,,,N,0,0,,,2023-02-08 18:30,2023-02-08 18:31,NotPrmUser,NotPrmUser,
141913,27173,55068,178,0,N,1,N,N,CP_Drtn,TT_Task,DT_FixedDUR2,TK_NotStart,PCON190,Issue Release,,1480,1240,80,0,0,0,80,0,0,0,,,,2026-01-21 08:00,2026-02-03 16:00,,2025-05-07 08:00,2025-05-20 16:00,2025-05-07 08:00,2025-05-20 16:00,2025-05-07 08:00,2025-05-20 16:00,2026-01-21 08:00,2026-02-03 16:00,,PT_Normal,,,,,9qPHUoHCzkuQye7o/G1kIg,zOuHaK8dC0SsnSzPUy9LVw,,,N,0,0,,,2023-02-08 18:30,2023-02-08 18:31,NotPrmUser,NotPrmUser,
141914,27173,55061,178,0,N,1,N,N,CP_Drtn,TT_Task,DT_FixedDUR2,TK_NotStart,PRO1010,Order Long Lead Civil Material,,680,680,1200,0,0,0,1200,0,0,0,,,,2025-05-28 08:00,2025-12-23 16:00,,2025-01-29 08:00,2025-08-26 16:00,2025-01-29 08:00,2025-08-26 16:00,2025-01-29 08:00,2025-08-26 16:00,2025-05-28 08:00,2025-12-23 16:00,,PT_Normal,,,,,3/TqH13oKEeXSqXD/wU1DA,d/ohbeNCyUurm0AIXHppAQ,,,N,0,0,,,2023-02-08 18:30,2023-02-08 18:31,NotPrmUser,NotPrmUser,
141915,27173,55061,178,0,N,1,N,N,CP_Drtn,TT_Task,DT_FixedDUR2,TK_NotStart,PRO1050,Order Short Lead Materials,,600,600,200,0,0,0,200,0,0,0,,,,2025-11-19 08:00,2025-12-23 16:00,,2025-08-06 08:00,2025-09-09 16:00,2025-08-06 08:00,2025-09-09 16:00,2025-08-06 08:00,2025-09-09 16:00,2025-11-19 08:00,2025-12-23 16:00,,PT_Normal,,,,,LM7gf00ymUSDI5FH15OL6g,sA6gZjRRMkGwQrm0tFmQ3A,,,N,0,0,,,2023-02-08 18:30,2023-02-08 18:31,NotPrmUser,NotPrmUser,
141916,27173,55061,178,0,N,1,N,N,CP_Drtn,TT_Task,DT_FixedDUR2,TK_NotStart,PRO1030,Order Long Lead Electrical Materials,,920,680,800,0,0,0,800,0,0,0,,,,2025-09-17 08:00,2026-02-03 16:00,,2025-04-09 08:00,2025-08-26 16:00,2025-04-09 08:00,2025-08-26 16:00,2025-04-09 08:00,2025-08-26 16:00,2025-09-17 08:00,2026-02-03 16:00,,PT_Normal,,,,,skLflg9XbkKX+z37+kYObQ,ZG60WuALKkaZOnvgm0xnzA,,,N,0,0,,,2023-02-08 18:30,2023-02-08 18:31,NotPrmUser,NotPrmUser,
141917,27173,55071,178,0,N,1,N,N,CP_Drtn,TT_Task,DT_FixedDUR2,TK_NotStart,CON2000,Civil Construction (Trenching 300 feet/day),7730,0,0,3520,0,14248,14248,3520,0,0,0,,,,2025-12-31 08:00,2027-09-07 16:00,,2025-12-31 08:00,2027-09-07 16:00,2025-12-31 08:00,2027-09-07 16:00,2025-12-31 08:00,2027-09-07 16:00,2025-12-31 08:00,2027-09-07 16:00,,PT_Normal,,,,,LjIFR95MTkiHLaU/uERtQQ,0QL4LfaZs0eRLkgpJ4Dw3g,,,Y,0,0,,,2023-02-08 18:30,2023-02-08 18:38,NotPrmUser,NotPrmUser,
141918,27173,55072,178,0,N,1,N,N,CP_Drtn,TT_Task,DT_FixedDUR2,TK_NotStart,CON3000,Electrical Construction,7786,0,0,3280,0,1640,1640,3280,0,0,0,,,,2026-02-11 08:00,2027-09-07 16:00,,2026-02-11 08:00,2027-09-07 16:00,2026-02-11 08:00,2027-09-07 16:00,2026-02-11 08:00,2027-09-07 16:00,2026-02-11 08:00,2027-09-07 16:00,,PT_Normal,,,,,jEh6hMlK0UW21zkGSwC7og,YIBODqu0s06GDLgclrgORA,,,Y,0,0,,,2023-02-08 18:30,2023-02-08 19:36,NotPrmUser,NotPrmUser,
141919,27173,55073,178,0,N,1,N,N,CP_Drtn,TT_Task,DT_FixedDUR2,TK_NotStart,CON4000,Service Cutover,,1056,0,2920,0,0,0,2920,0,0,0,,,,2026-10-16 08:00,2028-03-09 16:00,,2026-04-15 08:00,2027-09-07 16:00,2026-04-15 08:00,2027-09-07 16:00,2026-04-15 08:00,2027-09-07 16:00,2026-10-16 08:00,2028-03-09 16:00,,PT_Normal,,,,,bhyJXJvyv0m/N8Pf52SCVg,G1twrOpx5UGA4oOXyccjcg,,,N,0,0,,,2023-02-08 18:30,2023-02-08 18:31,NotPrmUser,NotPrmUser,
141920,27173,55074,178,0,N,1,N,N,CP_Drtn,TT_Task,DT_FixedDUR2,TK_NotStart,CON5000,Scada Construction,,1056,0,520,0,0,0,520,0,0,0,,,,2027-12-10 08:00,2028-03-09 16:00,,2027-06-09 08:00,2027-09-07 16:00,2027-06-09 08:00,2027-09-07 16:00,2027-06-09 08:00,2027-09-07 16:00,2027-12-10 08:00,2028-03-09 16:00,,PT_Normal,,,,,weVbEssuj0iGOPh/18yz1Q,dkp8DRoB20GOtxA1QkM0lg,,,N,0,0,,,2023-02-08 18:30,2023-02-08 18:31,NotPrmUser,NotPrmUser,
141921,27173,55075,178,0,N,1,N,N,CP_Drtn,TT_Task,DT_FixedDUR2,TK_NotStart,CON6000,Substation Construction,,1056,0,520,0,0,0,520,0,0,0,,,,2027-12-10 08:00,2028-03-09 16:00,,2027-06-09 08:00,2027-09-07 16:00,2027-06-09 08:00,2027-09-07 16:00,2027-06-09 08:00,2027-09-07 16:00,2027-12-10 08:00,2028-03-09 16:00,,PT_Normal,,,,,bQDub60b10GGxirumPYLMg,9H45BPjcx0GuOmbeALLhbA,,,N,0,0,,,2023-02-08 18:30,2023-02-08 18:31,NotPrmUser,NotPrmUser,
141922,27173,55076,178,0,N,1,N,N,CP_Drtn,TT_Task,DT_FixedDrtn,TK_NotStart,CON7000,Overhead RFS (1000 feet per day),7785,0,0,1056,0,1056,1056,1056,0,0,0,,,,2027-09-08 08:00,2028-03-09 16:00,,2027-09-08 08:00,2028-03-09 16:00,2027-09-08 08:00,2028-03-09 16:00,2027-09-08 08:00,2028-03-09 16:00,2027-09-08 08:00,2028-03-09 16:00,,PT_Normal,,,,,1cruddwy1EWkFoAYoWY8pw,cw/jFXmd6E6bWjX68Z+lnA,,,Y,0,0,,,2023-02-08 18:30,2023-02-08 18:31,NotPrmUser,NotPrmUser,
141923,27173,55070,178,0,N,1,N,N,CP_Drtn,TT_Task,DT_FixedDUR2,TK_NotStart,ISD1000,ISD - Energize - Put in service,,2008,2008,8,0,0,0,8,25,0,25,,,,2028-08-24 08:00,2028-08-24 16:00,,2027-09-08 08:00,2027-09-08 16:00,2027-09-08 08:00,2027-09-08 16:00,2027-09-08 08:00,2027-09-08 16:00,2028-08-24 08:00,2028-08-24 16:00,,PT_Normal,,,,,TrsSNTmj50y5lLkfih42yw,6m9/XZegzkWEHJB1Od8H0g,,,N,0,0,,,2023-02-08 18:30,2023-02-08 18:31,NotPrmUser,NotPrmUser,
141924,27173,55053,178,0,N,1,N,N,CP_Drtn,TT_Task,DT_FixedDUR2,TK_NotStart,SUR1000,Survey and LiDAR,7385,0,0,400,0,9182,9182,400,0,0,0,,,,2024-07-03 08:00,2024-09-10 16:00,,2024-07-03 08:00,2024-09-10 16:00,2024-07-03 08:00,2024-09-10 16:00,2024-07-03 08:00,2024-09-10 16:00,2024-07-03 08:00,2024-09-10 16:00,,PT_Normal,,,,,ZxVgTQ24CEK8U/wy18pz8w,n7AjAeRulEKDaUK2cT9sBQ,,,Y,0,0,,,2023-02-08 18:30,2023-02-08 18:31,NotPrmUser,NotPrmUser,
141925,27173,55058,178,0,N,1,N,N,CP_Drtn,TT_Task,DT_FixedDUR2,TK_NotStart,DES1200,Receive Services Worksheet and Cable Info from Design Firms,,760,0,160,0,0,0,160,0,0,0,,,,2025-03-26 08:00,2025-04-22 16:00,,2024-11-13 08:00,2024-12-10 16:00,2024-11-13 08:00,2024-12-10 16:00,2024-11-13 08:00,2024-12-10 16:00,2025-03-26 08:00,2025-04-22 16:00,,PT_Normal,,,,,NL+yElOWbUaMCHonsxkavg,8pbR48IJw0yd1O4j7Iz/gQ,,,N,0,0,,,2023-02-08 18:30,2023-02-08 18:31,NotPrmUser,NotPrmUser,
141926,27173,55058,178,0,N,1,N,N,CP_Drtn,TT_Task,DT_FixedDUR2,TK_NotStart,DES1210,Issue to Trench Inspectors,,2376,1320,80,0,0,0,80,0,0,0,,,,2026-10-02 08:00,2026-10-15 16:00,,2025-08-13 08:00,2025-08-26 16:00,2025-08-13 08:00,2025-08-26 16:00,2025-08-13 08:00,2025-08-26 16:00,2026-10-02 08:00,2026-10-15 16:00,,PT_Normal,,,,,qnnwWY8jUUKb0KF4ASmaYw,Le3jcNTXTUiLXZ3jezkHcw,,,N,0,0,,,2023-02-08 18:30,2023-02-08 18:31,NotPrmUser,NotPrmUser,
141927,27173,55070,178,0,N,1,N,N,CP_Drtn,TT_FinMile,DT_FixedDrtn,TK_NotStart,CON1020,Construction Complete,,0,0,0,0,0,0,0,0,0,0,,,,2028-03-09 16:00,2028-03-09 16:00,,2028-03-09 16:00,2028-03-09 16:00,2028-03-09 16:00,2028-03-09 16:00,2028-03-09 16:00,2028-03-09 16:00,2028-03-09 16:00,2028-03-09 16:00,,PT_Normal,,,,,mGIevQ0LJky5qlzbCIB/Zg,RsDb+MbMz0Cr8wcB9nMx8w,,,Y,0,0,,,2023-02-08 18:30,2023-02-08 18:31,NotPrmUser,NotPrmUser,
141928,27173,55070,178,0,N,1,N,N,CP_Drtn,TT_Mile,DT_FixedDrtn,TK_NotStart,CON1010,Construction Start,,5536,5536,0,0,0,0,0,0,0,0,,,,2028-08-24 16:00,2028-08-24 16:00,,2025-12-31 08:00,2025-12-31 08:00,2025-12-31 08:00,2025-12-31 08:00,2025-12-31 08:00,2025-12-31 08:00,2028-08-24 16:00,2028-08-24 16:00,,PT_Normal,,,,,8X8b+AF8nkaVEplNIhE1vA,3C7l8xGmUUircEDss2DYzA,,,N,0,0,,,2023-02-08 18:30,2023-02-08 18:31,NotPrmUser,NotPrmUser,
141929,27173,55079,178,0,N,1,N,N,CP_Drtn,TT_Task,DT_FixedDUR2,TK_NotStart,CLO1020,GIS/As-Built and Records Complete,,480,480,480,0,0,0,480,0,0,0,,,,2028-06-02 08:00,2028-08-24 16:00,,2028-03-10 08:00,2028-06-01 16:00,2028-03-10 08:00,2028-06-01 16:00,2028-03-10 08:00,2028-06-01 16:00,2028-06-02 08:00,2028-08-24 16:00,,PT_Normal,,,,,XuTmLg6OjEyKa0CinB7yhA,9czPCeS020ae1GJcYwgd5A,,,N,0,0,,,2023-02-08 18:30,2023-02-08 18:31,NotPrmUser,NotPrmUser,
141930,27173,55080,178,0,N,1,N,N,CP_Drtn,TT_Task,DT_FixedDUR2,TK_NotStart,CLO1030,"PO's complete, Work Order Reconcilled and Closed",,0,0,960,0,0,0,960,0,0,0,,,,2028-03-10 08:00,2028-08-24 16:00,,2028-03-10 08:00,2028-08-24 16:00,2028-03-10 08:00,2028-08-24 16:00,2028-03-10 08:00,2028-08-24 16:00,2028-03-10 08:00,2028-08-24 16:00,,PT_Normal,,,,,ItucRlGTv0S0ozfjQdOfCw,7H0M6vQgeUi0bXwwBeVmXg,,,Y,0,0,,,2023-02-08 18:30,2023-02-08 18:31,NotPrmUser,NotPrmUser,
141931,27173,55078,178,0,N,1,N,N,CP_Drtn,TT_FinMile,DT_FixedDrtn,TK_NotStart,CLO1010,Project Complete,,0,0,0,0,0,0,0,0,0,0,,,,2028-08-24 16:00,2028-08-24 16:00,,2028-08-24 16:00,2028-08-24 16:00,2028-08-24 16:00,2028-08-24 16:00,2028-08-24 16:00,2028-08-24 16:00,2028-08-24 16:00,2028-08-24 16:00,,PT_Normal,,,,,PdwZCtwRc0inWX31p/wlSw,xBAOeTi6yUKKamc8wNYhWw,,,Y,0,0,,,2023-02-08 18:30,2023-02-08 18:31,NotPrmUser,NotPrmUser,
141932,27173,55054,178,0,N,1,N,N,CP_Drtn,TT_LOE,DT_FixedDUR2,TK_NotStart,DES1000,Design Summary,7257,4096,0,2680,0,16233,16233,2680,0,0,0,,,,2024-09-11 08:00,2027-12-09 16:00,,2024-09-11 08:00,2025-12-23 16:00,2024-09-11 08:00,2025-12-23 16:00,2024-09-11 08:00,2025-12-23 16:00,2024-09-11 08:00,2027-12-09 16:00,,PT_Normal,,,,,3pyiZ5gE8k+foAg8Yd0wQg,soMcweVonUGl2c5lrM1fhA,,,Y,0,0,,,2023-02-08 18:30,2023-02-08 18:31,NotPrmUser,NotPrmUser,
141933,27173,55070,178,0,N,1,N,N,CP_Drtn,TT_LOE,DT_FixedDUR2,TK_NotStart,CON1000,Construction Summary,7385,0,0,4576,0,9972,9972,4576,25,0,25,,,,2028-03-09 16:00,2028-03-09 16:00,,2025-12-31 08:00,2028-03-09 16:00,2025-12-31 08:00,2028-03-09 16:00,2025-12-31 08:00,2028-03-09 16:00,2028-03-09 16:00,2028-03-09 16:00,,PT_Normal,,,,,UVltuIhAokyQ6XMcHpTaNA,2EniaYGTdUm+FWYIk3RMEA,,,N,0,0,,,2023-02-08 18:30,2023-02-08 18:31,NotPrmUser,NotPrmUser,
141934,27173,55078,178,0,N,1,N,N,CP_Drtn,TT_LOE,DT_FixedDUR2,TK_NotStart,CLO1000,Close Out Summary,7385,0,0,960,0,4482,4482,960,0,0,0,,,,2028-03-10 08:00,2028-08-24 16:00,,2028-03-10 08:00,2028-08-24 16:00,2028-03-10 08:00,2028-08-24 16:00,2028-03-10 08:00,2028-08-24 16:00,2028-03-10 08:00,2028-08-24 16:00,,PT_Normal,,,,,GUgOgDPyHkSYvF78AWS+Sg,M3D9O+1NzEGL+CV1tA5M0g,,,Y,0,0,,,2023-02-08 18:30,2023-02-08 18:31,NotPrmUser,NotPrmUser,
141935,27173,55051,178,0,N,1,N,N,CP_Drtn,TT_LOE,DT_FixedDUR2,TK_NotStart,PCON1000,Pre-Construction Summary,,0,0,3296,0,0,0,3296,0,0,0,,,,2024-06-03 08:00,2025-12-30 16:00,,2024-06-03 08:00,2025-12-30 16:00,2024-06-03 08:00,2025-12-30 16:00,2024-06-03 08:00,2025-12-30 16:00,2024-06-03 08:00,2025-12-30 16:00,,PT_Normal,,,,,kTUKpCxO6EqW8FFa4rkpqw,Zx9Fnz3DW0qz8TwdQ/nLSA,,,Y,0,0,,,2023-02-08 18:30,2023-02-08 18:31,NotPrmUser,NotPrmUser,
141936,27174,55082,178,0,N,1,N,N,CP_Drtn,TT_Task,DT_FixedDUR2,TK_NotStart,SCO1000,Bundling / Phasing of circuits for project sequencing,,0,0,80,0,0,0,80,0,0,0,2024-07-01 00:00,,,2024-07-01 08:00,2024-07-12 16:00,,2024-07-01 08:00,2024-07-12 16:00,2024-07-01 08:00,2024-07-12 16:00,2024-07-01 08:00,2024-07-12 16:00,2024-07-01 08:00,2024-07-12 16:00,CS_MSOA,PT_Normal,,,,,xw/uIDDeRUemVQEmxumDhw,sym9n6Yv9kysQl2QTs4x/A,,,Y,0,0,,,2023-02-08 18:30,2023-02-08 18:31,NotPrmUser,NotPrmUser,
141937,27174,55082,178,0,N,1,N,N,CP_Drtn,TT_Task,DT_FixedDUR2,TK_NotStart,SCO1010,Constructability Review,,0,0,40,0,0,0,40,0,0,0,,,,2024-07-15 08:00,2024-07-19 16:00,,2024-07-15 08:00,2024-07-19 16:00,2024-07-15 08:00,2024-07-19 16:00,2024-07-15 08:00,2024-07-19 16:00,2024-07-15 08:00,2024-07-19 16:00,,PT_Normal,,,,,R736PLpw0UKYAkZvd968JQ,l2RBU5VlIkCLyS5Q3rgURA,,,Y,0,0,,,2023-02-08 18:30,2023-02-08 18:31,NotPrmUser,NotPrmUser,
141938,27174,55082,178,0,N,1,N,N,CP_Drtn,TT_Task,DT_FixedDUR2,TK_NotStart,SCO1020,SDG&E Review,,0,0,16,0,0,0,16,0,0,0,,,,2024-07-22 08:00,2024-07-23 16:00,,2024-07-22 08:00,2024-07-23 16:00,2024-07-22 08:00,2024-07-23 16:00,2024-07-22 08:00,2024-07-23 16:00,2024-07-22 08:00,2024-07-23 16:00,,PT_Normal,,,,,oqXKo7uLwEGtwfWDpQnyiA,JVlO7BHuQUmlqJOxU043MQ,,,Y,0,0,,,2023-02-08 18:30,2023-02-08 18:31,NotPrmUser,NotPrmUser,
141939,27174,55083,178,0,N,1,N,N,CP_Drtn,TT_Task,DT_FixedDUR2,TK_NotStart,PLA1000,Workorder Setup,,0,0,40,0,0,0,40,0,0,0,,,,2024-07-24 08:00,2024-07-30 16:00,,2024-07-24 08:00,2024-07-30 16:00,2024-07-24 08:00,2024-07-30 16:00,2024-07-24 08:00,2024-07-30 16:00,2024-07-24 08:00,2024-07-30 16:00,,PT_Normal,,,,,NA15R2ydoE6z/2flD9DFJw,AL8YWsko1EqHzYU+f+Bg9Q,,,Y,0,0,,,2023-02-08 18:30,2023-02-08 18:31,NotPrmUser,NotPrmUser,
141940,27174,55086,178,0,N,1,N,N,CP_Drtn,TT_Task,DT_FixedDUR2,TK_NotStart,DES1040,10% Submittal,,0,0,200,0,0,0,200,0,0,0,,,,2024-10-09 08:00,2024-11-12 16:00,,2024-10-09 08:00,2024-11-12 16:00,2024-10-09 08:00,2024-11-12 16:00,2024-10-09 08:00,2024-11-12 16:00,2024-10-09 08:00,2024-11-12 16:00,,PT_Normal,,,,,FsJ5V5JA+0+y+jmJHb9r4g,LtN7cpJEaEujNCew7qv/hg,,,Y,0,0,,,2023-02-08 18:30,2023-02-08 18:31,NotPrmUser,NotPrmUser,
141941,27174,55086,178,0,N,1,N,N,CP_Drtn,TT_Task,DT_FixedDUR2,TK_NotStart,DES1050,30% Submittal,,0,0,400,0,0,0,400,0,0,0,,,,2024-11-13 08:00,2025-01-21 16:00,,2024-11-13 08:00,2025-01-21 16:00,2024-11-13 08:00,2025-01-21 16:00,2024-11-13 08:00,2025-01-21 16:00,2024-11-13 08:00,2025-01-21 16:00,,PT_Normal,,,,,4g+3aElC30KZfn4RGOe/vA,AvAGdYO4sU+yQL0nvL/atQ,,,Y,0,0,,,2023-02-08 18:30,2023-02-08 18:31,NotPrmUser,NotPrmUser,
141942,27174,55086,178,0,N,1,N,N,CP_Drtn,TT_Task,DT_FixedDUR2,TK_NotStart,DES1060,30% Review,,0,0,80,0,0,0,80,0,0,0,,,,2025-01-22 08:00,2025-02-04 16:00,,2025-01-22 08:00,2025-02-04 16:00,2025-01-22 08:00,2025-02-04 16:00,2025-01-22 08:00,2025-02-04 16:00,2025-01-22 08:00,2025-02-04 16:00,,PT_Normal,,,,,U4s+g+0Oz0ujvtcocYNpNg,5wX8sYAlp0WeK3AL8b6Q+Q,,,Y,0,0,,,2023-02-08 18:30,2023-02-08 18:31,NotPrmUser,NotPrmUser,
141943,27174,55086,178,0,N,1,N,N,CP_Drtn,TT_Task,DT_FixedDUR2,TK_NotStart,DES1070,60% Submittal,,600,0,560,0,0,0,560,0,0,0,,,,2025-05-21 08:00,2025-08-26 16:00,,2025-02-05 08:00,2025-05-13 16:00,2025-02-05 08:00,2025-05-13 16:00,2025-02-05 08:00,2025-05-13 16:00,2025-05-21 08:00,2025-08-26 16:00,,PT_Normal,,,,,SXcEjaGsNk2HgM6Q9kstcA,kDR942qFSk26KdKtaxta9A,,,N,0,0,,,2023-02-08 18:30,2023-02-08 18:31,NotPrmUser,NotPrmUser,
141944,27174,55086,178,0,N,1,N,N,CP_Drtn,TT_Task,DT_FixedDUR2,TK_NotStart,DES1080,60% Review,,600,0,80,0,0,0,80,0,0,0,,,,2025-08-27 08:00,2025-09-09 16:00,,2025-05-14 08:00,2025-05-27 16:00,2025-05-14 08:00,2025-05-27 16:00,2025-05-14 08:00,2025-05-27 16:00,2025-08-27 08:00,2025-09-09 16:00,,PT_Normal,,,,,vjO2VZI2wE6IT63nX+u1tg,3KlIFTAA2kGZso5+RDorkA,,,N,0,0,,,2023-02-08 18:30,2023-02-08 18:31,NotPrmUser,NotPrmUser,
141945,27174,55086,178,0,N,1,N,N,CP_Drtn,TT_Task,DT_FixedDUR2,TK_NotStart,DES1090,90% Submittal,,600,0,360,0,0,0,360,0,0,0,,,,2025-09-10 08:00,2025-11-11 16:00,,2025-05-28 08:00,2025-07-29 16:00,2025-05-28 08:00,2025-07-29 16:00,2025-05-28 08:00,2025-07-29 16:00,2025-09-10 08:00,2025-11-11 16:00,,PT_Normal,,,,,1kGFy8Z4Wki8ldHmIvp2kg,8fvHFCYW+0SvPRqcEIMGYg,,,N,0,0,,,2023-02-08 18:30,2023-02-08 18:31,NotPrmUser,NotPrmUser,
141946,27174,55086,178,0,N,1,N,N,CP_Drtn,TT_Task,DT_FixedDUR2,TK_NotStart,DES1100,90% Review,,600,0,80,0,0,0,80,0,0,0,,,,2025-11-12 08:00,2025-11-25 16:00,,2025-07-30 08:00,2025-08-12 16:00,2025-07-30 08:00,2025-08-12 16:00,2025-07-30 08:00,2025-08-12 16:00,2025-11-12 08:00,2025-11-25 16:00,,PT_Normal,,,,,/Et2k/opTU++EzGhg+PHOw,6kOfZuKBS0yHs7o37nHRoQ,,,N,0,0,,,2023-02-08 18:30,2023-02-08 18:31,NotPrmUser,NotPrmUser,
141947,27174,55086,178,0,N,1,N,N,CP_Drtn,TT_Task,DT_FixedDUR2,TK_NotStart,DES1110,100% Submittal,,680,0,160,0,0,0,160,0,0,0,,,,2025-12-10 08:00,2026-01-06 16:00,,2025-08-13 08:00,2025-09-09 16:00,2025-08-13 08:00,2025-09-09 16:00,2025-08-13 08:00,2025-09-09 16:00,2025-12-10 08:00,2026-01-06 16:00,,PT_Normal,,,,,U+Y13P20f0u6zwvq26fO9w,t/7+Rtu+cEOHfBDlgnx8Jw,,,N,0,0,,,2023-02-08 18:30,2023-02-08 18:31,NotPrmUser,NotPrmUser,
141948,27174,55086,178,0,N,1,N,N,CP_Drtn,TT_Task,DT_FixedDUR2,TK_NotStart,DES1120,Issue IFC Design Package,,0,0,80,0,0,0,80,0,0,0,,,,2026-01-07 08:00,2026-01-20 16:00,,2026-01-07 08:00,2026-01-20 16:00,2026-01-07 08:00,2026-01-20 16:00,2026-01-07 08:00,2026-01-20 16:00,2026-01-07 08:00,2026-01-20 16:00,,PT_Normal,,,,,qy4JT+sroUOl5SWVAVo3/Q,5LEv6O6qUUie/5Re3vxtJw,,,Y,0,0,,,2023-02-08 18:30,2023-02-08 18:31,NotPrmUser,NotPrmUser,
141949,27174,55087,178,0,N,1,N,N,CP_Drtn,TT_Task,DT_FixedDUR2,TK_NotStart,DES1130,60% Submittal,,840,0,480,0,0,0,480,0,0,0,,,,2025-06-04 08:00,2025-08-26 16:00,,2025-01-08 08:00,2025-04-01 16:00,2025-01-08 08:00,2025-04-01 16:00,2025-01-08 08:00,2025-04-01 16:00,2025-06-04 08:00,2025-08-26 16:00,,PT_Normal,,,,,429dfM3mCEmXVeK11KTjrg,J2h4oiSom0eKcnsIr5arpw,,,N,0,0,,,2023-02-08 18:30,2023-02-08 18:31,NotPrmUser,NotPrmUser,
141950,27174,55087,178,0,N,1,N,N,CP_Drtn,TT_Task,DT_FixedDUR2,TK_NotStart,DES1140,60% Review,,920,0,80,0,0,0,80,0,0,0,,,,2025-09-10 08:00,2025-09-23 16:00,,2025-04-02 08:00,2025-04-15 16:00,2025-04-02 08:00,2025-04-15 16:00,2025-04-02 08:00,2025-04-15 16:00,2025-09-10 08:00,2025-09-23 16:00,,PT_Normal,,,,,/zeBZgrA00amNdm/ccZ43w,1xw6qggmxEej+k6N/8BVOg,,,N,0,0,,,2023-02-08 18:30,2023-02-08 18:31,NotPrmUser,NotPrmUser,
141951,27174,55087,178,0,N,1,N,N,CP_Drtn,TT_Task,DT_FixedDUR2,TK_NotStart,DES1150,90% Submittal,,1120,0,400,0,0,0,400,0,0,0,,,,2025-10-29 08:00,2026-01-06 16:00,,2025-04-16 08:00,2025-06-24 16:00,2025-04-16 08:00,2025-06-24 16:00,2025-04-16 08:00,2025-06-24 16:00,2025-10-29 08:00,2026-01-06 16:00,,PT_Normal,,,,,d6X9KEOzFkmdIloC0YZgYQ,i97Hgf9v2EOtAZqWNH93Ug,,,N,0,0,,,2023-02-08 18:30,2023-02-08 18:31,NotPrmUser,NotPrmUser,
141952,27174,55087,178,0,N,1,N,N,CP_Drtn,TT_Task,DT_FixedDUR2,TK_NotStart,DES1160,90% Review,,1120,0,80,0,0,0,80,0,0,0,,,,2026-01-07 08:00,2026-01-20 16:00,,2025-06-25 08:00,2025-07-08 16:00,2025-06-25 08:00,2025-07-08 16:00,2025-06-25 08:00,2025-07-08 16:00,2026-01-07 08:00,2026-01-20 16:00,,PT_Normal,,,,,9nrefUx/sEazmYcSFXgnEA,qTFJv2d2/USotEa2Ma3kWg,,,N,0,0,,,2023-02-08 18:30,2023-02-08 18:31,NotPrmUser,NotPrmUser,
141953,27174,55087,178,0,N,1,N,N,CP_Drtn,TT_Task,DT_FixedDUR2,TK_NotStart,DES1170,100% Submittal,,1120,880,160,0,0,0,160,0,0,0,,,,2026-01-21 08:00,2026-02-17 16:00,,2025-07-09 08:00,2025-08-05 16:00,2025-07-09 08:00,2025-08-05 16:00,2025-07-09 08:00,2025-08-05 16:00,2026-01-21 08:00,2026-02-17 16:00,,PT_Normal,,,,,ndAmI8sPkU+QRYI80SFvAA,RxrMgYBu0Ei+PsN9Avaizw,,,N,0,0,,,2023-02-08 18:30,2023-02-08 18:31,NotPrmUser,NotPrmUser,
141954,27174,55087,178,0,N,1,N,N,CP_Drtn,TT_Task,DT_FixedDUR2,TK_NotStart,DES1180,Issue IFC Design Package,,240,0,80,0,0,0,80,0,0,0,,,,2026-02-18 08:00,2026-03-03 16:00,,2026-01-07 08:00,2026-01-20 16:00,2026-01-07 08:00,2026-01-20 16:00,2026-01-07 08:00,2026-01-20 16:00,2026-02-18 08:00,2026-03-03 16:00,,PT_Normal,,,,,i17iSLBNqUiJknVsciItgg,fm+8WBJp2kuX3qRJClkUHA,,,N,0,0,,,2023-02-08 18:30,2023-02-08 18:31,NotPrmUser,NotPrmUser,
141955,27174,55088,178,0,N,1,N,N,CP_Drtn,TT_Task,DT_FixedDUR2,TK_NotStart,DES1190,Issue Services Worksheet to Design Firms,,760,0,160,0,0,0,160,0,0,0,,,,2025-03-26 08:00,2025-04-22 16:00,,2024-11-13 08:00,2024-12-10 16:00,2024-11-13 08:00,2024-12-10 16:00,2024-11-13 08:00,2024-12-10 16:00,2025-03-26 08:00,2025-04-22 16:00,,PT_Normal,,,,,w+Nz4vTdqEqx1zaUbS8HlA,Cn4w9IrGCkSmUqpouumBJA,,,N,0,0,,,2023-02-08 18:30,2023-02-08 18:31,NotPrmUser,NotPrmUser,
141956,27174,55089,178,0,N,1,N,N,CP_Drtn,TT_Task,DT_FixedDUR2,TK_NotStart,DES1220,SED Design,,6376,0,240,0,0,0,240,0,0,0,,,,2027-10-29 08:00,2027-12-09 16:00,,2024-10-09 08:00,2024-11-19 16:00,2024-10-09 08:00,2024-11-19 16:00,2024-10-09 08:00,2024-11-19 16:00,2027-10-29 08:00,2027-12-09 16:00,,PT_Normal,,,,,RO06Elk7LEWKNEdDPz++lQ,cWyNmUUcYkC28iWAEXKc+A,,,N,0,0,,,2023-02-08 18:30,2023-02-08 18:31,NotPrmUser,NotPrmUser,
141957,27174,55089,178,0,N,1,N,N,CP_Drtn,TT_Task,DT_FixedDUR2,TK_NotStart,DES1230,Issue IFC Design Package,,6376,5320,160,0,0,0,160,0,0,0,,,,2027-12-10 08:00,2028-01-06 16:00,,2024-11-20 08:00,2024-12-17 16:00,2024-11-20 08:00,2024-12-17 16:00,2024-11-20 08:00,2024-12-17 16:00,2027-12-10 08:00,2028-01-06 16:00,,PT_Normal,,,,,00azTex5OUWQCQ+4XSrHTA,RN/1d08vn0qQdj58tlT7uw,,,N,0,0,,,2023-02-08 18:30,2023-02-08 18:31,NotPrmUser,NotPrmUser,
141958,27174,55091,178,0,N,1,N,N,CP_Drtn,TT_Task,DT_FixedDUR2,TK_NotStart,PRO1000,Civil BOM - Long Lead @ 30%,,680,0,120,0,0,0,120,0,0,0,,,,2025-06-04 08:00,2025-06-24 16:00,,2025-02-05 08:00,2025-02-25 16:00,2025-02-05 08:00,2025-02-25 16:00,2025-02-05 08:00,2025-02-25 16:00,2025-06-04 08:00,2025-06-24 16:00,,PT_Normal,,,,,wHHht1vtCEug5dRVyoL4kQ,Bh6Dno4kZ0eKtTdN0gu1tA,,,N,0,0,,,2023-02-08 18:30,2023-02-08 18:31,NotPrmUser,NotPrmUser,
141959,27174,55091,178,0,N,1,N,N,CP_Drtn,TT_Task,DT_FixedDUR2,TK_NotStart,PRO1020,Electrical BOM - Long Lead @ 60%,,920,0,120,0,0,0,120,0,0,0,,,,2025-09-24 08:00,2025-10-14 16:00,,2025-04-16 08:00,2025-05-06 16:00,2025-04-16 08:00,2025-05-06 16:00,2025-04-16 08:00,2025-05-06 16:00,2025-09-24 08:00,2025-10-14 16:00,,PT_Normal,,,,,omk0GgOtS0Os97bKvrcx/g,FH7iLrUqAUuWIq004HVPDA,,,N,0,0,,,2023-02-08 18:30,2023-02-08 18:31,NotPrmUser,NotPrmUser,
141960,27174,55091,178,0,N,1,N,N,CP_Drtn,TT_Task,DT_FixedDUR2,TK_NotStart,PRO1040,BOM - Short Lead @ 60%,,600,0,120,0,0,0,120,0,0,0,,,,2025-11-26 08:00,2025-12-16 16:00,,2025-08-13 08:00,2025-09-02 16:00,2025-08-13 08:00,2025-09-02 16:00,2025-08-13 08:00,2025-09-02 16:00,2025-11-26 08:00,2025-12-16 16:00,,PT_Normal,,,,,HV/9/07tKkKBiX3oRy270A,DDhCUE4JYUmgpZu1J6qMiA,,,N,0,0,,,2023-02-08 18:30,2023-02-08 18:31,NotPrmUser,NotPrmUser,
141961,27174,55092,178,0,N,1,N,N,CP_Drtn,TT_Task,DT_FixedDUR2,TK_NotStart,PER1000,CalTrans Permit,,0,0,2000,0,0,0,2000,0,0,0,,,,2025-02-05 08:00,2026-01-20 16:00,,2025-02-05 08:00,2026-01-20 16:00,2025-02-05 08:00,2026-01-20 16:00,2025-02-05 08:00,2026-01-20 16:00,2025-02-05 08:00,2026-01-20 16:00,,PT_Normal,,,,,w+nq9pfu/U6PP8zSnV3vEw,yD3Ht+iss0q+45vJSgQxmg,,,Y,0,0,,,2023-02-08 18:30,2023-02-08 18:31,NotPrmUser,NotPrmUser,
141962,27174,55092,178,0,N,1,N,N,CP_Drtn,TT_Task,DT_FixedDUR2,TK_NotStart,PER1010,City & County Permits,,1200,1200,800,0,0,0,800,0,0,0,,,,2025-09-03 08:00,2026-01-20 16:00,,2025-02-05 08:00,2025-06-24 16:00,2025-02-05 08:00,2025-06-24 16:00,2025-02-05 08:00,2025-06-24 16:00,2025-09-03 08:00,2026-01-20 16:00,,PT_Normal,,,,,Y3dFrL2WzUK+6ru4wZXl9g,QBhkTIn5XU6e9YX/DP0nCg,,,N,0,0,,,2023-02-08 18:30,2023-02-08 18:31,NotPrmUser,NotPrmUser,
141963,27174,55092,178,0,N,1,N,N,CP_Drtn,TT_Task,DT_FixedDUR2,TK_NotStart,PER1020,Other Permit (TBD),,1200,1200,800,0,0,0,800,0,0,0,,,,2025-09-03 08:00,2026-01-20 16:00,,2025-02-05 08:00,2025-06-24 16:00,2025-02-05 08:00,2025-06-24 16:00,2025-02-05 08:00,2025-06-24 16:00,2025-09-03 08:00,2026-01-20 16:00,,PT_Normal,,,,,eEHYW3Ot+EKzWLgKMkOeaQ,89eIc5rdJEGJQRmFhdyycg,,,N,0,0,,,2023-02-08 18:30,2023-02-08 18:31,NotPrmUser,NotPrmUser,
141964,27174,55093,178,0,N,1,N,N,CP_Drtn,TT_Task,DT_FixedDUR2,TK_NotStart,PUB1000,Public Affairs / Community Outreach,,6216,6216,800,0,0,0,800,0,0,0,,,,2028-05-05 08:00,2028-09-21 16:00,,2025-05-14 08:00,2025-09-30 16:00,2025-05-14 08:00,2025-09-30 16:00,2025-05-14 08:00,2025-09-30 16:00,2028-05-05 08:00,2028-09-21 16:00,,PT_Normal,,,,,/hbZ1p9230G+2WmfxPhW2g,TAMOsyJoP0alUug+iL/LiQ,,,N,0,0,,,2023-02-08 18:30,2023-02-08 18:31,NotPrmUser,NotPrmUser,
141965,27174,55094,178,0,N,1,N,N,CP_Drtn,TT_Task,DT_FixedDUR2,TK_NotStart,LAN1000,Land Rights and Easement Acquisition,,880,880,1200,0,0,0,1200,0,0,0,,,,2025-06-25 08:00,2026-01-20 16:00,,2025-01-22 08:00,2025-08-19 16:00,2025-01-22 08:00,2025-08-19 16:00,2025-01-22 08:00,2025-08-19 16:00,2025-06-25 08:00,2026-01-20 16:00,,PT_Normal,,,,,HDfEQ/Vgv0Wcz6Jby+NB2Q,3GrKtxzUhUS9NSV95cl2lw,,,N,0,0,,,2023-02-08 18:30,2023-02-08 18:31,NotPrmUser,NotPrmUser,
141966,27174,55094,178,0,N,1,N,N,CP_Drtn,TT_Task,DT_FixedDUR2,TK_NotStart,LAN1010,Tribal Land Rights,,880,880,1200,0,0,0,1200,0,0,0,,,,2025-06-25 08:00,2026-01-20 16:00,,2025-01-22 08:00,2025-08-19 16:00,2025-01-22 08:00,2025-08-19 16:00,2025-01-22 08:00,2025-08-19 16:00,2025-06-25 08:00,2026-01-20 16:00,,PT_Normal,,,,,3tiTsIC1q0W/Ui4uSoaRZg,va2HFEt7o0a8n6dJUQtB0g,,,N,0,0,,,2023-02-08 18:30,2023-02-08 18:31,NotPrmUser,NotPrmUser,
141967,27174,55094,178,0,N,1,N,N,CP_Drtn,TT_Task,DT_FixedDUR2,TK_NotStart,LAN1020,Laydown Yards,,880,880,1200,0,0,0,1200,0,0,0,,,,2025-06-25 08:00,2026-01-20 16:00,,2025-01-22 08:00,2025-08-19 16:00,2025-01-22 08:00,2025-08-19 16:00,2025-01-22 08:00,2025-08-19 16:00,2025-06-25 08:00,2026-01-20 16:00,,PT_Normal,,,,,2NkK5knDzUKL2dhGRZFn5g,2BL9yAxJ/kmC7XgxJzdrSQ,,,N,0,0,,,2023-02-08 18:30,2023-02-08 18:31,NotPrmUser,NotPrmUser,
141968,27174,55095,178,0,N,1,N,N,CP_Drtn,TT_Task,DT_FixedDUR2,TK_NotStart,ENV1000,10% Environmental Submittal,,880,0,200,0,0,0,200,0,0,0,,,,2025-03-12 08:00,2025-04-15 16:00,,2024-10-09 08:00,2024-11-12 16:00,2024-10-09 08:00,2024-11-12 16:00,2024-10-09 08:00,2024-11-12 16:00,2025-03-12 08:00,2025-04-15 16:00,,PT_Normal,,,,,me7KxnwwF0+38v2ec/XLUg,WtaucAYTSkmjpkRTZ/q51w,,,N,0,0,,,2023-02-08 18:30,2023-02-08 18:31,NotPrmUser,NotPrmUser,
141969,27174,55095,178,0,N,1,N,N,CP_Drtn,TT_Task,DT_FixedDUR2,TK_NotStart,ENV1010,10% Environmental Review,,880,0,120,0,0,0,120,0,0,0,,,,2025-04-16 08:00,2025-05-06 16:00,,2024-11-13 08:00,2024-12-03 16:00,2024-11-13 08:00,2024-12-03 16:00,2024-11-13 08:00,2024-12-03 16:00,2025-04-16 08:00,2025-05-06 16:00,,PT_Normal,,,,,szfwaJph4EynbK1N6TNYxA,FBVizR2oE0a5z+biRLSYjg,,,N,0,0,,,2023-02-08 18:30,2023-02-08 18:31,NotPrmUser,NotPrmUser,
141970,27174,55095,178,0,N,1,N,N,CP_Drtn,TT_Task,DT_FixedDUR2,TK_NotStart,ENV1020,30% Environmental Submittal,,840,0,200,0,0,0,200,0,0,0,,,,2025-08-27 08:00,2025-09-30 16:00,,2025-04-02 08:00,2025-05-06 16:00,2025-04-02 08:00,2025-05-06 16:00,2025-04-02 08:00,2025-05-06 16:00,2025-08-27 08:00,2025-09-30 16:00,,PT_Normal,,,,,VNdAftaERE68kT1i6dupwQ,nZo7K+pGSkObjWXuK0TWiA,,,N,0,0,,,2023-02-08 18:30,2023-02-08 18:31,NotPrmUser,NotPrmUser,
141971,27174,55095,178,0,N,1,N,N,CP_Drtn,TT_Task,DT_FixedDUR2,TK_NotStart,ENV1030,30% Environmental Review,,840,0,120,0,0,0,120,0,0,0,,,,2025-10-01 08:00,2025-10-21 16:00,,2025-05-07 08:00,2025-05-27 16:00,2025-05-07 08:00,2025-05-27 16:00,2025-05-07 08:00,2025-05-27 16:00,2025-10-01 08:00,2025-10-21 16:00,,PT_Normal,,,,,+Y7nbd3H/UCfUf0WVCd9Sw,0v53hifBsUuS6reCx9jjnQ,,,N,0,0,,,2023-02-08 18:30,2023-02-08 18:31,NotPrmUser,NotPrmUser,
141972,27174,55095,178,0,N,1,N,N,CP_Drtn,TT_Task,DT_FixedDUR2,TK_NotStart,ENV1040,60% Environmental Submittal,,840,0,280,0,0,0,280,0,0,0,,,,2025-10-22 08:00,2025-12-09 16:00,,2025-05-28 08:00,2025-07-15 16:00,2025-05-28 08:00,2025-07-15 16:00,2025-05-28 08:00,2025-07-15 16:00,2025-10-22 08:00,2025-12-09 16:00,,PT_Normal,,,,,d4mgAYsF0U+WfBkyqtgdHg,wiKM/iRsrEOy2UhtkEBCtA,,,N,0,0,,,2023-02-08 18:30,2023-02-08 18:31,NotPrmUser,NotPrmUser,
141973,27174,55095,178,0,N,1,N,N,CP_Drtn,TT_Task,DT_FixedDUR2,TK_NotStart,ENV1050,60% Environmental Release,,960,960,120,0,0,0,120,0,0,0,,,,2025-12-31 08:00,2026-01-20 16:00,,2025-07-16 08:00,2025-08-05 16:00,2025-07-16 08:00,2025-08-05 16:00,2025-07-16 08:00,2025-08-05 16:00,2025-12-31 08:00,2026-01-20 16:00,,PT_Normal,,,,,xfRgfawL30WYi/jJFrTVAA,Ut5FVMvzPk+hTuw/Qv31oA,,,N,0,0,,,2023-02-08 18:30,2023-02-08 18:31,NotPrmUser,NotPrmUser,
141974,27174,55095,178,0,N,1,N,N,CP_Drtn,TT_Task,DT_FixedDUR2,TK_NotStart,ENV1060,BIA NEPA Submittal,,840,0,80,0,0,0,80,0,0,0,,,,2025-12-10 08:00,2025-12-23 16:00,,2025-07-16 08:00,2025-07-29 16:00,2025-07-16 08:00,2025-07-29 16:00,2025-07-16 08:00,2025-07-29 16:00,2025-12-10 08:00,2025-12-23 16:00,,PT_Normal,,,,,jNjNMZ094kSwYhiakepRlQ,73w1KornV0q5w0ge9gX68Q,,,N,0,0,,,2023-02-08 18:30,2023-02-08 18:31,NotPrmUser,NotPrmUser,
141975,27174,55095,178,0,N,1,N,N,CP_Drtn,TT_Task,DT_FixedDUR2,TK_NotStart,ENV1070,"BIA Received (Add 250 days, if needed)",,840,840,160,0,0,0,160,0,0,0,,,,2025-12-24 08:00,2026-01-20 16:00,,2025-07-30 08:00,2025-08-26 16:00,2025-07-30 08:00,2025-08-26 16:00,2025-07-30 08:00,2025-08-26 16:00,2025-12-24 08:00,2026-01-20 16:00,,PT_Normal,,,,,UmFWD0JEXUep78B6T1pfCA,pMPRk4mB9kiZ/Gfs/fPPbA,,,N,0,0,,,2023-02-08 18:30,2023-02-08 18:31,NotPrmUser,NotPrmUser,
141976,27174,55085,178,0,N,1,N,N,CP_Drtn,TT_Task,DT_FixedDUR2,TK_NotStart,DES1010,Seismic / Geotech Submittal,,880,0,200,0,0,0,200,0,0,0,,,,2025-05-07 08:00,2025-06-10 16:00,,2024-12-04 08:00,2025-01-07 16:00,2024-12-04 08:00,2025-01-07 16:00,2024-12-04 08:00,2025-01-07 16:00,2025-05-07 08:00,2025-06-10 16:00,,PT_Normal,,,,,GkIlv2fMaU+zgfSyZUWdGQ,PSvKAeVbmkaZRk45TGodtQ,,,N,0,0,,,2023-02-08 18:30,2023-02-08 18:31,NotPrmUser,NotPrmUser,
141977,27174,55085,178,0,N,1,N,N,CP_Drtn,TT_Task,DT_FixedDUR2,TK_NotStart,DES1020,Potholing Submittal,,880,40,200,0,0,0,200,0,0,0,,,,2025-06-11 08:00,2025-07-15 16:00,,2025-01-08 08:00,2025-02-11 16:00,2025-01-08 08:00,2025-02-11 16:00,2025-01-08 08:00,2025-02-11 16:00,2025-06-11 08:00,2025-07-15 16:00,,PT_Normal,,,,,sm+y7T8T006QsPXy/3qhjA,P8bJr/WEnE6lJ3b17LLTVQ,,,N,0,0,,,2023-02-08 18:30,2023-02-08 18:31,NotPrmUser,NotPrmUser,
141978,27174,55085,178,0,N,1,N,N,CP_Drtn,TT_Task,DT_FixedDUR2,TK_NotStart,DES1030,Potholing Release /Perform Potholing,,840,0,240,0,0,0,240,0,0,0,,,,2025-07-16 08:00,2025-08-26 16:00,,2025-02-19 08:00,2025-04-01 16:00,2025-02-19 08:00,2025-04-01 16:00,2025-02-19 08:00,2025-04-01 16:00,2025-07-16 08:00,2025-08-26 16:00,,PT_Normal,,,,,OBRuvjicp0eNes3CRHPcsg,hIMclQtMZ0uuEeCtE/OXog,,,N,0,0,,,2023-02-08 18:30,2023-02-08 18:31,NotPrmUser,NotPrmUser,
141979,27174,55097,178,0,N,1,N,N,CP_Drtn,TT_Task,DT_FixedDUR2,TK_NotStart,PCON100,Initiate Performance Partnering Process @ 60%,,1000,0,40,0,0,0,40,0,0,0,,,,2025-11-19 08:00,2025-11-25 16:00,,2025-05-28 08:00,2025-06-03 16:00,2025-05-28 08:00,2025-06-03 16:00,2025-05-28 08:00,2025-06-03 16:00,2025-11-19 08:00,2025-11-25 16:00,,PT_Normal,,,,,WRB0femny0u9EhcJPG1wWw,w6gRBB7IeU6Z7EvuCe5r4A,,,N,0,0,,,2023-02-08 18:30,2023-02-08 18:31,NotPrmUser,NotPrmUser,
141980,27174,55097,178,0,N,1,N,N,CP_Drtn,TT_Task,DT_FixedDUR2,TK_NotStart,PCON110,Receive Estimate from Contractor,,1000,0,120,0,0,0,120,0,0,0,,,,2025-11-26 08:00,2025-12-16 16:00,,2025-06-04 08:00,2025-06-24 16:00,2025-06-04 08:00,2025-06-24 16:00,2025-06-04 08:00,2025-06-24 16:00,2025-11-26 08:00,2025-12-16 16:00,,PT_Normal,,,,,H/1tq/F27kObQ/9BfXe5vQ,lN+WovPrzEiA3XHNh6KFXQ,,,N,0,0,,,2023-02-08 18:30,2023-02-08 18:31,NotPrmUser,NotPrmUser,
141981,27174,55097,178,0,N,1,N,N,CP_Drtn,TT_Task,DT_FixedDUR2,TK_NotStart,PCON120,Bid Estimate Negotiations,,1000,0,80,0,0,0,80,0,0,0,,,,2025-12-17 08:00,2025-12-30 16:00,,2025-06-25 08:00,2025-07-08 16:00,2025-06-25 08:00,2025-07-08 16:00,2025-06-25 08:00,2025-07-08 16:00,2025-12-17 08:00,2025-12-30 16:00,,PT_Normal,,,,,FbuJAPwYwE+JLgZcLVqrnQ,g5iVkUbzp0qaUGycVctWkQ,,,N,0,0,,,2023-02-08 18:30,2023-02-08 18:31,NotPrmUser,NotPrmUser,
141982,27174,55097,178,0,N,1,N,N,CP_Drtn,TT_Task,DT_FixedDUR2,TK_NotStart,PCON130,Revise Estimate based on IFC,,1000,0,40,0,0,0,40,0,0,0,,,,2025-12-31 08:00,2026-01-06 16:00,,2025-07-09 08:00,2025-07-15 16:00,2025-07-09 08:00,2025-07-15 16:00,2025-07-09 08:00,2025-07-15 16:00,2025-12-31 08:00,2026-01-06 16:00,,PT_Normal,,,,,1MCDt0AUdUKRYuDRykwPlw,bEG/GWYEpk6miYCgCfJb6g,,,N,0,0,,,2023-02-08 18:30,2023-02-08 18:31,NotPrmUser,NotPrmUser,
141983,27174,55097,178,0,N,1,N,N,CP_Drtn,TT_Task,DT_FixedDUR2,TK_NotStart,PCON140,Issue Release,,1000,1000,80,0,0,0,80,0,0,0,,,,2026-01-07 08:00,2026-01-20 16:00,,2025-07-16 08:00,2025-07-29 16:00,2025-07-16 08:00,2025-07-29 16:00,2025-07-16 08:00,2025-07-29 16:00,2026-01-07 08:00,2026-01-20 16:00,,PT_Normal,,,,,/WEFuF0uoE6gkoaiY+EdEA,F0Z5is0YP02+smSj+6jv5A,,,N,0,0,,,2023-02-08 18:30,2023-02-08 18:31,NotPrmUser,NotPrmUser,
141984,27174,55099,178,0,N,1,N,N,CP_Drtn,TT_Task,DT_FixedDUR2,TK_NotStart,PCON200,Civil Pre-Construction Meeting (Civil Construction Ready),,0,0,40,0,0,0,40,0,0,0,,,,2026-01-21 08:00,2026-01-27 16:00,,2026-01-21 08:00,2026-01-27 16:00,2026-01-21 08:00,2026-01-27 16:00,2026-01-21 08:00,2026-01-27 16:00,2026-01-21 08:00,2026-01-27 16:00,,PT_Normal,,,,,NcwvR6ucy0aDWaJUs2kTVg,mePaHfblcUCCJO9HK3HlWQ,,,Y,0,0,,,2023-02-08 18:30,2023-02-08 18:31,NotPrmUser,NotPrmUser,
141985,27174,55099,178,0,N,1,N,N,CP_Drtn,TT_Task,DT_FixedDUR2,TK_NotStart,PCON210,Electrical - Pre-Construction Meeting (Electical Construction Ready),,240,0,40,0,0,0,40,0,0,0,,,,2026-03-04 08:00,2026-03-10 16:00,,2026-01-21 08:00,2026-01-27 16:00,2026-01-21 08:00,2026-01-27 16:00,2026-01-21 08:00,2026-01-27 16:00,2026-03-04 08:00,2026-03-10 16:00,,PT_Normal,,,,,0KWWPGNHX0qVp1mYyaBgOA,v1bB74KGCUua7dQw6DlRWg,,,N,0,0,,,2023-02-08 18:30,2023-02-08 18:31,NotPrmUser,NotPrmUser,
141986,27174,55098,178,0,N,1,N,N,CP_Drtn,TT_Task,DT_FixedDUR2,TK_NotStart,PCON150,Initiate Performance Partnering Process @ 60%,,1480,0,40,0,0,0,40,0,0,0,,,,2025-12-31 08:00,2026-01-06 16:00,,2025-04-16 08:00,2025-04-22 16:00,2025-04-16 08:00,2025-04-22 16:00,2025-04-16 08:00,2025-04-22 16:00,2025-12-31 08:00,2026-01-06 16:00,,PT_Normal,,,,,z6TKqCDN40+v68MTKE3JSw,l7dqcRYyLUuD1sHw6AVHyQ,,,N,0,0,,,2023-02-08 18:30,2023-02-08 18:31,NotPrmUser,NotPrmUser,
141987,27174,55098,178,0,N,1,N,N,CP_Drtn,TT_Task,DT_FixedDUR2,TK_NotStart,PCON160,Receive Estimate from Contractor,,1480,0,120,0,0,0,120,0,0,0,,,,2026-01-07 08:00,2026-01-27 16:00,,2025-04-23 08:00,2025-05-13 16:00,2025-04-23 08:00,2025-05-13 16:00,2025-04-23 08:00,2025-05-13 16:00,2026-01-07 08:00,2026-01-27 16:00,,PT_Normal,,,,,Z86ss9SDVUqvHIc9VrEzxw,pOLz0j7V60ysoUraCC+1pQ,,,N,0,0,,,2023-02-08 18:30,2023-02-08 18:31,NotPrmUser,NotPrmUser,
141988,27174,55098,178,0,N,1,N,N,CP_Drtn,TT_Task,DT_FixedDUR2,TK_NotStart,PCON170,Bid Estimate Negotiations,,1480,0,80,0,0,0,80,0,0,0,,,,2026-01-28 08:00,2026-02-10 16:00,,2025-05-14 08:00,2025-05-27 16:00,2025-05-14 08:00,2025-05-27 16:00,2025-05-14 08:00,2025-05-27 16:00,2026-01-28 08:00,2026-02-10 16:00,,PT_Normal,,,,,M3iMLztQHUuyIfHNV/Uupw,dSI2UN3ch0qwzvKdfbCv6g,,,N,0,0,,,2023-02-08 18:30,2023-02-08 18:31,NotPrmUser,NotPrmUser,
141989,27174,55098,178,0,N,1,N,N,CP_Drtn,TT_Task,DT_FixedDUR2,TK_NotStart,PCON180,Revise Estimate based on IFC,,1480,0,40,0,0,0,40,0,0,0,,,,2026-02-11 08:00,2026-02-17 16:00,,2025-05-28 08:00,2025-06-03 16:00,2025-05-28 08:00,2025-06-03 16:00,2025-05-28 08:00,2025-06-03 16:00,2026-02-11 08:00,2026-02-17 16:00,,PT_Normal,,,,,skCXcJN4rkmLxkIPfSwHMA,T0NhOrAFVECd85cZ3RzYuQ,,,N,0,0,,,2023-02-08 18:30,2023-02-08 18:31,NotPrmUser,NotPrmUser,
141990,27174,55098,178,0,N,1,N,N,CP_Drtn,TT_Task,DT_FixedDUR2,TK_NotStart,PCON190,Issue Release,,1480,1240,80,0,0,0,80,0,0,0,,,,2026-02-18 08:00,2026-03-03 16:00,,2025-06-04 08:00,2025-06-17 16:00,2025-06-04 08:00,2025-06-17 16:00,2025-06-04 08:00,2025-06-17 16:00,2026-02-18 08:00,2026-03-03 16:00,,PT_Normal,,,,,KybjiKF3VkmD8u3obtV3ZA,XrndhEPpBkSaYH2WP5c+VQ,,,N,0,0,,,2023-02-08 18:30,2023-02-08 18:31,NotPrmUser,NotPrmUser,
141991,27174,55091,178,0,N,1,N,N,CP_Drtn,TT_Task,DT_FixedDUR2,TK_NotStart,PRO1010,Order Long Lead Civil Material,,680,680,1200,0,0,0,1200,0,0,0,,,,2025-06-25 08:00,2026-01-20 16:00,,2025-02-26 08:00,2025-09-23 16:00,2025-02-26 08:00,2025-09-23 16:00,2025-02-26 08:00,2025-09-23 16:00,2025-06-25 08:00,2026-01-20 16:00,,PT_Normal,,,,,B43QsxjfVUecWTu+rqE3EQ,wZTXnxPB2keJVxockLoJTw,,,N,0,0,,,2023-02-08 18:30,2023-02-08 18:31,NotPrmUser,NotPrmUser,
141992,27174,55091,178,0,N,1,N,N,CP_Drtn,TT_Task,DT_FixedDUR2,TK_NotStart,PRO1050,Order Short Lead Materials,,600,600,200,0,0,0,200,0,0,0,,,,2025-12-17 08:00,2026-01-20 16:00,,2025-09-03 08:00,2025-10-07 16:00,2025-09-03 08:00,2025-10-07 16:00,2025-09-03 08:00,2025-10-07 16:00,2025-12-17 08:00,2026-01-20 16:00,,PT_Normal,,,,,Km8n3i4370adNV0ZUGrjTQ,IFAXNcKvjUGwSEWywRwqkw,,,N,0,0,,,2023-02-08 18:30,2023-02-08 18:31,NotPrmUser,NotPrmUser,
141993,27174,55091,178,0,N,1,N,N,CP_Drtn,TT_Task,DT_FixedDUR2,TK_NotStart,PRO1030,Order Long Lead Electrical Materials,,920,680,800,0,0,0,800,0,0,0,,,,2025-10-15 08:00,2026-03-03 16:00,,2025-05-07 08:00,2025-09-23 16:00,2025-05-07 08:00,2025-09-23 16:00,2025-05-07 08:00,2025-09-23 16:00,2025-10-15 08:00,2026-03-03 16:00,,PT_Normal,,,,,12J1BtJkTkKTIf5HuObP2w,HwC+pjYinEecVihOVaMdsA,,,N,0,0,,,2023-02-08 18:30,2023-02-08 18:31,NotPrmUser,NotPrmUser,
141994,27174,55101,178,0,N,1,N,N,CP_Drtn,TT_Task,DT_FixedDUR2,TK_NotStart,CON2000,Civil Construction (Trenching 300 feet/day),7730,0,0,3520,0,7208,7208,3520,0,0,0,,,,2026-01-28 08:00,2027-10-05 16:00,,2026-01-28 08:00,2027-10-05 16:00,2026-01-28 08:00,2027-10-05 16:00,2026-01-28 08:00,2027-10-05 16:00,2026-01-28 08:00,2027-10-05 16:00,,PT_Normal,,,,,RaCeWdPRiU+uJqHtyJ8xTg,Xtg6yXRnOkyc6jFF/5oDHQ,,,Y,0,0,,,2023-02-08 18:30,2023-02-08 19:13,NotPrmUser,NotPrmUser,
141995,27174,55102,178,0,N,1,N,N,CP_Drtn,TT_Task,DT_FixedDUR2,TK_NotStart,CON3000,Electrical Construction,7786,0,0,3280,0,1640,1640,3280,0,0,0,,,,2026-03-11 08:00,2027-10-05 16:00,,2026-03-11 08:00,2027-10-05 16:00,2026-03-11 08:00,2027-10-05 16:00,2026-03-11 08:00,2027-10-05 16:00,2026-03-11 08:00,2027-10-05 16:00,,PT_Normal,,,,,+nSaqVlAx0+oyLqR2gAoSA,Tq09wpb3YUmBtVPuv/S0uA,,,Y,0,0,,,2023-02-08 18:30,2023-02-08 19:36,NotPrmUser,NotPrmUser,
141996,27174,55103,178,0,N,1,N,N,CP_Drtn,TT_Task,DT_FixedDUR2,TK_NotStart,CON4000,Service Cutover,,1056,0,2920,0,0,0,2920,0,0,0,,,,2026-11-13 08:00,2028-04-06 16:00,,2026-05-13 08:00,2027-10-05 16:00,2026-05-13 08:00,2027-10-05 16:00,2026-05-13 08:00,2027-10-05 16:00,2026-11-13 08:00,2028-04-06 16:00,,PT_Normal,,,,,9hqqgWNgQU26ord3O3uv1Q,lWOPtqejykCtLS7Yo5QGPg,,,N,0,0,,,2023-02-08 18:30,2023-02-08 18:31,NotPrmUser,NotPrmUser,
141997,27174,55104,178,0,N,1,N,N,CP_Drtn,TT_Task,DT_FixedDUR2,TK_NotStart,CON5000,Scada Construction,,1056,0,520,0,0,0,520,0,0,0,,,,2028-01-07 08:00,2028-04-06 16:00,,2027-07-07 08:00,2027-10-05 16:00,2027-07-07 08:00,2027-10-05 16:00,2027-07-07 08:00,2027-10-05 16:00,2028-01-07 08:00,2028-04-06 16:00,,PT_Normal,,,,,THoUP87fYUez0aWchYXU0A,zaBCdUoT106LyUP4bHNQiw,,,N,0,0,,,2023-02-08 18:30,2023-02-08 18:31,NotPrmUser,NotPrmUser,
141998,27174,55105,178,0,N,1,N,N,CP_Drtn,TT_Task,DT_FixedDUR2,TK_NotStart,CON6000,Substation Construction,,1056,0,520,0,0,0,520,0,0,0,,,,2028-01-07 08:00,2028-04-06 16:00,,2027-07-07 08:00,2027-10-05 16:00,2027-07-07 08:00,2027-10-05 16:00,2027-07-07 08:00,2027-10-05 16:00,2028-01-07 08:00,2028-04-06 16:00,,PT_Normal,,,,,atgwxJKRvEebEAlPkiVjjA,S2inwKNjSEGj4couuXxt4w,,,N,0,0,,,2023-02-08 18:30,2023-02-08 18:31,NotPrmUser,NotPrmUser,
141999,27174,55106,178,0,N,1,N,N,CP_Drtn,TT_Task,DT_FixedDrtn,TK_NotStart,CON7000,Overhead RFS (1000 feet per day),7785,0,0,1056,0,1056,1056,1056,0,0,0,,,,2027-10-06 08:00,2028-04-06 16:00,,2027-10-06 08:00,2028-04-06 16:00,2027-10-06 08:00,2028-04-06 16:00,2027-10-06 08:00,2028-04-06 16:00,2027-10-06 08:00,2028-04-06 16:00,,PT_Normal,,,,,nGcMpJ41pEah2/h1IX6Cyg,ccRU0y2eZkSR+w3TCnilfw,,,Y,0,0,,,2023-02-08 18:30,2023-02-08 18:31,NotPrmUser,NotPrmUser,
142000,27174,55100,178,0,N,1,N,N,CP_Drtn,TT_Task,DT_FixedDUR2,TK_NotStart,ISD1000,ISD - Energize - Put in service,,2008,2008,8,0,0,0,8,25,0,25,,,,2028-09-21 08:00,2028-09-21 16:00,,2027-10-06 08:00,2027-10-06 16:00,2027-10-06 08:00,2027-10-06 16:00,2027-10-06 08:00,2027-10-06 16:00,2028-09-21 08:00,2028-09-21 16:00,,PT_Normal,,,,,snRUxtNkjkyVWWa6dOlv+w,sXIfnjuLEkSpIvKDdePViw,,,N,0,0,,,2023-02-08 18:30,2023-02-08 18:31,NotPrmUser,NotPrmUser,
142001,27174,55083,178,0,N,1,N,N,CP_Drtn,TT_Task,DT_FixedDUR2,TK_NotStart,SUR1000,Survey and LiDAR,7385,0,0,400,0,9182,9182,400,0,0,0,,,,2024-07-31 08:00,2024-10-08 16:00,,2024-07-31 08:00,2024-10-08 16:00,2024-07-31 08:00,2024-10-08 16:00,2024-07-31 08:00,2024-10-08 16:00,2024-07-31 08:00,2024-10-08 16:00,,PT_Normal,,,,,wTYw2M1/fkGRDsp5LzZL2Q,+QAnpOdaYE+nEyS7ls1G1g,,,Y,0,0,,,2023-02-08 18:30,2023-02-08 18:31,NotPrmUser,NotPrmUser,
142002,27174,55088,178,0,N,1,N,N,CP_Drtn,TT_Task,DT_FixedDUR2,TK_NotStart,DES1200,Receive Services Worksheet and Cable Info from Design Firms,,760,0,160,0,0,0,160,0,0,0,,,,2025-04-23 08:00,2025-05-20 16:00,,2024-12-11 08:00,2025-01-07 16:00,2024-12-11 08:00,2025-01-07 16:00,2024-12-11 08:00,2025-01-07 16:00,2025-04-23 08:00,2025-05-20 16:00,,PT_Normal,,,,,r5qZLLLlj0GAdEk6/EJb5w,CXAfDdltrkKhcHrtLw+5Pg,,,N,0,0,,,2023-02-08 18:30,2023-02-08 18:31,NotPrmUser,NotPrmUser,
142003,27174,55088,178,0,N,1,N,N,CP_Drtn,TT_Task,DT_FixedDUR2,TK_NotStart,DES1210,Issue to Trench Inspectors,,2376,1320,80,0,0,0,80,0,0,0,,,,2026-10-30 08:00,2026-11-12 16:00,,2025-09-10 08:00,2025-09-23 16:00,2025-09-10 08:00,2025-09-23 16:00,2025-09-10 08:00,2025-09-23 16:00,2026-10-30 08:00,2026-11-12 16:00,,PT_Normal,,,,,y1EYbzaA7kOBIJ5QF1zJYQ,v5AHnSFsFUCbGvEfajT5xg,,,N,0,0,,,2023-02-08 18:30,2023-02-08 18:31,NotPrmUser,NotPrmUser,
142004,27174,55100,178,0,N,1,N,N,CP_Drtn,TT_FinMile,DT_FixedDrtn,TK_NotStart,CON1020,Construction Complete,,0,0,0,0,0,0,0,0,0,0,,,,2028-04-06 16:00,2028-04-06 16:00,,2028-04-06 16:00,2028-04-06 16:00,2028-04-06 16:00,2028-04-06 16:00,2028-04-06 16:00,2028-04-06 16:00,2028-04-06 16:00,2028-04-06 16:00,,PT_Normal,,,,,C5JKHzllnEqWxCRrU/VbmQ,Iv6aCmnEekG/fpDpde5xbQ,,,Y,0,0,,,2023-02-08 18:30,2023-02-08 18:31,NotPrmUser,NotPrmUser,
142005,27174,55100,178,0,N,1,N,N,CP_Drtn,TT_Mile,DT_FixedDrtn,TK_NotStart,CON1010,Construction Start,,5536,5536,0,0,0,0,0,0,0,0,,,,2028-09-21 16:00,2028-09-21 16:00,,2026-01-28 08:00,2026-01-28 08:00,2026-01-28 08:00,2026-01-28 08:00,2026-01-28 08:00,2026-01-28 08:00,2028-09-21 16:00,2028-09-21 16:00,,PT_Normal,,,,,Y7vZnammo0iP+fXMnMZzeA,HvycTbsZX0iZYHYdWecDkA,,,N,0,0,,,2023-02-08 18:30,2023-02-08 18:31,NotPrmUser,NotPrmUser,
142006,27174,55109,178,0,N,1,N,N,CP_Drtn,TT_Task,DT_FixedDUR2,TK_NotStart,CLO1020,GIS/As-Built and Records Complete,,480,480,480,0,0,0,480,0,0,0,,,,2028-06-30 08:00,2028-09-21 16:00,,2028-04-07 08:00,2028-06-29 16:00,2028-04-07 08:00,2028-06-29 16:00,2028-04-07 08:00,2028-06-29 16:00,2028-06-30 08:00,2028-09-21 16:00,,PT_Normal,,,,,95qLAD5LVkOIT31EjFDgNQ,yOOFE0skbUyT3cMAxX2p0A,,,N,0,0,,,2023-02-08 18:30,2023-02-08 18:31,NotPrmUser,NotPrmUser,
142007,27174,55110,178,0,N,1,N,N,CP_Drtn,TT_Task,DT_FixedDUR2,TK_NotStart,CLO1030,"PO's complete, Work Order Reconcilled and Closed",,0,0,960,0,0,0,960,0,0,0,,,,2028-04-07 08:00,2028-09-21 16:00,,2028-04-07 08:00,2028-09-21 16:00,2028-04-07 08:00,2028-09-21 16:00,2028-04-07 08:00,2028-09-21 16:00,2028-04-07 08:00,2028-09-21 16:00,,PT_Normal,,,,,nBChqtvyt0GHU/4rKMO3gA,lVEUu0lFQU2NWdc9aEmPlg,,,Y,0,0,,,2023-02-08 18:30,2023-02-08 18:31,NotPrmUser,NotPrmUser,
142008,27174,55108,178,0,N,1,N,N,CP_Drtn,TT_FinMile,DT_FixedDrtn,TK_NotStart,CLO1010,Project Complete,,0,0,0,0,0,0,0,0,0,0,,,,2028-09-21 16:00,2028-09-21 16:00,,2028-09-21 16:00,2028-09-21 16:00,2028-09-21 16:00,2028-09-21 16:00,2028-09-21 16:00,2028-09-21 16:00,2028-09-21 16:00,2028-09-21 16:00,,PT_Normal,,,,,HDuRowmRg0Ot6tfuLigdBg,oEzrhooLHk2SBbFBvP+LRg,,,Y,0,0,,,2023-02-08 18:30,2023-02-08 18:31,NotPrmUser,NotPrmUser,
142009,27174,55084,178,0,N,1,N,N,CP_Drtn,TT_LOE,DT_FixedDUR2,TK_NotStart,DES1000,Design Summary,7257,4096,0,2680,0,16233,16233,2680,0,0,0,,,,2024-10-09 08:00,2028-01-06 16:00,,2024-10-09 08:00,2026-01-20 16:00,2024-10-09 08:00,2026-01-20 16:00,2024-10-09 08:00,2026-01-20 16:00,2024-10-09 08:00,2028-01-06 16:00,,PT_Normal,,,,,PWOnsi+wukirk/xSxw4a0w,bqevKqhQcEWS2iDyTRBi8Q,,,Y,0,0,,,2023-02-08 18:30,2023-02-08 18:31,NotPrmUser,NotPrmUser,
142010,27174,55100,178,0,N,1,N,N,CP_Drtn,TT_LOE,DT_FixedDUR2,TK_NotStart,CON1000,Construction Summary,7385,0,0,4576,0,9972,9972,4576,25,0,25,,,,2028-04-06 16:00,2028-04-06 16:00,,2026-01-28 08:00,2028-04-06 16:00,2026-01-28 08:00,2028-04-06 16:00,2026-01-28 08:00,2028-04-06 16:00,2028-04-06 16:00,2028-04-06 16:00,,PT_Normal,,,,,KHiWD/Uc+EC58p+x8dkyqQ,+UvQLFp+OkWws+bYIW/Z3w,,,N,0,0,,,2023-02-08 18:30,2023-02-08 18:31,NotPrmUser,NotPrmUser,
142011,27174,55108,178,0,N,1,N,N,CP_Drtn,TT_LOE,DT_FixedDUR2,TK_NotStart,CLO1000,Close Out Summary,7385,0,0,960,0,4482,4482,960,0,0,0,,,,2028-04-07 08:00,2028-09-21 16:00,,2028-04-07 08:00,2028-09-21 16:00,2028-04-07 08:00,2028-09-21 16:00,2028-04-07 08:00,2028-09-21 16:00,2028-04-07 08:00,2028-09-21 16:00,,PT_Normal,,,,,zdDqczFfokyla+x/qQClrg,2ilI8DOYjk+DnfasMw3yyA,,,Y,0,0,,,2023-02-08 18:30,2023-02-08 18:31,NotPrmUser,NotPrmUser,
142012,27174,55081,178,0,N,1,N,N,CP_Drtn,TT_LOE,DT_FixedDUR2,TK_NotStart,PCON1000,Pre-Construction Summary,,0,0,3296,0,0,0,3296,0,0,0,,,,2024-07-01 08:00,2026-01-27 16:00,,2024-07-01 08:00,2026-01-27 16:00,2024-07-01 08:00,2026-01-27 16:00,2024-07-01 08:00,2026-01-27 16:00,2024-07-01 08:00,2026-01-27 16:00,,PT_Normal,,,,,4Sn48TeCZU6B4kxZnDsqaA,bY8eLQCHk06XxoFBvLmVvA,,,Y,0,0,,,2023-02-08 18:30,2023-02-08 18:31,NotPrmUser,NotPrmUser,
142013,27175,55112,178,0,N,1,N,N,CP_Drtn,TT_Task,DT_FixedDUR2,TK_NotStart,SCO1000,Bundling / Phasing of circuits for project sequencing,,0,0,80,0,0,0,80,0,0,0,2024-08-01 00:00,,,2024-08-01 08:00,2024-08-14 16:00,,2024-08-01 08:00,2024-08-14 16:00,2024-08-01 08:00,2024-08-14 16:00,2024-08-01 08:00,2024-08-14 16:00,2024-08-01 08:00,2024-08-14 16:00,CS_MSOA,PT_Normal,,,,,/nne6cJoJEG8RhAhfAgg5w,4OlfIHSRCU6z21K4bWvYcg,,,Y,0,0,,,2023-02-08 18:30,2023-02-08 18:31,NotPrmUser,NotPrmUser,
142014,27175,55112,178,0,N,1,N,N,CP_Drtn,TT_Task,DT_FixedDUR2,TK_NotStart,SCO1010,Constructability Review,,0,0,40,0,0,0,40,0,0,0,,,,2024-08-15 08:00,2024-08-21 16:00,,2024-08-15 08:00,2024-08-21 16:00,2024-08-15 08:00,2024-08-21 16:00,2024-08-15 08:00,2024-08-21 16:00,2024-08-15 08:00,2024-08-21 16:00,,PT_Normal,,,,,L1kQ15Uabkiq3BC94feqRA,bNshwZpinEG+7TPdphszxA,,,Y,0,0,,,2023-02-08 18:30,2023-02-08 18:31,NotPrmUser,NotPrmUser,
142015,27175,55112,178,0,N,1,N,N,CP_Drtn,TT_Task,DT_FixedDUR2,TK_NotStart,SCO1020,SDG&E Review,,0,0,16,0,0,0,16,0,0,0,,,,2024-08-22 08:00,2024-08-23 16:00,,2024-08-22 08:00,2024-08-23 16:00,2024-08-22 08:00,2024-08-23 16:00,2024-08-22 08:00,2024-08-23 16:00,2024-08-22 08:00,2024-08-23 16:00,,PT_Normal,,,,,ewqZFVLUeU6o92ZFL5h2Zg,DXd4S5ZMI0mWk0o/TY+H5Q,,,Y,0,0,,,2023-02-08 18:30,2023-02-08 18:31,NotPrmUser,NotPrmUser,
142016,27175,55113,178,0,N,1,N,N,CP_Drtn,TT_Task,DT_FixedDUR2,TK_NotStart,PLA1000,Workorder Setup,,0,0,40,0,0,0,40,0,0,0,,,,2024-08-26 08:00,2024-08-30 16:00,,2024-08-26 08:00,2024-08-30 16:00,2024-08-26 08:00,2024-08-30 16:00,2024-08-26 08:00,2024-08-30 16:00,2024-08-26 08:00,2024-08-30 16:00,,PT_Normal,,,,,bY1ZTtGVwkWVb5bUuP5rxQ,c07sfIKF5E2bWAerc3Y88Q,,,Y,0,0,,,2023-02-08 18:30,2023-02-08 18:31,NotPrmUser,NotPrmUser,
142017,27175,55116,178,0,N,1,N,N,CP_Drtn,TT_Task,DT_FixedDUR2,TK_NotStart,DES1040,10% Submittal,,0,0,200,0,0,0,200,0,0,0,,,,2024-11-11 08:00,2024-12-13 16:00,,2024-11-11 08:00,2024-12-13 16:00,2024-11-11 08:00,2024-12-13 16:00,2024-11-11 08:00,2024-12-13 16:00,2024-11-11 08:00,2024-12-13 16:00,,PT_Normal,,,,,kjnBJng3YEeKzT6thxF7Xg,10+rYXJlSk2sHXQ6doS/iw,,,Y,0,0,,,2023-02-08 18:30,2023-02-08 18:31,NotPrmUser,NotPrmUser,
142018,27175,55116,178,0,N,1,N,N,CP_Drtn,TT_Task,DT_FixedDUR2,TK_NotStart,DES1050,30% Submittal,,0,0,400,0,0,0,400,0,0,0,,,,2024-12-16 08:00,2025-02-21 16:00,,2024-12-16 08:00,2025-02-21 16:00,2024-12-16 08:00,2025-02-21 16:00,2024-12-16 08:00,2025-02-21 16:00,2024-12-16 08:00,2025-02-21 16:00,,PT_Normal,,,,,yLWpZxy4gUavpEoYEvExMQ,dx3FokQUpk+ulvhMkTq/Iw,,,Y,0,0,,,2023-02-08 18:30,2023-02-08 18:31,NotPrmUser,NotPrmUser,
142019,27175,55116,178,0,N,1,N,N,CP_Drtn,TT_Task,DT_FixedDUR2,TK_NotStart,DES1060,30% Review,,0,0,80,0,0,0,80,0,0,0,,,,2025-02-24 08:00,2025-03-07 16:00,,2025-02-24 08:00,2025-03-07 16:00,2025-02-24 08:00,2025-03-07 16:00,2025-02-24 08:00,2025-03-07 16:00,2025-02-24 08:00,2025-03-07 16:00,,PT_Normal,,,,,/H8MSo2Ad0GHSCkg9YtuFA,+70+PH2T+k6LVgJRTdGf7g,,,Y,0,0,,,2023-02-08 18:30,2023-02-08 18:31,NotPrmUser,NotPrmUser,
142020,27175,55116,178,0,N,1,N,N,CP_Drtn,TT_Task,DT_FixedDUR2,TK_NotStart,DES1070,60% Submittal,,600,0,560,0,0,0,560,0,0,0,,,,2025-06-23 08:00,2025-09-26 16:00,,2025-03-10 08:00,2025-06-13 16:00,2025-03-10 08:00,2025-06-13 16:00,2025-03-10 08:00,2025-06-13 16:00,2025-06-23 08:00,2025-09-26 16:00,,PT_Normal,,,,,IPDXxd6uV06g8T9pw11akw,jfNGqXxs802/YjncIRf1OA,,,N,0,0,,,2023-02-08 18:30,2023-02-08 18:31,NotPrmUser,NotPrmUser,
142021,27175,55116,178,0,N,1,N,N,CP_Drtn,TT_Task,DT_FixedDUR2,TK_NotStart,DES1080,60% Review,,600,0,80,0,0,0,80,0,0,0,,,,2025-09-29 08:00,2025-10-10 16:00,,2025-06-16 08:00,2025-06-27 16:00,2025-06-16 08:00,2025-06-27 16:00,2025-06-16 08:00,2025-06-27 16:00,2025-09-29 08:00,2025-10-10 16:00,,PT_Normal,,,,,h3BXr4cD4Ea+v3FheBshYg,LF5S5N93ykSb70yi+7niCA,,,N,0,0,,,2023-02-08 18:30,2023-02-08 18:31,NotPrmUser,NotPrmUser,
142022,27175,55116,178,0,N,1,N,N,CP_Drtn,TT_Task,DT_FixedDUR2,TK_NotStart,DES1090,90% Submittal,,600,0,360,0,0,0,360,0,0,0,,,,2025-10-13 08:00,2025-12-12 16:00,,2025-06-30 08:00,2025-08-29 16:00,2025-06-30 08:00,2025-08-29 16:00,2025-06-30 08:00,2025-08-29 16:00,2025-10-13 08:00,2025-12-12 16:00,,PT_Normal,,,,,mbdjV2dxck6fHQQZ2AxXkg,N+d4gYZ0AkWEf11sXhxXIw,,,N,0,0,,,2023-02-08 18:30,2023-02-08 18:31,NotPrmUser,NotPrmUser,
142023,27175,55116,178,0,N,1,N,N,CP_Drtn,TT_Task,DT_FixedDUR2,TK_NotStart,DES1100,90% Review,,600,0,80,0,0,0,80,0,0,0,,,,2025-12-15 08:00,2025-12-26 16:00,,2025-09-01 08:00,2025-09-12 16:00,2025-09-01 08:00,2025-09-12 16:00,2025-09-01 08:00,2025-09-12 16:00,2025-12-15 08:00,2025-12-26 16:00,,PT_Normal,,,,,PfJiWF75kES9L9bDTE4POQ,/Tz4dmPv8E6v1/mjtkf1sw,,,N,0,0,,,2023-02-08 18:30,2023-02-08 18:31,NotPrmUser,NotPrmUser,
142024,27175,55116,178,0,N,1,N,N,CP_Drtn,TT_Task,DT_FixedDUR2,TK_NotStart,DES1110,100% Submittal,,680,0,160,0,0,0,160,0,0,0,,,,2026-01-12 08:00,2026-02-06 16:00,,2025-09-15 08:00,2025-10-10 16:00,2025-09-15 08:00,2025-10-10 16:00,2025-09-15 08:00,2025-10-10 16:00,2026-01-12 08:00,2026-02-06 16:00,,PT_Normal,,,,,MyxSH2fHxEWyIKED5Ct6Kw,QIwgUSUtPk+p+3vXCV/hng,,,N,0,0,,,2023-02-08 18:30,2023-02-08 18:31,NotPrmUser,NotPrmUser,
142025,27175,55116,178,0,N,1,N,N,CP_Drtn,TT_Task,DT_FixedDUR2,TK_NotStart,DES1120,Issue IFC Design Package,,0,0,80,0,0,0,80,0,0,0,,,,2026-02-09 08:00,2026-02-20 16:00,,2026-02-09 08:00,2026-02-20 16:00,2026-02-09 08:00,2026-02-20 16:00,2026-02-09 08:00,2026-02-20 16:00,2026-02-09 08:00,2026-02-20 16:00,,PT_Normal,,,,,yg3H0paLWU68k5hycotKpQ,RENu8ku8C0yKS1f7lHMWKw,,,Y,0,0,,,2023-02-08 18:30,2023-02-08 18:31,NotPrmUser,NotPrmUser,
142026,27175,55117,178,0,N,1,N,N,CP_Drtn,TT_Task,DT_FixedDUR2,TK_NotStart,DES1130,60% Submittal,,840,0,480,0,0,0,480,0,0,0,,,,2025-07-07 08:00,2025-09-26 16:00,,2025-02-10 08:00,2025-05-02 16:00,2025-02-10 08:00,2025-05-02 16:00,2025-02-10 08:00,2025-05-02 16:00,2025-07-07 08:00,2025-09-26 16:00,,PT_Normal,,,,,t4bxMS02Zk+ZWlBhe22LkA,eiVEKdyOqUSWredkQCt9XA,,,N,0,0,,,2023-02-08 18:30,2023-02-08 18:31,NotPrmUser,NotPrmUser,
142027,27175,55117,178,0,N,1,N,N,CP_Drtn,TT_Task,DT_FixedDUR2,TK_NotStart,DES1140,60% Review,,920,0,80,0,0,0,80,0,0,0,,,,2025-10-13 08:00,2025-10-24 16:00,,2025-05-05 08:00,2025-05-16 16:00,2025-05-05 08:00,2025-05-16 16:00,2025-05-05 08:00,2025-05-16 16:00,2025-10-13 08:00,2025-10-24 16:00,,PT_Normal,,,,,mTjchF/RyUWSeKHOGd59hg,n98HvrkTcE6SSOWM1XNAqw,,,N,0,0,,,2023-02-08 18:30,2023-02-08 18:31,NotPrmUser,NotPrmUser,
142028,27175,55117,178,0,N,1,N,N,CP_Drtn,TT_Task,DT_FixedDUR2,TK_NotStart,DES1150,90% Submittal,,1120,0,400,0,0,0,400,0,0,0,,,,2025-12-01 08:00,2026-02-06 16:00,,2025-05-19 08:00,2025-07-25 16:00,2025-05-19 08:00,2025-07-25 16:00,2025-05-19 08:00,2025-07-25 16:00,2025-12-01 08:00,2026-02-06 16:00,,PT_Normal,,,,,n9bKbFxcdEC3CFOm0i/sSg,Z12o5gfkL0epRuthxPgfsA,,,N,0,0,,,2023-02-08 18:30,2023-02-08 18:31,NotPrmUser,NotPrmUser,
142029,27175,55117,178,0,N,1,N,N,CP_Drtn,TT_Task,DT_FixedDUR2,TK_NotStart,DES1160,90% Review,,1120,0,80,0,0,0,80,0,0,0,,,,2026-02-09 08:00,2026-02-20 16:00,,2025-07-28 08:00,2025-08-08 16:00,2025-07-28 08:00,2025-08-08 16:00,2025-07-28 08:00,2025-08-08 16:00,2026-02-09 08:00,2026-02-20 16:00,,PT_Normal,,,,,nl7l/NHsf024e84DQ1Dh3Q,lk59x+yhzEKV1ohYBdaxRw,,,N,0,0,,,2023-02-08 18:30,2023-02-08 18:31,NotPrmUser,NotPrmUser,
142030,27175,55117,178,0,N,1,N,N,CP_Drtn,TT_Task,DT_FixedDUR2,TK_NotStart,DES1170,100% Submittal,,1120,880,160,0,0,0,160,0,0,0,,,,2026-02-23 08:00,2026-03-20 16:00,,2025-08-11 08:00,2025-09-05 16:00,2025-08-11 08:00,2025-09-05 16:00,2025-08-11 08:00,2025-09-05 16:00,2026-02-23 08:00,2026-03-20 16:00,,PT_Normal,,,,,1LTo0NJmvUqUl9HJDSQzOg,5NtFbzDCl0e2b0wGBqjf1A,,,N,0,0,,,2023-02-08 18:30,2023-02-08 18:31,NotPrmUser,NotPrmUser,
142031,27175,55117,178,0,N,1,N,N,CP_Drtn,TT_Task,DT_FixedDUR2,TK_NotStart,DES1180,Issue IFC Design Package,,240,0,80,0,0,0,80,0,0,0,,,,2026-03-23 08:00,2026-04-03 16:00,,2026-02-09 08:00,2026-02-20 16:00,2026-02-09 08:00,2026-02-20 16:00,2026-02-09 08:00,2026-02-20 16:00,2026-03-23 08:00,2026-04-03 16:00,,PT_Normal,,,,,Ec/luMAwLUm+txcGanjnOA,QGT69Fu3ZE2CvPk5eRlkvA,,,N,0,0,,,2023-02-08 18:30,2023-02-08 18:31,NotPrmUser,NotPrmUser,
142032,27175,55118,178,0,N,1,N,N,CP_Drtn,TT_Task,DT_FixedDUR2,TK_NotStart,DES1190,Issue Services Worksheet to Design Firms,,760,0,160,0,0,0,160,0,0,0,,,,2025-04-28 08:00,2025-05-23 16:00,,2024-12-16 08:00,2025-01-10 16:00,2024-12-16 08:00,2025-01-10 16:00,2024-12-16 08:00,2025-01-10 16:00,2025-04-28 08:00,2025-05-23 16:00,,PT_Normal,,,,,BlwpEvlXjE6jO627GVVWGQ,DO0kzSgdmEqrT1WF+suN0Q,,,N,0,0,,,2023-02-08 18:30,2023-02-08 18:31,NotPrmUser,NotPrmUser,
142033,27175,55119,178,0,N,1,N,N,CP_Drtn,TT_Task,DT_FixedDUR2,TK_NotStart,DES1220,SED Design,,6376,0,240,0,0,0,240,0,0,0,,,,2027-12-01 08:00,2028-01-11 16:00,,2024-11-11 08:00,2024-12-20 16:00,2024-11-11 08:00,2024-12-20 16:00,2024-11-11 08:00,2024-12-20 16:00,2027-12-01 08:00,2028-01-11 16:00,,PT_Normal,,,,,0Grgh5wJB0a7IzG5KyqABQ,j44ikPQkeUq8qkKKZ8Vltg,,,N,0,0,,,2023-02-08 18:30,2023-02-08 18:31,NotPrmUser,NotPrmUser,
142034,27175,55119,178,0,N,1,N,N,CP_Drtn,TT_Task,DT_FixedDUR2,TK_NotStart,DES1230,Issue IFC Design Package,,6376,5320,160,0,0,0,160,0,0,0,,,,2028-01-12 08:00,2028-02-08 16:00,,2024-12-23 08:00,2025-01-17 16:00,2024-12-23 08:00,2025-01-17 16:00,2024-12-23 08:00,2025-01-17 16:00,2028-01-12 08:00,2028-02-08 16:00,,PT_Normal,,,,,0FxDp7WOzki8YAcFXeloMA,ml2cjCbUzkmO3p6BYhVBOg,,,N,0,0,,,2023-02-08 18:30,2023-02-08 18:31,NotPrmUser,NotPrmUser,
142035,27175,55121,178,0,N,1,N,N,CP_Drtn,TT_Task,DT_FixedDUR2,TK_NotStart,PRO1000,Civil BOM - Long Lead @ 30%,,680,0,120,0,0,0,120,0,0,0,,,,2025-07-07 08:00,2025-07-25 16:00,,2025-03-10 08:00,2025-03-28 16:00,2025-03-10 08:00,2025-03-28 16:00,2025-03-10 08:00,2025-03-28 16:00,2025-07-07 08:00,2025-07-25 16:00,,PT_Normal,,,,,++Ej0RO/GE2TtsXhJT1nYQ,w0XfivTSNkeEuhLzxxhelA,,,N,0,0,,,2023-02-08 18:30,2023-02-08 18:31,NotPrmUser,NotPrmUser,
142036,27175,55121,178,0,N,1,N,N,CP_Drtn,TT_Task,DT_FixedDUR2,TK_NotStart,PRO1020,Electrical BOM - Long Lead @ 60%,,920,0,120,0,0,0,120,0,0,0,,,,2025-10-27 08:00,2025-11-14 16:00,,2025-05-19 08:00,2025-06-06 16:00,2025-05-19 08:00,2025-06-06 16:00,2025-05-19 08:00,2025-06-06 16:00,2025-10-27 08:00,2025-11-14 16:00,,PT_Normal,,,,,r9neJl3V0UqQVioHTfmT4Q,6gxSSpFBf0+1+ymgwJEMbw,,,N,0,0,,,2023-02-08 18:30,2023-02-08 18:31,NotPrmUser,NotPrmUser,
142037,27175,55121,178,0,N,1,N,N,CP_Drtn,TT_Task,DT_FixedDUR2,TK_NotStart,PRO1040,BOM - Short Lead @ 60%,,600,0,120,0,0,0,120,0,0,0,,,,2025-12-29 08:00,2026-01-16 16:00,,2025-09-15 08:00,2025-10-03 16:00,2025-09-15 08:00,2025-10-03 16:00,2025-09-15 08:00,2025-10-03 16:00,2025-12-29 08:00,2026-01-16 16:00,,PT_Normal,,,,,NZU9NtDpHU66rGCTlOo94A,KfL7X5BcL0603hEIvVT0iw,,,N,0,0,,,2023-02-08 18:30,2023-02-08 18:31,NotPrmUser,NotPrmUser,
142038,27175,55122,178,0,N,1,N,N,CP_Drtn,TT_Task,DT_FixedDUR2,TK_NotStart,PER1000,CalTrans Permit,,0,0,2000,0,0,0,2000,0,0,0,,,,2025-03-10 08:00,2026-02-20 16:00,,2025-03-10 08:00,2026-02-20 16:00,2025-03-10 08:00,2026-02-20 16:00,2025-03-10 08:00,2026-02-20 16:00,2025-03-10 08:00,2026-02-20 16:00,,PT_Normal,,,,,VAHF7zV9kUy0tMLvbq1pSg,Kmy9rKpM1kWLqxTm6RaFkg,,,Y,0,0,,,2023-02-08 18:30,2023-02-08 18:31,NotPrmUser,NotPrmUser,
142039,27175,55122,178,0,N,1,N,N,CP_Drtn,TT_Task,DT_FixedDUR2,TK_NotStart,PER1010,City & County Permits,,1200,1200,800,0,0,0,800,0,0,0,,,,2025-10-06 08:00,2026-02-20 16:00,,2025-03-10 08:00,2025-07-25 16:00,2025-03-10 08:00,2025-07-25 16:00,2025-03-10 08:00,2025-07-25 16:00,2025-10-06 08:00,2026-02-20 16:00,,PT_Normal,,,,,CKvyPWr80kawO2vowkavZw,HEEHfOPiCEeDqZxjEql/gg,,,N,0,0,,,2023-02-08 18:30,2023-02-08 18:31,NotPrmUser,NotPrmUser,
142040,27175,55122,178,0,N,1,N,N,CP_Drtn,TT_Task,DT_FixedDUR2,TK_NotStart,PER1020,Other Permit (TBD),,1200,1200,800,0,0,0,800,0,0,0,,,,2025-10-06 08:00,2026-02-20 16:00,,2025-03-10 08:00,2025-07-25 16:00,2025-03-10 08:00,2025-07-25 16:00,2025-03-10 08:00,2025-07-25 16:00,2025-10-06 08:00,2026-02-20 16:00,,PT_Normal,,,,,T3GNK+pQWEen0Kgot8h1Zw,AT6d5ojXaUC9c/e85f4TYA,,,N,0,0,,,2023-02-08 18:30,2023-02-08 18:31,NotPrmUser,NotPrmUser,
142041,27175,55123,178,0,N,1,N,N,CP_Drtn,TT_Task,DT_FixedDUR2,TK_NotStart,PUB1000,Public Affairs / Community Outreach,,6216,6216,800,0,0,0,800,0,0,0,,,,2028-06-07 08:00,2028-10-24 16:00,,2025-06-16 08:00,2025-10-31 16:00,2025-06-16 08:00,2025-10-31 16:00,2025-06-16 08:00,2025-10-31 16:00,2028-06-07 08:00,2028-10-24 16:00,,PT_Normal,,,,,VVJguiRpBk+JZZSZzqCtvw,fdRfhs844k+PSRq0uH6S9w,,,N,0,0,,,2023-02-08 18:30,2023-02-08 18:31,NotPrmUser,NotPrmUser,
142042,27175,55124,178,0,N,1,N,N,CP_Drtn,TT_Task,DT_FixedDUR2,TK_NotStart,LAN1000,Land Rights and Easement Acquisition,,880,880,1200,0,0,0,1200,0,0,0,,,,2025-07-28 08:00,2026-02-20 16:00,,2025-02-24 08:00,2025-09-19 16:00,2025-02-24 08:00,2025-09-19 16:00,2025-02-24 08:00,2025-09-19 16:00,2025-07-28 08:00,2026-02-20 16:00,,PT_Normal,,,,,DCbiklIRCkqDCv/28024Tg,aRuHopQ/XEOUBa7DXRhC4w,,,N,0,0,,,2023-02-08 18:30,2023-02-08 18:31,NotPrmUser,NotPrmUser,
142043,27175,55124,178,0,N,1,N,N,CP_Drtn,TT_Task,DT_FixedDUR2,TK_NotStart,LAN1010,Tribal Land Rights,,880,880,1200,0,0,0,1200,0,0,0,,,,2025-07-28 08:00,2026-02-20 16:00,,2025-02-24 08:00,2025-09-19 16:00,2025-02-24 08:00,2025-09-19 16:00,2025-02-24 08:00,2025-09-19 16:00,2025-07-28 08:00,2026-02-20 16:00,,PT_Normal,,,,,M3I8jYGJDUi93G5E69SXFA,R9/13YumhkGCKvX1pbZ6QA,,,N,0,0,,,2023-02-08 18:30,2023-02-08 18:31,NotPrmUser,NotPrmUser,
142044,27175,55124,178,0,N,1,N,N,CP_Drtn,TT_Task,DT_FixedDUR2,TK_NotStart,LAN1020,Laydown Yards,,880,880,1200,0,0,0,1200,0,0,0,,,,2025-07-28 08:00,2026-02-20 16:00,,2025-02-24 08:00,2025-09-19 16:00,2025-02-24 08:00,2025-09-19 16:00,2025-02-24 08:00,2025-09-19 16:00,2025-07-28 08:00,2026-02-20 16:00,,PT_Normal,,,,,QCCPCFIaWkK+dZkZyzrwtQ,KQh+KED9U0C1zzBs7+hGtw,,,N,0,0,,,2023-02-08 18:30,2023-02-08 18:31,NotPrmUser,NotPrmUser,
142045,27175,55125,178,0,N,1,N,N,CP_Drtn,TT_Task,DT_FixedDUR2,TK_NotStart,ENV1000,10% Environmental Submittal,,880,0,200,0,0,0,200,0,0,0,,,,2025-04-14 08:00,2025-05-16 16:00,,2024-11-11 08:00,2024-12-13 16:00,2024-11-11 08:00,2024-12-13 16:00,2024-11-11 08:00,2024-12-13 16:00,2025-04-14 08:00,2025-05-16 16:00,,PT_Normal,,,,,67ueSy148Eerxcp2A0E0BQ,o96oYqOONkWgQHvxbPzYkQ,,,N,0,0,,,2023-02-08 18:30,2023-02-08 18:31,NotPrmUser,NotPrmUser,
142046,27175,55125,178,0,N,1,N,N,CP_Drtn,TT_Task,DT_FixedDUR2,TK_NotStart,ENV1010,10% Environmental Review,,880,0,120,0,0,0,120,0,0,0,,,,2025-05-19 08:00,2025-06-06 16:00,,2024-12-16 08:00,2025-01-03 16:00,2024-12-16 08:00,2025-01-03 16:00,2024-12-16 08:00,2025-01-03 16:00,2025-05-19 08:00,2025-06-06 16:00,,PT_Normal,,,,,/031/qQn3kuuWNh9/3l+Og,CTb3h1ji2EuyibQG20/wfw,,,N,0,0,,,2023-02-08 18:30,2023-02-08 18:31,NotPrmUser,NotPrmUser,
142047,27175,55125,178,0,N,1,N,N,CP_Drtn,TT_Task,DT_FixedDUR2,TK_NotStart,ENV1020,30% Environmental Submittal,,840,0,200,0,0,0,200,0,0,0,,,,2025-09-29 08:00,2025-10-31 16:00,,2025-05-05 08:00,2025-06-06 16:00,2025-05-05 08:00,2025-06-06 16:00,2025-05-05 08:00,2025-06-06 16:00,2025-09-29 08:00,2025-10-31 16:00,,PT_Normal,,,,,f5K1N2SQUkeAspWalx/vNA,SNKFZVVXLEWdJldCoZRTIg,,,N,0,0,,,2023-02-08 18:30,2023-02-08 18:31,NotPrmUser,NotPrmUser,
142048,27175,55125,178,0,N,1,N,N,CP_Drtn,TT_Task,DT_FixedDUR2,TK_NotStart,ENV1030,30% Environmental Review,,840,0,120,0,0,0,120,0,0,0,,,,2025-11-03 08:00,2025-11-21 16:00,,2025-06-09 08:00,2025-06-27 16:00,2025-06-09 08:00,2025-06-27 16:00,2025-06-09 08:00,2025-06-27 16:00,2025-11-03 08:00,2025-11-21 16:00,,PT_Normal,,,,,AaT//5zbR0e5lZL1Ub4O8Q,UhVRD3ATnkWCTMlOzCQMmg,,,N,0,0,,,2023-02-08 18:30,2023-02-08 18:31,NotPrmUser,NotPrmUser,
142049,27175,55125,178,0,N,1,N,N,CP_Drtn,TT_Task,DT_FixedDUR2,TK_NotStart,ENV1040,60% Environmental Submittal,,840,0,280,0,0,0,280,0,0,0,,,,2025-11-24 08:00,2026-01-09 16:00,,2025-06-30 08:00,2025-08-15 16:00,2025-06-30 08:00,2025-08-15 16:00,2025-06-30 08:00,2025-08-15 16:00,2025-11-24 08:00,2026-01-09 16:00,,PT_Normal,,,,,taIE0hCnXEqUBCwk3NOdQg,Yo0/RpPeNUuFRxGlV/1Pgg,,,N,0,0,,,2023-02-08 18:30,2023-02-08 18:31,NotPrmUser,NotPrmUser,
142050,27175,55125,178,0,N,1,N,N,CP_Drtn,TT_Task,DT_FixedDUR2,TK_NotStart,ENV1050,60% Environmental Release,,960,960,120,0,0,0,120,0,0,0,,,,2026-02-02 08:00,2026-02-20 16:00,,2025-08-18 08:00,2025-09-05 16:00,2025-08-18 08:00,2025-09-05 16:00,2025-08-18 08:00,2025-09-05 16:00,2026-02-02 08:00,2026-02-20 16:00,,PT_Normal,,,,,GwB7hFMysUmMDqNY9tu2Gw,pGoeHhLA40iqYG0S0p7VvQ,,,N,0,0,,,2023-02-08 18:30,2023-02-08 18:31,NotPrmUser,NotPrmUser,
142051,27175,55125,178,0,N,1,N,N,CP_Drtn,TT_Task,DT_FixedDUR2,TK_NotStart,ENV1060,BIA NEPA Submittal,,840,0,80,0,0,0,80,0,0,0,,,,2026-01-12 08:00,2026-01-23 16:00,,2025-08-18 08:00,2025-08-29 16:00,2025-08-18 08:00,2025-08-29 16:00,2025-08-18 08:00,2025-08-29 16:00,2026-01-12 08:00,2026-01-23 16:00,,PT_Normal,,,,,OWhLALL5bUuXOjJ9T50GPw,zkCAho/K5k2pTtShz68wWg,,,N,0,0,,,2023-02-08 18:30,2023-02-08 18:31,NotPrmUser,NotPrmUser,
142052,27175,55125,178,0,N,1,N,N,CP_Drtn,TT_Task,DT_FixedDUR2,TK_NotStart,ENV1070,"BIA Received (Add 250 days, if needed)",,840,840,160,0,0,0,160,0,0,0,,,,2026-01-26 08:00,2026-02-20 16:00,,2025-09-01 08:00,2025-09-26 16:00,2025-09-01 08:00,2025-09-26 16:00,2025-09-01 08:00,2025-09-26 16:00,2026-01-26 08:00,2026-02-20 16:00,,PT_Normal,,,,,Qj5br4uFU0iShnrsWnakdA,HQAMfDGFb0uJFITjMet6PQ,,,N,0,0,,,2023-02-08 18:30,2023-02-08 18:31,NotPrmUser,NotPrmUser,
142053,27175,55115,178,0,N,1,N,N,CP_Drtn,TT_Task,DT_FixedDUR2,TK_NotStart,DES1010,Seismic / Geotech Submittal,,880,0,200,0,0,0,200,0,0,0,,,,2025-06-09 08:00,2025-07-11 16:00,,2025-01-06 08:00,2025-02-07 16:00,2025-01-06 08:00,2025-02-07 16:00,2025-01-06 08:00,2025-02-07 16:00,2025-06-09 08:00,2025-07-11 16:00,,PT_Normal,,,,,/6dTUp762EWifYH8q9hISw,GjefKfLP5E+njr7v34Vr/A,,,N,0,0,,,2023-02-08 18:30,2023-02-08 18:31,NotPrmUser,NotPrmUser,
142054,27175,55115,178,0,N,1,N,N,CP_Drtn,TT_Task,DT_FixedDUR2,TK_NotStart,DES1020,Potholing Submittal,,880,40,200,0,0,0,200,0,0,0,,,,2025-07-14 08:00,2025-08-15 16:00,,2025-02-10 08:00,2025-03-14 16:00,2025-02-10 08:00,2025-03-14 16:00,2025-02-10 08:00,2025-03-14 16:00,2025-07-14 08:00,2025-08-15 16:00,,PT_Normal,,,,,TbDidv8RE0O0aq8G15LlSw,LU3ggCbU1k+ebLHolrSO8Q,,,N,0,0,,,2023-02-08 18:30,2023-02-08 18:31,NotPrmUser,NotPrmUser,
142055,27175,55115,178,0,N,1,N,N,CP_Drtn,TT_Task,DT_FixedDUR2,TK_NotStart,DES1030,Potholing Release /Perform Potholing,,840,0,240,0,0,0,240,0,0,0,,,,2025-08-18 08:00,2025-09-26 16:00,,2025-03-24 08:00,2025-05-02 16:00,2025-03-24 08:00,2025-05-02 16:00,2025-03-24 08:00,2025-05-02 16:00,2025-08-18 08:00,2025-09-26 16:00,,PT_Normal,,,,,dyayLiioV0afMd1NRXdUJg,FpAQEsiZu0OjbtCZDp3cFA,,,N,0,0,,,2023-02-08 18:30,2023-02-08 18:31,NotPrmUser,NotPrmUser,
142056,27175,55127,178,0,N,1,N,N,CP_Drtn,TT_Task,DT_FixedDUR2,TK_NotStart,PCON100,Initiate Performance Partnering Process @ 60%,,1000,0,40,0,0,0,40,0,0,0,,,,2025-12-22 08:00,2025-12-26 16:00,,2025-06-30 08:00,2025-07-04 16:00,2025-06-30 08:00,2025-07-04 16:00,2025-06-30 08:00,2025-07-04 16:00,2025-12-22 08:00,2025-12-26 16:00,,PT_Normal,,,,,rUcStvgQ+0KmfDd19cOEdw,6JpmfwCqFUGX3uj8qnNWiQ,,,N,0,0,,,2023-02-08 18:30,2023-02-08 18:31,NotPrmUser,NotPrmUser,
142057,27175,55127,178,0,N,1,N,N,CP_Drtn,TT_Task,DT_FixedDUR2,TK_NotStart,PCON110,Receive Estimate from Contractor,,1000,0,120,0,0,0,120,0,0,0,,,,2025-12-29 08:00,2026-01-16 16:00,,2025-07-07 08:00,2025-07-25 16:00,2025-07-07 08:00,2025-07-25 16:00,2025-07-07 08:00,2025-07-25 16:00,2025-12-29 08:00,2026-01-16 16:00,,PT_Normal,,,,,vjfLyCW3O06r6fvSr6dv/A,IFuQhUIAlUWxJgcZwpn3GQ,,,N,0,0,,,2023-02-08 18:30,2023-02-08 18:31,NotPrmUser,NotPrmUser,
142058,27175,55127,178,0,N,1,N,N,CP_Drtn,TT_Task,DT_FixedDUR2,TK_NotStart,PCON120,Bid Estimate Negotiations,,1000,0,80,0,0,0,80,0,0,0,,,,2026-01-19 08:00,2026-01-30 16:00,,2025-07-28 08:00,2025-08-08 16:00,2025-07-28 08:00,2025-08-08 16:00,2025-07-28 08:00,2025-08-08 16:00,2026-01-19 08:00,2026-01-30 16:00,,PT_Normal,,,,,OSeR7hKFmUGoSR6PexZCLg,XWdGtdWFEU2L05j61jpPEg,,,N,0,0,,,2023-02-08 18:30,2023-02-08 18:31,NotPrmUser,NotPrmUser,
142059,27175,55127,178,0,N,1,N,N,CP_Drtn,TT_Task,DT_FixedDUR2,TK_NotStart,PCON130,Revise Estimate based on IFC,,1000,0,40,0,0,0,40,0,0,0,,,,2026-02-02 08:00,2026-02-06 16:00,,2025-08-11 08:00,2025-08-15 16:00,2025-08-11 08:00,2025-08-15 16:00,2025-08-11 08:00,2025-08-15 16:00,2026-02-02 08:00,2026-02-06 16:00,,PT_Normal,,,,,+qCfNqyQeE2Xv9bUX9Vx0A,gkFy+3qy30GYVmIpbjrr9g,,,N,0,0,,,2023-02-08 18:30,2023-02-08 18:31,NotPrmUser,NotPrmUser,
142060,27175,55127,178,0,N,1,N,N,CP_Drtn,TT_Task,DT_FixedDUR2,TK_NotStart,PCON140,Issue Release,,1000,1000,80,0,0,0,80,0,0,0,,,,2026-02-09 08:00,2026-02-20 16:00,,2025-08-18 08:00,2025-08-29 16:00,2025-08-18 08:00,2025-08-29 16:00,2025-08-18 08:00,2025-08-29 16:00,2026-02-09 08:00,2026-02-20 16:00,,PT_Normal,,,,,WJJf14U/2k2Felwn/0jp+g,e8Wilk1AZ0SFUE6yolIakw,,,N,0,0,,,2023-02-08 18:30,2023-02-08 18:31,NotPrmUser,NotPrmUser,
142061,27175,55129,178,0,N,1,N,N,CP_Drtn,TT_Task,DT_FixedDUR2,TK_NotStart,PCON200,Civil Pre-Construction Meeting (Civil Construction Ready),,0,0,40,0,0,0,40,0,0,0,,,,2026-02-23 08:00,2026-02-27 16:00,,2026-02-23 08:00,2026-02-27 16:00,2026-02-23 08:00,2026-02-27 16:00,2026-02-23 08:00,2026-02-27 16:00,2026-02-23 08:00,2026-02-27 16:00,,PT_Normal,,,,,3zMP2EfmFkm3sPYz8ipXcA,pLP2otHrj0uSUUuWpMonLQ,,,Y,0,0,,,2023-02-08 18:30,2023-02-08 18:31,NotPrmUser,NotPrmUser,
142062,27175,55129,178,0,N,1,N,N,CP_Drtn,TT_Task,DT_FixedDUR2,TK_NotStart,PCON210,Electrical - Pre-Construction Meeting (Electical Construction Ready),,240,0,40,0,0,0,40,0,0,0,,,,2026-04-06 08:00,2026-04-10 16:00,,2026-02-23 08:00,2026-02-27 16:00,2026-02-23 08:00,2026-02-27 16:00,2026-02-23 08:00,2026-02-27 16:00,2026-04-06 08:00,2026-04-10 16:00,,PT_Normal,,,,,+Dj9u9rc6k+VghOoVs+CWQ,0rJMHWrpXkWxMvhBW/e0Ow,,,N,0,0,,,2023-02-08 18:30,2023-02-08 18:31,NotPrmUser,NotPrmUser,
142063,27175,55128,178,0,N,1,N,N,CP_Drtn,TT_Task,DT_FixedDUR2,TK_NotStart,PCON150,Initiate Performance Partnering Process @ 60%,,1480,0,40,0,0,0,40,0,0,0,,,,2026-02-02 08:00,2026-02-06 16:00,,2025-05-19 08:00,2025-05-23 16:00,2025-05-19 08:00,2025-05-23 16:00,2025-05-19 08:00,2025-05-23 16:00,2026-02-02 08:00,2026-02-06 16:00,,PT_Normal,,,,,8yH3EEYQnU2MBqL3Yt73GQ,hNsXhnVxokCWwqDw5os2UA,,,N,0,0,,,2023-02-08 18:30,2023-02-08 18:31,NotPrmUser,NotPrmUser,
142064,27175,55128,178,0,N,1,N,N,CP_Drtn,TT_Task,DT_FixedDUR2,TK_NotStart,PCON160,Receive Estimate from Contractor,,1480,0,120,0,0,0,120,0,0,0,,,,2026-02-09 08:00,2026-02-27 16:00,,2025-05-26 08:00,2025-06-13 16:00,2025-05-26 08:00,2025-06-13 16:00,2025-05-26 08:00,2025-06-13 16:00,2026-02-09 08:00,2026-02-27 16:00,,PT_Normal,,,,,u/dnIb08xUqDvn0q2JoPjQ,oQNpoQQXokqyKDJH3CGXig,,,N,0,0,,,2023-02-08 18:30,2023-02-08 18:31,NotPrmUser,NotPrmUser,
142065,27175,55128,178,0,N,1,N,N,CP_Drtn,TT_Task,DT_FixedDUR2,TK_NotStart,PCON170,Bid Estimate Negotiations,,1480,0,80,0,0,0,80,0,0,0,,,,2026-03-02 08:00,2026-03-13 16:00,,2025-06-16 08:00,2025-06-27 16:00,2025-06-16 08:00,2025-06-27 16:00,2025-06-16 08:00,2025-06-27 16:00,2026-03-02 08:00,2026-03-13 16:00,,PT_Normal,,,,,V4DClQhFh0+PvmcquXyyLw,gi+6HN325kWDgvX5QDD+zA,,,N,0,0,,,2023-02-08 18:30,2023-02-08 18:31,NotPrmUser,NotPrmUser,
142066,27175,55128,178,0,N,1,N,N,CP_Drtn,TT_Task,DT_FixedDUR2,TK_NotStart,PCON180,Revise Estimate based on IFC,,1480,0,40,0,0,0,40,0,0,0,,,,2026-03-16 08:00,2026-03-20 16:00,,2025-06-30 08:00,2025-07-04 16:00,2025-06-30 08:00,2025-07-04 16:00,2025-06-30 08:00,2025-07-04 16:00,2026-03-16 08:00,2026-03-20 16:00,,PT_Normal,,,,,DSAEe+k0FEuLiseLIR4VkQ,xfWTH2rITk6MYsLc0grlTg,,,N,0,0,,,2023-02-08 18:30,2023-02-08 18:31,NotPrmUser,NotPrmUser,
142067,27175,55128,178,0,N,1,N,N,CP_Drtn,TT_Task,DT_FixedDUR2,TK_NotStart,PCON190,Issue Release,,1480,1240,80,0,0,0,80,0,0,0,,,,2026-03-23 08:00,2026-04-03 16:00,,2025-07-07 08:00,2025-07-18 16:00,2025-07-07 08:00,2025-07-18 16:00,2025-07-07 08:00,2025-07-18 16:00,2026-03-23 08:00,2026-04-03 16:00,,PT_Normal,,,,,cbzGaEyBuE+imee8Z8sdIQ,LUcON66IHkmQcPYjxWlibw,,,N,0,0,,,2023-02-08 18:30,2023-02-08 18:31,NotPrmUser,NotPrmUser,
142068,27175,55121,178,0,N,1,N,N,CP_Drtn,TT_Task,DT_FixedDUR2,TK_NotStart,PRO1010,Order Long Lead Civil Material,,680,680,1200,0,0,0,1200,0,0,0,,,,2025-07-28 08:00,2026-02-20 16:00,,2025-03-31 08:00,2025-10-24 16:00,2025-03-31 08:00,2025-10-24 16:00,2025-03-31 08:00,2025-10-24 16:00,2025-07-28 08:00,2026-02-20 16:00,,PT_Normal,,,,,r8j/WLzyDUOszHrNvd282w,yx1MY/0hckGfHopKHhJiqQ,,,N,0,0,,,2023-02-08 18:30,2023-02-08 18:31,NotPrmUser,NotPrmUser,
142069,27175,55121,178,0,N,1,N,N,CP_Drtn,TT_Task,DT_FixedDUR2,TK_NotStart,PRO1050,Order Short Lead Materials,,600,600,200,0,0,0,200,0,0,0,,,,2026-01-19 08:00,2026-02-20 16:00,,2025-10-06 08:00,2025-11-07 16:00,2025-10-06 08:00,2025-11-07 16:00,2025-10-06 08:00,2025-11-07 16:00,2026-01-19 08:00,2026-02-20 16:00,,PT_Normal,,,,,1AmCfz6nB0ewduMgVph5nA,x4cz9zOYnkCU+093q0MViA,,,N,0,0,,,2023-02-08 18:30,2023-02-08 18:31,NotPrmUser,NotPrmUser,
142070,27175,55121,178,0,N,1,N,N,CP_Drtn,TT_Task,DT_FixedDUR2,TK_NotStart,PRO1030,Order Long Lead Electrical Materials,,920,680,800,0,0,0,800,0,0,0,,,,2025-11-17 08:00,2026-04-03 16:00,,2025-06-09 08:00,2025-10-24 16:00,2025-06-09 08:00,2025-10-24 16:00,2025-06-09 08:00,2025-10-24 16:00,2025-11-17 08:00,2026-04-03 16:00,,PT_Normal,,,,,D/BrZ3GrykCal4odudzAtg,dnkTKY2O2Ui7ti9G3gUSsA,,,N,0,0,,,2023-02-08 18:30,2023-02-08 18:31,NotPrmUser,NotPrmUser,
142071,27175,55131,178,0,N,1,N,N,CP_Drtn,TT_Task,DT_FixedDUR2,TK_NotStart,CON2000,Civil Construction (Trenching 300 feet/day),7730,0,0,3520,0,14248,14248,3520,0,0,0,,,,2026-03-02 08:00,2027-11-05 16:00,,2026-03-02 08:00,2027-11-05 16:00,2026-03-02 08:00,2027-11-05 16:00,2026-03-02 08:00,2027-11-05 16:00,2026-03-02 08:00,2027-11-05 16:00,,PT_Normal,,,,,an/vquVX/kSbN34Or+Z08g,m4l8MIPvfE6DaNnYitqgcQ,,,Y,0,0,,,2023-02-08 18:30,2023-02-08 18:38,NotPrmUser,NotPrmUser,
142072,27175,55132,178,0,N,1,N,N,CP_Drtn,TT_Task,DT_FixedDUR2,TK_NotStart,CON3000,Electrical Construction,7786,0,0,3280,0,1640,1640,3280,0,0,0,,,,2026-04-13 08:00,2027-11-05 16:00,,2026-04-13 08:00,2027-11-05 16:00,2026-04-13 08:00,2027-11-05 16:00,2026-04-13 08:00,2027-11-05 16:00,2026-04-13 08:00,2027-11-05 16:00,,PT_Normal,,,,,Myvy+QIJDUOrplQLeLmAAA,oCpEbHj1D0qhm+XC3BNb/g,,,Y,0,0,,,2023-02-08 18:30,2023-02-08 19:36,NotPrmUser,NotPrmUser,
142073,27175,55133,178,0,N,1,N,N,CP_Drtn,TT_Task,DT_FixedDUR2,TK_NotStart,CON4000,Service Cutover,,1056,0,2920,0,0,0,2920,0,0,0,,,,2026-12-16 08:00,2028-05-09 16:00,,2026-06-15 08:00,2027-11-05 16:00,2026-06-15 08:00,2027-11-05 16:00,2026-06-15 08:00,2027-11-05 16:00,2026-12-16 08:00,2028-05-09 16:00,,PT_Normal,,,,,gKcDtjojfk2K4QepaofrkQ,zpkzlleEtUeIGi1vrLATyg,,,N,0,0,,,2023-02-08 18:30,2023-02-08 18:31,NotPrmUser,NotPrmUser,
142074,27175,55134,178,0,N,1,N,N,CP_Drtn,TT_Task,DT_FixedDUR2,TK_NotStart,CON5000,Scada Construction,,1056,0,520,0,0,0,520,0,0,0,,,,2028-02-09 08:00,2028-05-09 16:00,,2027-08-09 08:00,2027-11-05 16:00,2027-08-09 08:00,2027-11-05 16:00,2027-08-09 08:00,2027-11-05 16:00,2028-02-09 08:00,2028-05-09 16:00,,PT_Normal,,,,,t3CGDV12Q0aAdA1YHZY/Bw,SdrGUf4QYkuje0YSHUGfHg,,,N,0,0,,,2023-02-08 18:30,2023-02-08 18:31,NotPrmUser,NotPrmUser,
142075,27175,55135,178,0,N,1,N,N,CP_Drtn,TT_Task,DT_FixedDUR2,TK_NotStart,CON6000,Substation Construction,,1056,0,520,0,0,0,520,0,0,0,,,,2028-02-09 08:00,2028-05-09 16:00,,2027-08-09 08:00,2027-11-05 16:00,2027-08-09 08:00,2027-11-05 16:00,2027-08-09 08:00,2027-11-05 16:00,2028-02-09 08:00,2028-05-09 16:00,,PT_Normal,,,,,juf8SMy7UEiBzmew8b50Kg,nmZ1dSG+M0i68wkgzyWg1Q,,,N,0,0,,,2023-02-08 18:30,2023-02-08 18:31,NotPrmUser,NotPrmUser,
142076,27175,55136,178,0,N,1,N,N,CP_Drtn,TT_Task,DT_FixedDrtn,TK_NotStart,CON7000,Overhead RFS (1000 feet per day),7785,0,0,1056,0,1056,1056,1056,0,0,0,,,,2027-11-08 08:00,2028-05-09 16:00,,2027-11-08 08:00,2028-05-09 16:00,2027-11-08 08:00,2028-05-09 16:00,2027-11-08 08:00,2028-05-09 16:00,2027-11-08 08:00,2028-05-09 16:00,,PT_Normal,,,,,QGTsN24/70yBMm0Qb2pz4Q,t3wZsVqImEGUEQKWVg6g+A,,,Y,0,0,,,2023-02-08 18:30,2023-02-08 18:31,NotPrmUser,NotPrmUser,
142077,27175,55130,178,0,N,1,N,N,CP_Drtn,TT_Task,DT_FixedDUR2,TK_NotStart,ISD1000,ISD - Energize - Put in service,,2008,2008,8,0,0,0,8,25,0,25,,,,2028-10-24 08:00,2028-10-24 16:00,,2027-11-08 08:00,2027-11-08 16:00,2027-11-08 08:00,2027-11-08 16:00,2027-11-08 08:00,2027-11-08 16:00,2028-10-24 08:00,2028-10-24 16:00,,PT_Normal,,,,,rIt1fJBFQka0814Fu4SNtg,3vT4cjWh8EWmxvDDhdjmvg,,,N,0,0,,,2023-02-08 18:30,2023-02-08 18:31,NotPrmUser,NotPrmUser,
142078,27175,55113,178,0,N,1,N,N,CP_Drtn,TT_Task,DT_FixedDUR2,TK_NotStart,SUR1000,Survey and LiDAR,7385,0,0,400,0,9182,9182,400,0,0,0,,,,2024-09-02 08:00,2024-11-08 16:00,,2024-09-02 08:00,2024-11-08 16:00,2024-09-02 08:00,2024-11-08 16:00,2024-09-02 08:00,2024-11-08 16:00,2024-09-02 08:00,2024-11-08 16:00,,PT_Normal,,,,,KUuF5UU8PkC31F5MCc/DnA,xRPKiqqdm0mVAbbi1CUIgA,,,Y,0,0,,,2023-02-08 18:30,2023-02-08 18:31,NotPrmUser,NotPrmUser,
142079,27175,55118,178,0,N,1,N,N,CP_Drtn,TT_Task,DT_FixedDUR2,TK_NotStart,DES1200,Receive Services Worksheet and Cable Info from Design Firms,,760,0,160,0,0,0,160,0,0,0,,,,2025-05-26 08:00,2025-06-20 16:00,,2025-01-13 08:00,2025-02-07 16:00,2025-01-13 08:00,2025-02-07 16:00,2025-01-13 08:00,2025-02-07 16:00,2025-05-26 08:00,2025-06-20 16:00,,PT_Normal,,,,,iB9YBPPLOkemDndyynBCFw,tf00hzlRNEutTZ3lMk4d/w,,,N,0,0,,,2023-02-08 18:30,2023-02-08 18:31,NotPrmUser,NotPrmUser,
142080,27175,55118,178,0,N,1,N,N,CP_Drtn,TT_Task,DT_FixedDUR2,TK_NotStart,DES1210,Issue to Trench Inspectors,,2376,1320,80,0,0,0,80,0,0,0,,,,2026-12-02 08:00,2026-12-15 16:00,,2025-10-13 08:00,2025-10-24 16:00,2025-10-13 08:00,2025-10-24 16:00,2025-10-13 08:00,2025-10-24 16:00,2026-12-02 08:00,2026-12-15 16:00,,PT_Normal,,,,,VNV4cKNz4E6rHogz1NHDuw,9ZnYqwrd8kSJMEqHl1d2Fg,,,N,0,0,,,2023-02-08 18:30,2023-02-08 18:31,NotPrmUser,NotPrmUser,
142081,27175,55130,178,0,N,1,N,N,CP_Drtn,TT_FinMile,DT_FixedDrtn,TK_NotStart,CON1020,Construction Complete,,0,0,0,0,0,0,0,0,0,0,,,,2028-05-09 16:00,2028-05-09 16:00,,2028-05-09 16:00,2028-05-09 16:00,2028-05-09 16:00,2028-05-09 16:00,2028-05-09 16:00,2028-05-09 16:00,2028-05-09 16:00,2028-05-09 16:00,,PT_Normal,,,,,DQBNAy4c10qRtQdjPobDzA,ghx3ziW+/EKc1kJIu0zeIg,,,Y,0,0,,,2023-02-08 18:30,2023-02-08 18:31,NotPrmUser,NotPrmUser,
142082,27175,55130,178,0,N,1,N,N,CP_Drtn,TT_Mile,DT_FixedDrtn,TK_NotStart,CON1010,Construction Start,,5536,5536,0,0,0,0,0,0,0,0,,,,2028-10-24 16:00,2028-10-24 16:00,,2026-03-02 08:00,2026-03-02 08:00,2026-03-02 08:00,2026-03-02 08:00,2026-03-02 08:00,2026-03-02 08:00,2028-10-24 16:00,2028-10-24 16:00,,PT_Normal,,,,,9XASulLTAEusn5p3HZLZrw,uqP2cKOYH0acNkbf0P1z/A,,,N,0,0,,,2023-02-08 18:30,2023-02-08 18:31,NotPrmUser,NotPrmUser,
142083,27175,55139,178,0,N,1,N,N,CP_Drtn,TT_Task,DT_FixedDUR2,TK_NotStart,CLO1020,GIS/As-Built and Records Complete,,480,480,480,0,0,0,480,0,0,0,,,,2028-08-02 08:00,2028-10-24 16:00,,2028-05-10 08:00,2028-08-01 16:00,2028-05-10 08:00,2028-08-01 16:00,2028-05-10 08:00,2028-08-01 16:00,2028-08-02 08:00,2028-10-24 16:00,,PT_Normal,,,,,xGA7ivWi30K8zjr+4LqAFQ,P83DR3MywUabGc+gwge/ag,,,N,0,0,,,2023-02-08 18:30,2023-02-08 18:31,NotPrmUser,NotPrmUser,
142084,27175,55140,178,0,N,1,N,N,CP_Drtn,TT_Task,DT_FixedDUR2,TK_NotStart,CLO1030,"PO's complete, Work Order Reconcilled and Closed",,0,0,960,0,0,0,960,0,0,0,,,,2028-05-10 08:00,2028-10-24 16:00,,2028-05-10 08:00,2028-10-24 16:00,2028-05-10 08:00,2028-10-24 16:00,2028-05-10 08:00,2028-10-24 16:00,2028-05-10 08:00,2028-10-24 16:00,,PT_Normal,,,,,2nFjNXm53kaI3JtjXdUKNw,W+iWHRtu2kqkA2GR14/sJg,,,Y,0,0,,,2023-02-08 18:30,2023-02-08 18:31,NotPrmUser,NotPrmUser,
142085,27175,55138,178,0,N,1,N,N,CP_Drtn,TT_FinMile,DT_FixedDrtn,TK_NotStart,CLO1010,Project Complete,,0,0,0,0,0,0,0,0,0,0,,,,2028-10-24 16:00,2028-10-24 16:00,,2028-10-24 16:00,2028-10-24 16:00,2028-10-24 16:00,2028-10-24 16:00,2028-10-24 16:00,2028-10-24 16:00,2028-10-24 16:00,2028-10-24 16:00,,PT_Normal,,,,,90soT54g/ECpr0j1eDrK5A,HJ5qou914UGYQBcdpRwJSA,,,Y,0,0,,,2023-02-08 18:30,2023-02-08 18:31,NotPrmUser,NotPrmUser,
142086,27175,55114,178,0,N,1,N,N,CP_Drtn,TT_LOE,DT_FixedDUR2,TK_NotStart,DES1000,Design Summary,7257,4096,0,2680,0,16233,16233,2680,0,0,0,,,,2024-11-11 08:00,2028-02-08 16:00,,2024-11-11 08:00,2026-02-20 16:00,2024-11-11 08:00,2026-02-20 16:00,2024-11-11 08:00,2026-02-20 16:00,2024-11-11 08:00,2028-02-08 16:00,,PT_Normal,,,,,IQszE0Q+0UGJAwFrOdV/XQ,rKacKtATc02QJYCBcwamhQ,,,Y,0,0,,,2023-02-08 18:30,2023-02-08 18:31,NotPrmUser,NotPrmUser,
142087,27175,55130,178,0,N,1,N,N,CP_Drtn,TT_LOE,DT_FixedDUR2,TK_NotStart,CON1000,Construction Summary,7385,0,0,4576,0,9972,9972,4576,25,0,25,,,,2028-05-09 16:00,2028-05-09 16:00,,2026-03-02 08:00,2028-05-09 16:00,2026-03-02 08:00,2028-05-09 16:00,2026-03-02 08:00,2028-05-09 16:00,2028-05-09 16:00,2028-05-09 16:00,,PT_Normal,,,,,X84n9zvUjkCsWerlgB2gKQ,Vx3q4ks7eEOvoT3q95LINQ,,,N,0,0,,,2023-02-08 18:30,2023-02-08 18:31,NotPrmUser,NotPrmUser,
142088,27175,55138,178,0,N,1,N,N,CP_Drtn,TT_LOE,DT_FixedDUR2,TK_NotStart,CLO1000,Close Out Summary,7385,0,0,960,0,4482,4482,960,0,0,0,,,,2028-05-10 08:00,2028-10-24 16:00,,2028-05-10 08:00,2028-10-24 16:00,2028-05-10 08:00,2028-10-24 16:00,2028-05-10 08:00,2028-10-24 16:00,2028-05-10 08:00,2028-10-24 16:00,,PT_Normal,,,,,sY/XWm5EOk674cgxAFp0rw,IAdBXvAsHEWZKFZGHJhPIw,,,Y,0,0,,,2023-02-08 18:30,2023-02-08 18:31,NotPrmUser,NotPrmUser,
142089,27175,55111,178,0,N,1,N,N,CP_Drtn,TT_LOE,DT_FixedDUR2,TK_NotStart,PCON1000,Pre-Construction Summary,,0,0,3296,0,0,0,3296,0,0,0,,,,2024-08-01 08:00,2026-02-27 16:00,,2024-08-01 08:00,2026-02-27 16:00,2024-08-01 08:00,2026-02-27 16:00,2024-08-01 08:00,2026-02-27 16:00,2024-08-01 08:00,2026-02-27 16:00,,PT_Normal,,,,,HixZcTglb0iuye04csd4hQ,taBRgGm+uEuckFbreZ2osw,,,Y,0,0,,,2023-02-08 18:30,2023-02-08 18:31,NotPrmUser,NotPrmUser,
142090,27176,55142,178,0,N,1,N,N,CP_Drtn,TT_Task,DT_FixedDUR2,TK_NotStart,SCO1000,Bundling / Phasing of circuits for project sequencing,,0,0,80,0,0,0,80,0,0,0,2024-09-02 00:00,,,2024-09-02 08:00,2024-09-13 16:00,,2024-09-02 08:00,2024-09-13 16:00,2024-09-02 08:00,2024-09-13 16:00,2024-09-02 08:00,2024-09-13 16:00,2024-09-02 08:00,2024-09-13 16:00,CS_MSOA,PT_Normal,,,,,Ji60s5LrcEqd2CwRvdPw1g,Gn6PgrNcek6fYdUETS331w,,,Y,0,0,,,2023-02-08 18:30,2023-02-08 18:31,NotPrmUser,NotPrmUser,
142091,27176,55142,178,0,N,1,N,N,CP_Drtn,TT_Task,DT_FixedDUR2,TK_NotStart,SCO1010,Constructability Review,,0,0,40,0,0,0,40,0,0,0,,,,2024-09-16 08:00,2024-09-20 16:00,,2024-09-16 08:00,2024-09-20 16:00,2024-09-16 08:00,2024-09-20 16:00,2024-09-16 08:00,2024-09-20 16:00,2024-09-16 08:00,2024-09-20 16:00,,PT_Normal,,,,,6mDmZXLRakesnOo7Qam9Bg,ULlrR/QLQkiE0vPYDw2snA,,,Y,0,0,,,2023-02-08 18:30,2023-02-08 18:31,NotPrmUser,NotPrmUser,
142092,27176,55142,178,0,N,1,N,N,CP_Drtn,TT_Task,DT_FixedDUR2,TK_NotStart,SCO1020,SDG&E Review,,0,0,16,0,0,0,16,0,0,0,,,,2024-09-23 08:00,2024-09-24 16:00,,2024-09-23 08:00,2024-09-24 16:00,2024-09-23 08:00,2024-09-24 16:00,2024-09-23 08:00,2024-09-24 16:00,2024-09-23 08:00,2024-09-24 16:00,,PT_Normal,,,,,0/Y2Q4QyP0WBKys8JqU/GQ,H7I3HRvHwkyJ4r9m3AFKaw,,,Y,0,0,,,2023-02-08 18:30,2023-02-08 18:31,NotPrmUser,NotPrmUser,
142093,27176,55143,178,0,N,1,N,N,CP_Drtn,TT_Task,DT_FixedDUR2,TK_NotStart,PLA1000,Workorder Setup,,0,0,40,0,0,0,40,0,0,0,,,,2024-09-25 08:00,2024-10-01 16:00,,2024-09-25 08:00,2024-10-01 16:00,2024-09-25 08:00,2024-10-01 16:00,2024-09-25 08:00,2024-10-01 16:00,2024-09-25 08:00,2024-10-01 16:00,,PT_Normal,,,,,HxLSP/gYEke7EtzsCanOKg,C+VoPPeas0C5VcPSnoUEQw,,,Y,0,0,,,2023-02-08 18:30,2023-02-08 18:31,NotPrmUser,NotPrmUser,
142094,27176,55146,178,0,N,1,N,N,CP_Drtn,TT_Task,DT_FixedDUR2,TK_NotStart,DES1040,10% Submittal,,0,0,200,0,0,0,200,0,0,0,,,,2024-12-11 08:00,2025-01-14 16:00,,2024-12-11 08:00,2025-01-14 16:00,2024-12-11 08:00,2025-01-14 16:00,2024-12-11 08:00,2025-01-14 16:00,2024-12-11 08:00,2025-01-14 16:00,,PT_Normal,,,,,NQ5QB9VDm0Oq87SW44ZdGw,w861ym4VZEecOocOtg21rw,,,Y,0,0,,,2023-02-08 18:30,2023-02-08 18:31,NotPrmUser,NotPrmUser,
142095,27176,55146,178,0,N,1,N,N,CP_Drtn,TT_Task,DT_FixedDUR2,TK_NotStart,DES1050,30% Submittal,,0,0,400,0,0,0,400,0,0,0,,,,2025-01-15 08:00,2025-03-25 16:00,,2025-01-15 08:00,2025-03-25 16:00,2025-01-15 08:00,2025-03-25 16:00,2025-01-15 08:00,2025-03-25 16:00,2025-01-15 08:00,2025-03-25 16:00,,PT_Normal,,,,,QEz5XWLkhEqm8r0tt+d10g,SPURwcUs/kGcKr7VlijgmQ,,,Y,0,0,,,2023-02-08 18:30,2023-02-08 18:31,NotPrmUser,NotPrmUser,
142096,27176,55146,178,0,N,1,N,N,CP_Drtn,TT_Task,DT_FixedDUR2,TK_NotStart,DES1060,30% Review,,0,0,80,0,0,0,80,0,0,0,,,,2025-03-26 08:00,2025-04-08 16:00,,2025-03-26 08:00,2025-04-08 16:00,2025-03-26 08:00,2025-04-08 16:00,2025-03-26 08:00,2025-04-08 16:00,2025-03-26 08:00,2025-04-08 16:00,,PT_Normal,,,,,Tycoi8yUYESKXBLpEVNYNQ,WyTO0LXnEEGaW2xXoWZ+4A,,,Y,0,0,,,2023-02-08 18:30,2023-02-08 18:31,NotPrmUser,NotPrmUser,
142097,27176,55146,178,0,N,1,N,N,CP_Drtn,TT_Task,DT_FixedDUR2,TK_NotStart,DES1070,60% Submittal,,600,0,560,0,0,0,560,0,0,0,,,,2025-07-23 08:00,2025-10-28 16:00,,2025-04-09 08:00,2025-07-15 16:00,2025-04-09 08:00,2025-07-15 16:00,2025-04-09 08:00,2025-07-15 16:00,2025-07-23 08:00,2025-10-28 16:00,,PT_Normal,,,,,mivQgH1V5ke4xYkajfwBSw,cFLzDqkH2UC5T+1Rayk4Wg,,,N,0,0,,,2023-02-08 18:30,2023-02-08 18:31,NotPrmUser,NotPrmUser,
142098,27176,55146,178,0,N,1,N,N,CP_Drtn,TT_Task,DT_FixedDUR2,TK_NotStart,DES1080,60% Review,,600,0,80,0,0,0,80,0,0,0,,,,2025-10-29 08:00,2025-11-11 16:00,,2025-07-16 08:00,2025-07-29 16:00,2025-07-16 08:00,2025-07-29 16:00,2025-07-16 08:00,2025-07-29 16:00,2025-10-29 08:00,2025-11-11 16:00,,PT_Normal,,,,,mK5u8jJyfUCCbFDzLcnliw,Lcr8WE+440uxs6jHnMY/iA,,,N,0,0,,,2023-02-08 18:30,2023-02-08 18:31,NotPrmUser,NotPrmUser,
142099,27176,55146,178,0,N,1,N,N,CP_Drtn,TT_Task,DT_FixedDUR2,TK_NotStart,DES1090,90% Submittal,,600,0,360,0,0,0,360,0,0,0,,,,2025-11-12 08:00,2026-01-13 16:00,,2025-07-30 08:00,2025-09-30 16:00,2025-07-30 08:00,2025-09-30 16:00,2025-07-30 08:00,2025-09-30 16:00,2025-11-12 08:00,2026-01-13 16:00,,PT_Normal,,,,,3xBIr5r/EkCNhWZYH6mDug,wROqlfG71Uie/yrQuf59vw,,,N,0,0,,,2023-02-08 18:30,2023-02-08 18:31,NotPrmUser,NotPrmUser,
142100,27176,55146,178,0,N,1,N,N,CP_Drtn,TT_Task,DT_FixedDUR2,TK_NotStart,DES1100,90% Review,,600,0,80,0,0,0,80,0,0,0,,,,2026-01-14 08:00,2026-01-27 16:00,,2025-10-01 08:00,2025-10-14 16:00,2025-10-01 08:00,2025-10-14 16:00,2025-10-01 08:00,2025-10-14 16:00,2026-01-14 08:00,2026-01-27 16:00,,PT_Normal,,,,,+UzPAZaUh06Lqc21HFHXFA,/ObJtQGu7Ui8Spq9+dI4Lw,,,N,0,0,,,2023-02-08 18:30,2023-02-08 18:31,NotPrmUser,NotPrmUser,
142101,27176,55146,178,0,N,1,N,N,CP_Drtn,TT_Task,DT_FixedDUR2,TK_NotStart,DES1110,100% Submittal,,680,0,160,0,0,0,160,0,0,0,,,,2026-02-11 08:00,2026-03-10 16:00,,2025-10-15 08:00,2025-11-11 16:00,2025-10-15 08:00,2025-11-11 16:00,2025-10-15 08:00,2025-11-11 16:00,2026-02-11 08:00,2026-03-10 16:00,,PT_Normal,,,,,lS0QXhsVf0CrNKxZy13Bsg,QMFfR9bj4UuyOdpTGqzzbg,,,N,0,0,,,2023-02-08 18:30,2023-02-08 18:31,NotPrmUser,NotPrmUser,
142102,27176,55146,178,0,N,1,N,N,CP_Drtn,TT_Task,DT_FixedDUR2,TK_NotStart,DES1120,Issue IFC Design Package,,0,0,80,0,0,0,80,0,0,0,,,,2026-03-11 08:00,2026-03-24 16:00,,2026-03-11 08:00,2026-03-24 16:00,2026-03-11 08:00,2026-03-24 16:00,2026-03-11 08:00,2026-03-24 16:00,2026-03-11 08:00,2026-03-24 16:00,,PT_Normal,,,,,0SVcpAt+9UCSYY1EkJCunQ,jowCX9xq1Eu9yXexFAYOFg,,,Y,0,0,,,2023-02-08 18:30,2023-02-08 18:31,NotPrmUser,NotPrmUser,
142103,27176,55147,178,0,N,1,N,N,CP_Drtn,TT_Task,DT_FixedDUR2,TK_NotStart,DES1130,60% Submittal,,840,0,480,0,0,0,480,0,0,0,,,,2025-08-06 08:00,2025-10-28 16:00,,2025-03-12 08:00,2025-06-03 16:00,2025-03-12 08:00,2025-06-03 16:00,2025-03-12 08:00,2025-06-03 16:00,2025-08-06 08:00,2025-10-28 16:00,,PT_Normal,,,,,mMV5p/TmwU+yn40tl4vvtQ,QvheIXVajkix5HnlkumW+w,,,N,0,0,,,2023-02-08 18:30,2023-02-08 18:31,NotPrmUser,NotPrmUser,
142104,27176,55147,178,0,N,1,N,N,CP_Drtn,TT_Task,DT_FixedDUR2,TK_NotStart,DES1140,60% Review,,920,0,80,0,0,0,80,0,0,0,,,,2025-11-12 08:00,2025-11-25 16:00,,2025-06-04 08:00,2025-06-17 16:00,2025-06-04 08:00,2025-06-17 16:00,2025-06-04 08:00,2025-06-17 16:00,2025-11-12 08:00,2025-11-25 16:00,,PT_Normal,,,,,5Jj2i4HAkk+GdAwntyGOZw,pLMxtvucOUG8q/aD3/CjDg,,,N,0,0,,,2023-02-08 18:30,2023-02-08 18:31,NotPrmUser,NotPrmUser,
142105,27176,55147,178,0,N,1,N,N,CP_Drtn,TT_Task,DT_FixedDUR2,TK_NotStart,DES1150,90% Submittal,,1120,0,400,0,0,0,400,0,0,0,,,,2025-12-31 08:00,2026-03-10 16:00,,2025-06-18 08:00,2025-08-26 16:00,2025-06-18 08:00,2025-08-26 16:00,2025-06-18 08:00,2025-08-26 16:00,2025-12-31 08:00,2026-03-10 16:00,,PT_Normal,,,,,LSoIZoaXaU6Rq0ig8YXTRw,CUIUtYRSH0y6mtRqcTv6cg,,,N,0,0,,,2023-02-08 18:30,2023-02-08 18:31,NotPrmUser,NotPrmUser,
142106,27176,55147,178,0,N,1,N,N,CP_Drtn,TT_Task,DT_FixedDUR2,TK_NotStart,DES1160,90% Review,,1120,0,80,0,0,0,80,0,0,0,,,,2026-03-11 08:00,2026-03-24 16:00,,2025-08-27 08:00,2025-09-09 16:00,2025-08-27 08:00,2025-09-09 16:00,2025-08-27 08:00,2025-09-09 16:00,2026-03-11 08:00,2026-03-24 16:00,,PT_Normal,,,,,O0dtCiYeME6GXDhg4wlYiw,wo0kpJiMBkmKtpVkJBZhVA,,,N,0,0,,,2023-02-08 18:30,2023-02-08 18:31,NotPrmUser,NotPrmUser,
142107,27176,55147,178,0,N,1,N,N,CP_Drtn,TT_Task,DT_FixedDUR2,TK_NotStart,DES1170,100% Submittal,,1120,880,160,0,0,0,160,0,0,0,,,,2026-03-25 08:00,2026-04-21 16:00,,2025-09-10 08:00,2025-10-07 16:00,2025-09-10 08:00,2025-10-07 16:00,2025-09-10 08:00,2025-10-07 16:00,2026-03-25 08:00,2026-04-21 16:00,,PT_Normal,,,,,isJoUy1NwEO2ixKEsoGj4g,cwvOKXsLIE2jYVuhdNt37g,,,N,0,0,,,2023-02-08 18:30,2023-02-08 18:31,NotPrmUser,NotPrmUser,
142108,27176,55147,178,0,N,1,N,N,CP_Drtn,TT_Task,DT_FixedDUR2,TK_NotStart,DES1180,Issue IFC Design Package,,240,0,80,0,0,0,80,0,0,0,,,,2026-04-22 08:00,2026-05-05 16:00,,2026-03-11 08:00,2026-03-24 16:00,2026-03-11 08:00,2026-03-24 16:00,2026-03-11 08:00,2026-03-24 16:00,2026-04-22 08:00,2026-05-05 16:00,,PT_Normal,,,,,HynAflLoTkePaUnjRkmu2g,FpGgJYWKS0iKiC67CjgA3Q,,,N,0,0,,,2023-02-08 18:30,2023-02-08 18:31,NotPrmUser,NotPrmUser,
142109,27176,55148,178,0,N,1,N,N,CP_Drtn,TT_Task,DT_FixedDUR2,TK_NotStart,DES1190,Issue Services Worksheet to Design Firms,,760,0,160,0,0,0,160,0,0,0,,,,2025-05-28 08:00,2025-06-24 16:00,,2025-01-15 08:00,2025-02-11 16:00,2025-01-15 08:00,2025-02-11 16:00,2025-01-15 08:00,2025-02-11 16:00,2025-05-28 08:00,2025-06-24 16:00,,PT_Normal,,,,,ScXiYam9p0yU49uUbpwQ2A,4uK0aqJbkESFXZNynL9y+g,,,N,0,0,,,2023-02-08 18:30,2023-02-08 18:31,NotPrmUser,NotPrmUser,
142110,27176,55149,178,0,N,1,N,N,CP_Drtn,TT_Task,DT_FixedDUR2,TK_NotStart,DES1220,SED Design,,6376,0,240,0,0,0,240,0,0,0,,,,2027-12-31 08:00,2028-02-10 16:00,,2024-12-11 08:00,2025-01-21 16:00,2024-12-11 08:00,2025-01-21 16:00,2024-12-11 08:00,2025-01-21 16:00,2027-12-31 08:00,2028-02-10 16:00,,PT_Normal,,,,,o4w+VWftZUOWAqmlAUuSzA,2fzmqK4YDUmlBCHmdTuwow,,,N,0,0,,,2023-02-08 18:30,2023-02-08 18:31,NotPrmUser,NotPrmUser,
142111,27176,55149,178,0,N,1,N,N,CP_Drtn,TT_Task,DT_FixedDUR2,TK_NotStart,DES1230,Issue IFC Design Package,,6376,5320,160,0,0,0,160,0,0,0,,,,2028-02-11 08:00,2028-03-09 16:00,,2025-01-22 08:00,2025-02-18 16:00,2025-01-22 08:00,2025-02-18 16:00,2025-01-22 08:00,2025-02-18 16:00,2028-02-11 08:00,2028-03-09 16:00,,PT_Normal,,,,,bo4C+BRLrU2yHIKfJdReXg,HpiupadhFkWVDeYf96Y9pg,,,N,0,0,,,2023-02-08 18:30,2023-02-08 18:31,NotPrmUser,NotPrmUser,
142112,27176,55151,178,0,N,1,N,N,CP_Drtn,TT_Task,DT_FixedDUR2,TK_NotStart,PRO1000,Civil BOM - Long Lead @ 30%,,680,0,120,0,0,0,120,0,0,0,,,,2025-08-06 08:00,2025-08-26 16:00,,2025-04-09 08:00,2025-04-29 16:00,2025-04-09 08:00,2025-04-29 16:00,2025-04-09 08:00,2025-04-29 16:00,2025-08-06 08:00,2025-08-26 16:00,,PT_Normal,,,,,HSLYicxRkUa91X3LM4q7kw,vlPO3TGOSU2ArgrBJZL8mQ,,,N,0,0,,,2023-02-08 18:30,2023-02-08 18:31,NotPrmUser,NotPrmUser,
142113,27176,55151,178,0,N,1,N,N,CP_Drtn,TT_Task,DT_FixedDUR2,TK_NotStart,PRO1020,Electrical BOM - Long Lead @ 60%,,920,0,120,0,0,0,120,0,0,0,,,,2025-11-26 08:00,2025-12-16 16:00,,2025-06-18 08:00,2025-07-08 16:00,2025-06-18 08:00,2025-07-08 16:00,2025-06-18 08:00,2025-07-08 16:00,2025-11-26 08:00,2025-12-16 16:00,,PT_Normal,,,,,s3dyu+drdkqKioC3g7zTaA,/W9K2s900kiVq63UqOU90w,,,N,0,0,,,2023-02-08 18:30,2023-02-08 18:31,NotPrmUser,NotPrmUser,
142114,27176,55151,178,0,N,1,N,N,CP_Drtn,TT_Task,DT_FixedDUR2,TK_NotStart,PRO1040,BOM - Short Lead @ 60%,,600,0,120,0,0,0,120,0,0,0,,,,2026-01-28 08:00,2026-02-17 16:00,,2025-10-15 08:00,2025-11-04 16:00,2025-10-15 08:00,2025-11-04 16:00,2025-10-15 08:00,2025-11-04 16:00,2026-01-28 08:00,2026-02-17 16:00,,PT_Normal,,,,,q7HmNAtLiU68YnImFFh09Q,VT63aHPqh06cuqNSDdoCHw,,,N,0,0,,,2023-02-08 18:30,2023-02-08 18:31,NotPrmUser,NotPrmUser,
142115,27176,55152,178,0,N,1,N,N,CP_Drtn,TT_Task,DT_FixedDUR2,TK_NotStart,PER1000,CalTrans Permit,,0,0,2000,0,0,0,2000,0,0,0,,,,2025-04-09 08:00,2026-03-24 16:00,,2025-04-09 08:00,2026-03-24 16:00,2025-04-09 08:00,2026-03-24 16:00,2025-04-09 08:00,2026-03-24 16:00,2025-04-09 08:00,2026-03-24 16:00,,PT_Normal,,,,,m1s2oVrw50mnd4mBC/UKDQ,GYvHaIah40SHrJxTimSn9Q,,,Y,0,0,,,2023-02-08 18:30,2023-02-08 18:31,NotPrmUser,NotPrmUser,
142116,27176,55152,178,0,N,1,N,N,CP_Drtn,TT_Task,DT_FixedDUR2,TK_NotStart,PER1010,City & County Permits,,1200,1200,800,0,0,0,800,0,0,0,,,,2025-11-05 08:00,2026-03-24 16:00,,2025-04-09 08:00,2025-08-26 16:00,2025-04-09 08:00,2025-08-26 16:00,2025-04-09 08:00,2025-08-26 16:00,2025-11-05 08:00,2026-03-24 16:00,,PT_Normal,,,,,AxdK9nzuhES2pnWsVcpElg,5Ufv//5Lu0e56p8HSSWzqw,,,N,0,0,,,2023-02-08 18:30,2023-02-08 18:31,NotPrmUser,NotPrmUser,
142117,27176,55152,178,0,N,1,N,N,CP_Drtn,TT_Task,DT_FixedDUR2,TK_NotStart,PER1020,Other Permit (TBD),,1200,1200,800,0,0,0,800,0,0,0,,,,2025-11-05 08:00,2026-03-24 16:00,,2025-04-09 08:00,2025-08-26 16:00,2025-04-09 08:00,2025-08-26 16:00,2025-04-09 08:00,2025-08-26 16:00,2025-11-05 08:00,2026-03-24 16:00,,PT_Normal,,,,,8Q5HAnL63kmDKaKxdNV8ww,rNQghy4BpUmEu1SBGC2s3g,,,N,0,0,,,2023-02-08 18:30,2023-02-08 18:31,NotPrmUser,NotPrmUser,
142118,27176,55153,178,0,N,1,N,N,CP_Drtn,TT_Task,DT_FixedDUR2,TK_NotStart,PUB1000,Public Affairs / Community Outreach,,6216,6216,800,0,0,0,800,0,0,0,,,,2028-07-07 08:00,2028-11-23 16:00,,2025-07-16 08:00,2025-12-02 16:00,2025-07-16 08:00,2025-12-02 16:00,2025-07-16 08:00,2025-12-02 16:00,2028-07-07 08:00,2028-11-23 16:00,,PT_Normal,,,,,qsxoXSBYdkWUJufFdBYqmg,7cXMQiW8/EGFDfyE1V5imQ,,,N,0,0,,,2023-02-08 18:30,2023-02-08 18:31,NotPrmUser,NotPrmUser,
142119,27176,55154,178,0,N,1,N,N,CP_Drtn,TT_Task,DT_FixedDUR2,TK_NotStart,LAN1000,Land Rights and Easement Acquisition,,880,880,1200,0,0,0,1200,0,0,0,,,,2025-08-27 08:00,2026-03-24 16:00,,2025-03-26 08:00,2025-10-21 16:00,2025-03-26 08:00,2025-10-21 16:00,2025-03-26 08:00,2025-10-21 16:00,2025-08-27 08:00,2026-03-24 16:00,,PT_Normal,,,,,WKsk1x7450yVL8vivJZkpw,StakMSG3BEmdJHkGNTyflw,,,N,0,0,,,2023-02-08 18:30,2023-02-08 18:31,NotPrmUser,NotPrmUser,
142120,27176,55154,178,0,N,1,N,N,CP_Drtn,TT_Task,DT_FixedDUR2,TK_NotStart,LAN1010,Tribal Land Rights,,880,880,1200,0,0,0,1200,0,0,0,,,,2025-08-27 08:00,2026-03-24 16:00,,2025-03-26 08:00,2025-10-21 16:00,2025-03-26 08:00,2025-10-21 16:00,2025-03-26 08:00,2025-10-21 16:00,2025-08-27 08:00,2026-03-24 16:00,,PT_Normal,,,,,o+MiYn9w+UuYRiLd4RS3+w,wMf4O9aNGkmfsdpcnar0SQ,,,N,0,0,,,2023-02-08 18:30,2023-02-08 18:31,NotPrmUser,NotPrmUser,
142121,27176,55154,178,0,N,1,N,N,CP_Drtn,TT_Task,DT_FixedDUR2,TK_NotStart,LAN1020,Laydown Yards,,880,880,1200,0,0,0,1200,0,0,0,,,,2025-08-27 08:00,2026-03-24 16:00,,2025-03-26 08:00,2025-10-21 16:00,2025-03-26 08:00,2025-10-21 16:00,2025-03-26 08:00,2025-10-21 16:00,2025-08-27 08:00,2026-03-24 16:00,,PT_Normal,,,,,XLSH8UztW068rqSF1Fig1A,69RZp2BxS0KQNmrxX1U2+Q,,,N,0,0,,,2023-02-08 18:30,2023-02-08 18:31,NotPrmUser,NotPrmUser,
142122,27176,55155,178,0,N,1,N,N,CP_Drtn,TT_Task,DT_FixedDUR2,TK_NotStart,ENV1000,10% Environmental Submittal,,880,0,200,0,0,0,200,0,0,0,,,,2025-05-14 08:00,2025-06-17 16:00,,2024-12-11 08:00,2025-01-14 16:00,2024-12-11 08:00,2025-01-14 16:00,2024-12-11 08:00,2025-01-14 16:00,2025-05-14 08:00,2025-06-17 16:00,,PT_Normal,,,,,XliRie7X8EqR08O01WveOQ,nbn74k8kgUq7dVyt34cH6Q,,,N,0,0,,,2023-02-08 18:30,2023-02-08 18:31,NotPrmUser,NotPrmUser,
142123,27176,55155,178,0,N,1,N,N,CP_Drtn,TT_Task,DT_FixedDUR2,TK_NotStart,ENV1010,10% Environmental Review,,880,0,120,0,0,0,120,0,0,0,,,,2025-06-18 08:00,2025-07-08 16:00,,2025-01-15 08:00,2025-02-04 16:00,2025-01-15 08:00,2025-02-04 16:00,2025-01-15 08:00,2025-02-04 16:00,2025-06-18 08:00,2025-07-08 16:00,,PT_Normal,,,,,Sn9i4qgGTE+jCLL4Orjsbw,tP+wVetFXUGvgLJoGJ1v+g,,,N,0,0,,,2023-02-08 18:30,2023-02-08 18:31,NotPrmUser,NotPrmUser,
142124,27176,55155,178,0,N,1,N,N,CP_Drtn,TT_Task,DT_FixedDUR2,TK_NotStart,ENV1020,30% Environmental Submittal,,840,0,200,0,0,0,200,0,0,0,,,,2025-10-29 08:00,2025-12-02 16:00,,2025-06-04 08:00,2025-07-08 16:00,2025-06-04 08:00,2025-07-08 16:00,2025-06-04 08:00,2025-07-08 16:00,2025-10-29 08:00,2025-12-02 16:00,,PT_Normal,,,,,J74MGVZ7wk23NRVW4Qqnbg,YL+8lLIASk2w95asF2Q7IA,,,N,0,0,,,2023-02-08 18:30,2023-02-08 18:31,NotPrmUser,NotPrmUser,
142125,27176,55155,178,0,N,1,N,N,CP_Drtn,TT_Task,DT_FixedDUR2,TK_NotStart,ENV1030,30% Environmental Review,,840,0,120,0,0,0,120,0,0,0,,,,2025-12-03 08:00,2025-12-23 16:00,,2025-07-09 08:00,2025-07-29 16:00,2025-07-09 08:00,2025-07-29 16:00,2025-07-09 08:00,2025-07-29 16:00,2025-12-03 08:00,2025-12-23 16:00,,PT_Normal,,,,,iVJ8PDG3zECFLl+NbGtcTw,2hy9TByerkK02E4y5O25Ww,,,N,0,0,,,2023-02-08 18:30,2023-02-08 18:31,NotPrmUser,NotPrmUser,
142126,27176,55155,178,0,N,1,N,N,CP_Drtn,TT_Task,DT_FixedDUR2,TK_NotStart,ENV1040,60% Environmental Submittal,,840,0,280,0,0,0,280,0,0,0,,,,2025-12-24 08:00,2026-02-10 16:00,,2025-07-30 08:00,2025-09-16 16:00,2025-07-30 08:00,2025-09-16 16:00,2025-07-30 08:00,2025-09-16 16:00,2025-12-24 08:00,2026-02-10 16:00,,PT_Normal,,,,,EQ29VlM+1EqNtDRqxhhwLg,cGS6HIJlR0i05s7cDImH6Q,,,N,0,0,,,2023-02-08 18:30,2023-02-08 18:31,NotPrmUser,NotPrmUser,
142127,27176,55155,178,0,N,1,N,N,CP_Drtn,TT_Task,DT_FixedDUR2,TK_NotStart,ENV1050,60% Environmental Release,,960,960,120,0,0,0,120,0,0,0,,,,2026-03-04 08:00,2026-03-24 16:00,,2025-09-17 08:00,2025-10-07 16:00,2025-09-17 08:00,2025-10-07 16:00,2025-09-17 08:00,2025-10-07 16:00,2026-03-04 08:00,2026-03-24 16:00,,PT_Normal,,,,,fhr2T2NYpEC+zcdaRn++Eg,8TrCmFdqVk6VH/9X479c3A,,,N,0,0,,,2023-02-08 18:30,2023-02-08 18:31,NotPrmUser,NotPrmUser,
142128,27176,55155,178,0,N,1,N,N,CP_Drtn,TT_Task,DT_FixedDUR2,TK_NotStart,ENV1060,BIA NEPA Submittal,,840,0,80,0,0,0,80,0,0,0,,,,2026-02-11 08:00,2026-02-24 16:00,,2025-09-17 08:00,2025-09-30 16:00,2025-09-17 08:00,2025-09-30 16:00,2025-09-17 08:00,2025-09-30 16:00,2026-02-11 08:00,2026-02-24 16:00,,PT_Normal,,,,,CAToo8857UmFh3l0Z8Qbkw,ZcuAXK0XrU6g0NV+Y5RMRw,,,N,0,0,,,2023-02-08 18:30,2023-02-08 18:31,NotPrmUser,NotPrmUser,
142129,27176,55155,178,0,N,1,N,N,CP_Drtn,TT_Task,DT_FixedDUR2,TK_NotStart,ENV1070,"BIA Received (Add 250 days, if needed)",,840,840,160,0,0,0,160,0,0,0,,,,2026-02-25 08:00,2026-03-24 16:00,,2025-10-01 08:00,2025-10-28 16:00,2025-10-01 08:00,2025-10-28 16:00,2025-10-01 08:00,2025-10-28 16:00,2026-02-25 08:00,2026-03-24 16:00,,PT_Normal,,,,,sKDmI/yL0EG6sZ2RfzxGlA,A7+kI/tiskKOXPsjgFEWGA,,,N,0,0,,,2023-02-08 18:30,2023-02-08 18:31,NotPrmUser,NotPrmUser,
142130,27176,55145,178,0,N,1,N,N,CP_Drtn,TT_Task,DT_FixedDUR2,TK_NotStart,DES1010,Seismic / Geotech Submittal,,880,0,200,0,0,0,200,0,0,0,,,,2025-07-09 08:00,2025-08-12 16:00,,2025-02-05 08:00,2025-03-11 16:00,2025-02-05 08:00,2025-03-11 16:00,2025-02-05 08:00,2025-03-11 16:00,2025-07-09 08:00,2025-08-12 16:00,,PT_Normal,,,,,Kb3Macww00SSwy4ElnzH4w,iIvF5utgW0WWXbZUm8lQGQ,,,N,0,0,,,2023-02-08 18:30,2023-02-08 18:31,NotPrmUser,NotPrmUser,
142131,27176,55145,178,0,N,1,N,N,CP_Drtn,TT_Task,DT_FixedDUR2,TK_NotStart,DES1020,Potholing Submittal,,880,40,200,0,0,0,200,0,0,0,,,,2025-08-13 08:00,2025-09-16 16:00,,2025-03-12 08:00,2025-04-15 16:00,2025-03-12 08:00,2025-04-15 16:00,2025-03-12 08:00,2025-04-15 16:00,2025-08-13 08:00,2025-09-16 16:00,,PT_Normal,,,,,lMmo0IJZCUK6ex6EhmfgXA,O+SIviWPiE+FMBKf9Nmm4A,,,N,0,0,,,2023-02-08 18:30,2023-02-08 18:31,NotPrmUser,NotPrmUser,
142132,27176,55145,178,0,N,1,N,N,CP_Drtn,TT_Task,DT_FixedDUR2,TK_NotStart,DES1030,Potholing Release /Perform Potholing,,840,0,240,0,0,0,240,0,0,0,,,,2025-09-17 08:00,2025-10-28 16:00,,2025-04-23 08:00,2025-06-03 16:00,2025-04-23 08:00,2025-06-03 16:00,2025-04-23 08:00,2025-06-03 16:00,2025-09-17 08:00,2025-10-28 16:00,,PT_Normal,,,,,X4xMn3fYdEyQOf1m5G60Sw,AGHMiCXLpEebVxYKi6ehmg,,,N,0,0,,,2023-02-08 18:30,2023-02-08 18:31,NotPrmUser,NotPrmUser,
142133,27176,55157,178,0,N,1,N,N,CP_Drtn,TT_Task,DT_FixedDUR2,TK_NotStart,PCON100,Initiate Performance Partnering Process @ 60%,,1000,0,40,0,0,0,40,0,0,0,,,,2026-01-21 08:00,2026-01-27 16:00,,2025-07-30 08:00,2025-08-05 16:00,2025-07-30 08:00,2025-08-05 16:00,2025-07-30 08:00,2025-08-05 16:00,2026-01-21 08:00,2026-01-27 16:00,,PT_Normal,,,,,75Cv8ORuuUiD6e0UNAg9DQ,8OgHxwHp8keEDTUqccj8FQ,,,N,0,0,,,2023-02-08 18:30,2023-02-08 18:31,NotPrmUser,NotPrmUser,
142134,27176,55157,178,0,N,1,N,N,CP_Drtn,TT_Task,DT_FixedDUR2,TK_NotStart,PCON110,Receive Estimate from Contractor,,1000,0,120,0,0,0,120,0,0,0,,,,2026-01-28 08:00,2026-02-17 16:00,,2025-08-06 08:00,2025-08-26 16:00,2025-08-06 08:00,2025-08-26 16:00,2025-08-06 08:00,2025-08-26 16:00,2026-01-28 08:00,2026-02-17 16:00,,PT_Normal,,,,,znAaP/I2hEKlZuwcwZcFJg,9fe7nUvdmU6cLXQk0foWZQ,,,N,0,0,,,2023-02-08 18:30,2023-02-08 18:31,NotPrmUser,NotPrmUser,
142135,27176,55157,178,0,N,1,N,N,CP_Drtn,TT_Task,DT_FixedDUR2,TK_NotStart,PCON120,Bid Estimate Negotiations,,1000,0,80,0,0,0,80,0,0,0,,,,2026-02-18 08:00,2026-03-03 16:00,,2025-08-27 08:00,2025-09-09 16:00,2025-08-27 08:00,2025-09-09 16:00,2025-08-27 08:00,2025-09-09 16:00,2026-02-18 08:00,2026-03-03 16:00,,PT_Normal,,,,,XEJ9Mss+W06hxzju6p9BPw,9l60nIZRDEOv903AAv4egQ,,,N,0,0,,,2023-02-08 18:30,2023-02-08 18:31,NotPrmUser,NotPrmUser,
142136,27176,55157,178,0,N,1,N,N,CP_Drtn,TT_Task,DT_FixedDUR2,TK_NotStart,PCON130,Revise Estimate based on IFC,,1000,0,40,0,0,0,40,0,0,0,,,,2026-03-04 08:00,2026-03-10 16:00,,2025-09-10 08:00,2025-09-16 16:00,2025-09-10 08:00,2025-09-16 16:00,2025-09-10 08:00,2025-09-16 16:00,2026-03-04 08:00,2026-03-10 16:00,,PT_Normal,,,,,yjpZQIzzjEuLnS/ppOvaiA,p14UwI00o0ur0l51G/xayQ,,,N,0,0,,,2023-02-08 18:30,2023-02-08 18:31,NotPrmUser,NotPrmUser,
142137,27176,55157,178,0,N,1,N,N,CP_Drtn,TT_Task,DT_FixedDUR2,TK_NotStart,PCON140,Issue Release,,1000,1000,80,0,0,0,80,0,0,0,,,,2026-03-11 08:00,2026-03-24 16:00,,2025-09-17 08:00,2025-09-30 16:00,2025-09-17 08:00,2025-09-30 16:00,2025-09-17 08:00,2025-09-30 16:00,2026-03-11 08:00,2026-03-24 16:00,,PT_Normal,,,,,t+1/rdSyHkmH80viP9aixA,1Lgm/7b8yESkrGBycjzYOA,,,N,0,0,,,2023-02-08 18:30,2023-02-08 18:31,NotPrmUser,NotPrmUser,
142138,27176,55159,178,0,N,1,N,N,CP_Drtn,TT_Task,DT_FixedDUR2,TK_NotStart,PCON200,Civil Pre-Construction Meeting (Civil Construction Ready),,0,0,40,0,0,0,40,0,0,0,,,,2026-03-25 08:00,2026-03-31 16:00,,2026-03-25 08:00,2026-03-31 16:00,2026-03-25 08:00,2026-03-31 16:00,2026-03-25 08:00,2026-03-31 16:00,2026-03-25 08:00,2026-03-31 16:00,,PT_Normal,,,,,O4TeHZ/kmkyI4+LMz46hHw,rcJuOyDtrU6EpufnCh3Waw,,,Y,0,0,,,2023-02-08 18:30,2023-02-08 18:31,NotPrmUser,NotPrmUser,
142139,27176,55159,178,0,N,1,N,N,CP_Drtn,TT_Task,DT_FixedDUR2,TK_NotStart,PCON210,Electrical - Pre-Construction Meeting (Electical Construction Ready),,240,0,40,0,0,0,40,0,0,0,,,,2026-05-06 08:00,2026-05-12 16:00,,2026-03-25 08:00,2026-03-31 16:00,2026-03-25 08:00,2026-03-31 16:00,2026-03-25 08:00,2026-03-31 16:00,2026-05-06 08:00,2026-05-12 16:00,,PT_Normal,,,,,yWU/W1Dq0UedY0zhltd7ZA,WaYHGK/Pt0+PH7Pwkf66Jw,,,N,0,0,,,2023-02-08 18:30,2023-02-08 18:31,NotPrmUser,NotPrmUser,
142140,27176,55158,178,0,N,1,N,N,CP_Drtn,TT_Task,DT_FixedDUR2,TK_NotStart,PCON150,Initiate Performance Partnering Process @ 60%,,1480,0,40,0,0,0,40,0,0,0,,,,2026-03-04 08:00,2026-03-10 16:00,,2025-06-18 08:00,2025-06-24 16:00,2025-06-18 08:00,2025-06-24 16:00,2025-06-18 08:00,2025-06-24 16:00,2026-03-04 08:00,2026-03-10 16:00,,PT_Normal,,,,,A0Zlgut+ZEC3+98pZHYDOg,1CYuIDtkeE+Q4uQH6anHAw,,,N,0,0,,,2023-02-08 18:30,2023-02-08 18:31,NotPrmUser,NotPrmUser,
142141,27176,55158,178,0,N,1,N,N,CP_Drtn,TT_Task,DT_FixedDUR2,TK_NotStart,PCON160,Receive Estimate from Contractor,,1480,0,120,0,0,0,120,0,0,0,,,,2026-03-11 08:00,2026-03-31 16:00,,2025-06-25 08:00,2025-07-15 16:00,2025-06-25 08:00,2025-07-15 16:00,2025-06-25 08:00,2025-07-15 16:00,2026-03-11 08:00,2026-03-31 16:00,,PT_Normal,,,,,Y9hIMIZkhUe7yq5y5hxzGg,S8PgtYQaQUOdAanilWApbA,,,N,0,0,,,2023-02-08 18:30,2023-02-08 18:31,NotPrmUser,NotPrmUser,
142142,27176,55158,178,0,N,1,N,N,CP_Drtn,TT_Task,DT_FixedDUR2,TK_NotStart,PCON170,Bid Estimate Negotiations,,1480,0,80,0,0,0,80,0,0,0,,,,2026-04-01 08:00,2026-04-14 16:00,,2025-07-16 08:00,2025-07-29 16:00,2025-07-16 08:00,2025-07-29 16:00,2025-07-16 08:00,2025-07-29 16:00,2026-04-01 08:00,2026-04-14 16:00,,PT_Normal,,,,,DwCrN0WTrEeIZwFcY+TJYA,3VRtTsmLcEiHpBlNS6fZ2Q,,,N,0,0,,,2023-02-08 18:30,2023-02-08 18:31,NotPrmUser,NotPrmUser,
142143,27176,55158,178,0,N,1,N,N,CP_Drtn,TT_Task,DT_FixedDUR2,TK_NotStart,PCON180,Revise Estimate based on IFC,,1480,0,40,0,0,0,40,0,0,0,,,,2026-04-15 08:00,2026-04-21 16:00,,2025-07-30 08:00,2025-08-05 16:00,2025-07-30 08:00,2025-08-05 16:00,2025-07-30 08:00,2025-08-05 16:00,2026-04-15 08:00,2026-04-21 16:00,,PT_Normal,,,,,tUlZCyH0/UieCRQaEiqTBQ,mopAR/jaLkK1aoaCCikd5w,,,N,0,0,,,2023-02-08 18:30,2023-02-08 18:31,NotPrmUser,NotPrmUser,
142144,27176,55158,178,0,N,1,N,N,CP_Drtn,TT_Task,DT_FixedDUR2,TK_NotStart,PCON190,Issue Release,,1480,1240,80,0,0,0,80,0,0,0,,,,2026-04-22 08:00,2026-05-05 16:00,,2025-08-06 08:00,2025-08-19 16:00,2025-08-06 08:00,2025-08-19 16:00,2025-08-06 08:00,2025-08-19 16:00,2026-04-22 08:00,2026-05-05 16:00,,PT_Normal,,,,,ynwnU+OWUUeWwMjnM+44Ag,k5T4wduAv0qC7a/bh9cA1Q,,,N,0,0,,,2023-02-08 18:30,2023-02-08 18:31,NotPrmUser,NotPrmUser,
142145,27176,55151,178,0,N,1,N,N,CP_Drtn,TT_Task,DT_FixedDUR2,TK_NotStart,PRO1010,Order Long Lead Civil Material,,680,680,1200,0,0,0,1200,0,0,0,,,,2025-08-27 08:00,2026-03-24 16:00,,2025-04-30 08:00,2025-11-25 16:00,2025-04-30 08:00,2025-11-25 16:00,2025-04-30 08:00,2025-11-25 16:00,2025-08-27 08:00,2026-03-24 16:00,,PT_Normal,,,,,xo/LnPEKdUS/NH7J+Ksn5Q,6cJ4HvA0QEidflV5Ta+gzQ,,,N,0,0,,,2023-02-08 18:30,2023-02-08 18:31,NotPrmUser,NotPrmUser,
142146,27176,55151,178,0,N,1,N,N,CP_Drtn,TT_Task,DT_FixedDUR2,TK_NotStart,PRO1050,Order Short Lead Materials,,600,600,200,0,0,0,200,0,0,0,,,,2026-02-18 08:00,2026-03-24 16:00,,2025-11-05 08:00,2025-12-09 16:00,2025-11-05 08:00,2025-12-09 16:00,2025-11-05 08:00,2025-12-09 16:00,2026-02-18 08:00,2026-03-24 16:00,,PT_Normal,,,,,I+aXidmAdkebmpamBAGUYw,fEJ5C2jahUqo0WmCKE51FA,,,N,0,0,,,2023-02-08 18:30,2023-02-08 18:31,NotPrmUser,NotPrmUser,
142147,27176,55151,178,0,N,1,N,N,CP_Drtn,TT_Task,DT_FixedDUR2,TK_NotStart,PRO1030,Order Long Lead Electrical Materials,,920,680,800,0,0,0,800,0,0,0,,,,2025-12-17 08:00,2026-05-05 16:00,,2025-07-09 08:00,2025-11-25 16:00,2025-07-09 08:00,2025-11-25 16:00,2025-07-09 08:00,2025-11-25 16:00,2025-12-17 08:00,2026-05-05 16:00,,PT_Normal,,,,,rCzgBceHJUCMtHZcOfUfDA,dshsd7YT50WClCPQlk1VkQ,,,N,0,0,,,2023-02-08 18:30,2023-02-08 18:31,NotPrmUser,NotPrmUser,
142148,27176,55161,178,0,N,1,N,N,CP_Drtn,TT_Task,DT_FixedDUR2,TK_NotStart,CON2000,Civil Construction (Trenching 300 feet/day),7730,0,0,3520,0,7208,7208,3520,0,0,0,,,,2026-04-01 08:00,2027-12-07 16:00,,2026-04-01 08:00,2027-12-07 16:00,2026-04-01 08:00,2027-12-07 16:00,2026-04-01 08:00,2027-12-07 16:00,2026-04-01 08:00,2027-12-07 16:00,,PT_Normal,,,,,6Hbrw4dfNk+kVAmpGeSGaw,hjFmLkU300KGTg4yeBRgkg,,,Y,0,0,,,2023-02-08 18:30,2023-02-08 19:18,NotPrmUser,NotPrmUser,
142149,27176,55162,178,0,N,1,N,N,CP_Drtn,TT_Task,DT_FixedDUR2,TK_NotStart,CON3000,Electrical Construction,7786,0,0,3280,0,1640,1640,3280,0,0,0,,,,2026-05-13 08:00,2027-12-07 16:00,,2026-05-13 08:00,2027-12-07 16:00,2026-05-13 08:00,2027-12-07 16:00,2026-05-13 08:00,2027-12-07 16:00,2026-05-13 08:00,2027-12-07 16:00,,PT_Normal,,,,,3z0BGIKZu0CMflOayW6vPA,7WySI+O/NEqbgBUluRPbUA,,,Y,0,0,,,2023-02-08 18:30,2023-02-08 19:37,NotPrmUser,NotPrmUser,
142150,27176,55163,178,0,N,1,N,N,CP_Drtn,TT_Task,DT_FixedDUR2,TK_NotStart,CON4000,Service Cutover,,1056,0,2920,0,0,0,2920,0,0,0,,,,2027-01-15 08:00,2028-06-08 16:00,,2026-07-15 08:00,2027-12-07 16:00,2026-07-15 08:00,2027-12-07 16:00,2026-07-15 08:00,2027-12-07 16:00,2027-01-15 08:00,2028-06-08 16:00,,PT_Normal,,,,,/5T1B3LZt0WsdFOgny+2CQ,sgJgjGNIzka56aplbmhO/Q,,,N,0,0,,,2023-02-08 18:30,2023-02-08 18:31,NotPrmUser,NotPrmUser,
142151,27176,55164,178,0,N,1,N,N,CP_Drtn,TT_Task,DT_FixedDUR2,TK_NotStart,CON5000,Scada Construction,,1056,0,520,0,0,0,520,0,0,0,,,,2028-03-10 08:00,2028-06-08 16:00,,2027-09-08 08:00,2027-12-07 16:00,2027-09-08 08:00,2027-12-07 16:00,2027-09-08 08:00,2027-12-07 16:00,2028-03-10 08:00,2028-06-08 16:00,,PT_Normal,,,,,1j9bUR4xZEq06djd2UneqA,EGKPKXmPhEqGX7/3sGGhWw,,,N,0,0,,,2023-02-08 18:30,2023-02-08 18:31,NotPrmUser,NotPrmUser,
142152,27176,55165,178,0,N,1,N,N,CP_Drtn,TT_Task,DT_FixedDUR2,TK_NotStart,CON6000,Substation Construction,,1056,0,520,0,0,0,520,0,0,0,,,,2028-03-10 08:00,2028-06-08 16:00,,2027-09-08 08:00,2027-12-07 16:00,2027-09-08 08:00,2027-12-07 16:00,2027-09-08 08:00,2027-12-07 16:00,2028-03-10 08:00,2028-06-08 16:00,,PT_Normal,,,,,cbq1ff2FH0KKGSMncMbYuw,rqXxyudovUigMECM+5dNKw,,,N,0,0,,,2023-02-08 18:30,2023-02-08 18:31,NotPrmUser,NotPrmUser,
142153,27176,55166,178,0,N,1,N,N,CP_Drtn,TT_Task,DT_FixedDrtn,TK_NotStart,CON7000,Overhead RFS (1000 feet per day),7785,0,0,1056,0,1056,1056,1056,0,0,0,,,,2027-12-08 08:00,2028-06-08 16:00,,2027-12-08 08:00,2028-06-08 16:00,2027-12-08 08:00,2028-06-08 16:00,2027-12-08 08:00,2028-06-08 16:00,2027-12-08 08:00,2028-06-08 16:00,,PT_Normal,,,,,Ui14uc52FkCX+/oypXvdDA,VwD2n+CoZk6rP5uVnbaX5Q,,,Y,0,0,,,2023-02-08 18:30,2023-02-08 18:31,NotPrmUser,NotPrmUser,
142154,27176,55160,178,0,N,1,N,N,CP_Drtn,TT_Task,DT_FixedDUR2,TK_NotStart,ISD1000,ISD - Energize - Put in service,,2008,2008,8,0,0,0,8,25,0,25,,,,2028-11-23 08:00,2028-11-23 16:00,,2027-12-08 08:00,2027-12-08 16:00,2027-12-08 08:00,2027-12-08 16:00,2027-12-08 08:00,2027-12-08 16:00,2028-11-23 08:00,2028-11-23 16:00,,PT_Normal,,,,,aLyuKX+ID0yuRpbp4SpkzA,H2vunzgNZU218x5yFwxU6w,,,N,0,0,,,2023-02-08 18:30,2023-02-08 18:31,NotPrmUser,NotPrmUser,
142155,27176,55143,178,0,N,1,N,N,CP_Drtn,TT_Task,DT_FixedDUR2,TK_NotStart,SUR1000,Survey and LiDAR,7385,0,0,400,0,9182,9182,400,0,0,0,,,,2024-10-02 08:00,2024-12-10 16:00,,2024-10-02 08:00,2024-12-10 16:00,2024-10-02 08:00,2024-12-10 16:00,2024-10-02 08:00,2024-12-10 16:00,2024-10-02 08:00,2024-12-10 16:00,,PT_Normal,,,,,vXn5YNGuHESns4f2zF2+8A,ZxQRbcUNDEmyegXYk5yTlw,,,Y,0,0,,,2023-02-08 18:30,2023-02-08 18:31,NotPrmUser,NotPrmUser,
142156,27176,55148,178,0,N,1,N,N,CP_Drtn,TT_Task,DT_FixedDUR2,TK_NotStart,DES1200,Receive Services Worksheet and Cable Info from Design Firms,,760,0,160,0,0,0,160,0,0,0,,,,2025-06-25 08:00,2025-07-22 16:00,,2025-02-12 08:00,2025-03-11 16:00,2025-02-12 08:00,2025-03-11 16:00,2025-02-12 08:00,2025-03-11 16:00,2025-06-25 08:00,2025-07-22 16:00,,PT_Normal,,,,,LF36wF7/Fk+X4eSoclbAXA,MhYZ8VoWPkuqf/2d/Lgkhg,,,N,0,0,,,2023-02-08 18:30,2023-02-08 18:31,NotPrmUser,NotPrmUser,
142157,27176,55148,178,0,N,1,N,N,CP_Drtn,TT_Task,DT_FixedDUR2,TK_NotStart,DES1210,Issue to Trench Inspectors,,2376,1320,80,0,0,0,80,0,0,0,,,,2027-01-01 08:00,2027-01-14 16:00,,2025-11-12 08:00,2025-11-25 16:00,2025-11-12 08:00,2025-11-25 16:00,2025-11-12 08:00,2025-11-25 16:00,2027-01-01 08:00,2027-01-14 16:00,,PT_Normal,,,,,uTlohAb5XEuFU+06B8jn5A,H7stHzAmvEGr0igNelvQHQ,,,N,0,0,,,2023-02-08 18:30,2023-02-08 18:31,NotPrmUser,NotPrmUser,
142158,27176,55160,178,0,N,1,N,N,CP_Drtn,TT_FinMile,DT_FixedDrtn,TK_NotStart,CON1020,Construction Complete,,0,0,0,0,0,0,0,0,0,0,,,,2028-06-08 16:00,2028-06-08 16:00,,2028-06-08 16:00,2028-06-08 16:00,2028-06-08 16:00,2028-06-08 16:00,2028-06-08 16:00,2028-06-08 16:00,2028-06-08 16:00,2028-06-08 16:00,,PT_Normal,,,,,MPA7qCjO0EmJeGJc9K+f8w,zXXqrxcBU0C+wMESQs+suw,,,Y,0,0,,,2023-02-08 18:30,2023-02-08 18:31,NotPrmUser,NotPrmUser,
142159,27176,55160,178,0,N,1,N,N,CP_Drtn,TT_Mile,DT_FixedDrtn,TK_NotStart,CON1010,Construction Start,,5536,5536,0,0,0,0,0,0,0,0,,,,2028-11-23 16:00,2028-11-23 16:00,,2026-04-01 08:00,2026-04-01 08:00,2026-04-01 08:00,2026-04-01 08:00,2026-04-01 08:00,2026-04-01 08:00,2028-11-23 16:00,2028-11-23 16:00,,PT_Normal,,,,,biwfhpSyEESdTVrfBlsmGw,17dt3jH2w0KskKh9Kxr8XA,,,N,0,0,,,2023-02-08 18:30,2023-02-08 18:31,NotPrmUser,NotPrmUser,
142160,27176,55169,178,0,N,1,N,N,CP_Drtn,TT_Task,DT_FixedDUR2,TK_NotStart,CLO1020,GIS/As-Built and Records Complete,,480,480,480,0,0,0,480,0,0,0,,,,2028-09-01 08:00,2028-11-23 16:00,,2028-06-09 08:00,2028-08-31 16:00,2028-06-09 08:00,2028-08-31 16:00,2028-06-09 08:00,2028-08-31 16:00,2028-09-01 08:00,2028-11-23 16:00,,PT_Normal,,,,,2xxt94axm0qCy6MCWwfq0g,gHyEdH27NkC+fEbnrBqtDQ,,,N,0,0,,,2023-02-08 18:30,2023-02-08 18:31,NotPrmUser,NotPrmUser,
142161,27176,55170,178,0,N,1,N,N,CP_Drtn,TT_Task,DT_FixedDUR2,TK_NotStart,CLO1030,"PO's complete, Work Order Reconcilled and Closed",,0,0,960,0,0,0,960,0,0,0,,,,2028-06-09 08:00,2028-11-23 16:00,,2028-06-09 08:00,2028-11-23 16:00,2028-06-09 08:00,2028-11-23 16:00,2028-06-09 08:00,2028-11-23 16:00,2028-06-09 08:00,2028-11-23 16:00,,PT_Normal,,,,,6HGNWASqw0GIguMlwdQO6Q,oXdn3HKt4ES9XM3kgVgO/A,,,Y,0,0,,,2023-02-08 18:30,2023-02-08 18:31,NotPrmUser,NotPrmUser,
142162,27176,55168,178,0,N,1,N,N,CP_Drtn,TT_FinMile,DT_FixedDrtn,TK_NotStart,CLO1010,Project Complete,,0,0,0,0,0,0,0,0,0,0,,,,2028-11-23 16:00,2028-11-23 16:00,,2028-11-23 16:00,2028-11-23 16:00,2028-11-23 16:00,2028-11-23 16:00,2028-11-23 16:00,2028-11-23 16:00,2028-11-23 16:00,2028-11-23 16:00,,PT_Normal,,,,,VJwTuUDldkKJ/Abx2oZWkw,WToWm3amhUin1/DFUmudqw,,,Y,0,0,,,2023-02-08 18:30,2023-02-08 18:31,NotPrmUser,NotPrmUser,
142163,27176,55144,178,0,N,1,N,N,CP_Drtn,TT_LOE,DT_FixedDUR2,TK_NotStart,DES1000,Design Summary,7257,4096,0,2680,0,16233,16233,2680,0,0,0,,,,2024-12-11 08:00,2028-03-09 16:00,,2024-12-11 08:00,2026-03-24 16:00,2024-12-11 08:00,2026-03-24 16:00,2024-12-11 08:00,2026-03-24 16:00,2024-12-11 08:00,2028-03-09 16:00,,PT_Normal,,,,,ZcYKRv5eWkqjYzch8dnkBQ,cK6t7IpCp0iFRUUJEl+bug,,,Y,0,0,,,2023-02-08 18:30,2023-02-08 18:31,NotPrmUser,NotPrmUser,
142164,27176,55160,178,0,N,1,N,N,CP_Drtn,TT_LOE,DT_FixedDUR2,TK_NotStart,CON1000,Construction Summary,7385,0,0,4576,0,9972,9972,4576,25,0,25,,,,2028-06-08 16:00,2028-06-08 16:00,,2026-04-01 08:00,2028-06-08 16:00,2026-04-01 08:00,2028-06-08 16:00,2026-04-01 08:00,2028-06-08 16:00,2028-06-08 16:00,2028-06-08 16:00,,PT_Normal,,,,,Qi65MjEZ102jOwXuqQUtOg,mDt52PETSEuFagl5Go+4xQ,,,N,0,0,,,2023-02-08 18:30,2023-02-08 18:31,NotPrmUser,NotPrmUser,
142165,27176,55168,178,0,N,1,N,N,CP_Drtn,TT_LOE,DT_FixedDUR2,TK_NotStart,CLO1000,Close Out Summary,7385,0,0,960,0,4482,4482,960,0,0,0,,,,2028-06-09 08:00,2028-11-23 16:00,,2028-06-09 08:00,2028-11-23 16:00,2028-06-09 08:00,2028-11-23 16:00,2028-06-09 08:00,2028-11-23 16:00,2028-06-09 08:00,2028-11-23 16:00,,PT_Normal,,,,,2lvYykqfKE+B4VHVD+vwOA,lGe60dPYoUG/ApwQHTFJKg,,,Y,0,0,,,2023-02-08 18:30,2023-02-08 18:31,NotPrmUser,NotPrmUser,
142166,27176,55141,178,0,N,1,N,N,CP_Drtn,TT_LOE,DT_FixedDUR2,TK_NotStart,PCON1000,Pre-Construction Summary,,0,0,3296,0,0,0,3296,0,0,0,,,,2024-09-02 08:00,2026-03-31 16:00,,2024-09-02 08:00,2026-03-31 16:00,2024-09-02 08:00,2026-03-31 16:00,2024-09-02 08:00,2026-03-31 16:00,2024-09-02 08:00,2026-03-31 16:00,,PT_Normal,,,,,UADXKGwJK0GRjc29RmXgcg,dbulZymln02kkbd2IAEUAg,,,Y,0,0,,,2023-02-08 18:30,2023-02-08 18:31,NotPrmUser,NotPrmUser,
144400,27206,55172,178,0,N,1,N,N,CP_Drtn,TT_Task,DT_FixedDUR2,TK_NotStart,SCO1000,Bundling / Phasing of circuits for project sequencing,,0,0,80,0,0,0,80,0,0,0,2024-10-01 00:00,,,2024-10-01 08:00,2024-10-14 16:00,,2024-10-01 08:00,2024-10-14 16:00,2024-10-01 08:00,2024-10-14 16:00,2024-10-01 08:00,2024-10-14 16:00,2024-10-01 08:00,2024-10-14 16:00,CS_MSOA,PT_Normal,,,,,jOEEtrZb1ECO4FHxRnXoDQ,mxjJvs4teUmW3251+5WCZQ,,,Y,0,0,,,2023-02-08 18:30,2023-02-08 18:31,NotPrmUser,NotPrmUser,
144401,27206,55172,178,0,N,1,N,N,CP_Drtn,TT_Task,DT_FixedDUR2,TK_NotStart,SCO1010,Constructability Review,,0,0,40,0,0,0,40,0,0,0,,,,2024-10-15 08:00,2024-10-21 16:00,,2024-10-15 08:00,2024-10-21 16:00,2024-10-15 08:00,2024-10-21 16:00,2024-10-15 08:00,2024-10-21 16:00,2024-10-15 08:00,2024-10-21 16:00,,PT_Normal,,,,,35sVfno5DEiEECoOEsTeiw,8nbZkF8Trkejd6JHP5El0Q,,,Y,0,0,,,2023-02-08 18:30,2023-02-08 18:31,NotPrmUser,NotPrmUser,
144402,27206,55172,178,0,N,1,N,N,CP_Drtn,TT_Task,DT_FixedDUR2,TK_NotStart,SCO1020,SDG&E Review,,0,0,16,0,0,0,16,0,0,0,,,,2024-10-22 08:00,2024-10-23 16:00,,2024-10-22 08:00,2024-10-23 16:00,2024-10-22 08:00,2024-10-23 16:00,2024-10-22 08:00,2024-10-23 16:00,2024-10-22 08:00,2024-10-23 16:00,,PT_Normal,,,,,ZsyxgS7bIEO4s6eQ1tMgQA,iK4uOolWr0SRWo6p07mkYw,,,Y,0,0,,,2023-02-08 18:30,2023-02-08 18:31,NotPrmUser,NotPrmUser,
144403,27206,55173,178,0,N,1,N,N,CP_Drtn,TT_Task,DT_FixedDUR2,TK_NotStart,PLA1000,Workorder Setup,,0,0,40,0,0,0,40,0,0,0,,,,2024-10-24 08:00,2024-10-30 16:00,,2024-10-24 08:00,2024-10-30 16:00,2024-10-24 08:00,2024-10-30 16:00,2024-10-24 08:00,2024-10-30 16:00,2024-10-24 08:00,2024-10-30 16:00,,PT_Normal,,,,,aCrkFhj51EiBNn+4gO2t+g,ZmFg4xrhwEC3beZLkFaHZQ,,,Y,0,0,,,2023-02-08 18:30,2023-02-08 18:31,NotPrmUser,NotPrmUser,
144404,27206,55176,178,0,N,1,N,N,CP_Drtn,TT_Task,DT_FixedDUR2,TK_NotStart,DES1040,10% Submittal,,0,0,160,0,0,0,160,0,0,0,,,,2025-01-09 08:00,2025-02-05 16:00,,2025-01-09 08:00,2025-02-05 16:00,2025-01-09 08:00,2025-02-05 16:00,2025-01-09 08:00,2025-02-05 16:00,2025-01-09 08:00,2025-02-05 16:00,,PT_Normal,,,,,00GbvOKAWUuV4srqk4N45g,uVFeDQKPaEKi8Js++yDxtw,,,Y,0,0,,,2023-02-08 18:30,2023-02-08 18:31,NotPrmUser,NotPrmUser,
144405,27206,55176,178,0,N,1,N,N,CP_Drtn,TT_Task,DT_FixedDUR2,TK_NotStart,DES1050,30% Submittal,,0,0,320,0,0,0,320,0,0,0,,,,2025-02-06 08:00,2025-04-02 16:00,,2025-02-06 08:00,2025-04-02 16:00,2025-02-06 08:00,2025-04-02 16:00,2025-02-06 08:00,2025-04-02 16:00,2025-02-06 08:00,2025-04-02 16:00,,PT_Normal,,,,,UlsM512pf06vExw83ZWXkQ,PYMJXfuAG02w8SB3RnBYXg,,,Y,0,0,,,2023-02-08 18:30,2023-02-08 18:31,NotPrmUser,NotPrmUser,
144406,27206,55176,178,0,N,1,N,N,CP_Drtn,TT_Task,DT_FixedDUR2,TK_NotStart,DES1060,30% Review,,0,0,80,0,0,0,80,0,0,0,,,,2025-04-03 08:00,2025-04-16 16:00,,2025-04-03 08:00,2025-04-16 16:00,2025-04-03 08:00,2025-04-16 16:00,2025-04-03 08:00,2025-04-16 16:00,2025-04-03 08:00,2025-04-16 16:00,,PT_Normal,,,,,IE4b0LyHNkaDnjPX/jZVrA,O36AvNB9pkqyZ3rd3FJf6w,,,Y,0,0,,,2023-02-08 18:30,2023-02-08 18:31,NotPrmUser,NotPrmUser,
144407,27206,55176,178,0,N,1,N,N,CP_Drtn,TT_Task,DT_FixedDUR2,TK_NotStart,DES1070,60% Submittal,,712,0,448,0,0,0,448,0,0,0,,,,2025-08-20 08:00,2025-11-05 16:00,,2025-04-17 08:00,2025-07-03 16:00,2025-04-17 08:00,2025-07-03 16:00,2025-04-17 08:00,2025-07-03 16:00,2025-08-20 08:00,2025-11-05 16:00,,PT_Normal,,,,,WzEcz5EhYUCRJOgIFcEQ6w,A52yNLrTxkCPsKxlQnW96Q,,,N,0,0,,,2023-02-08 18:30,2023-02-08 18:31,NotPrmUser,NotPrmUser,
144408,27206,55176,178,0,N,1,N,N,CP_Drtn,TT_Task,DT_FixedDUR2,TK_NotStart,DES1080,60% Review,,712,0,80,0,0,0,80,0,0,0,,,,2025-11-06 08:00,2025-11-19 16:00,,2025-07-04 08:00,2025-07-17 16:00,2025-07-04 08:00,2025-07-17 16:00,2025-07-04 08:00,2025-07-17 16:00,2025-11-06 08:00,2025-11-19 16:00,,PT_Normal,,,,,bNgpQxgY7kaXvfvMOxra0g,1QCmTSqcU0edebA9mMsvYQ,,,N,0,0,,,2023-02-08 18:30,2023-02-08 18:31,NotPrmUser,NotPrmUser,
144409,27206,55176,178,0,N,1,N,N,CP_Drtn,TT_Task,DT_FixedDUR2,TK_NotStart,DES1090,90% Submittal,,712,0,360,0,0,0,360,0,0,0,,,,2025-11-20 08:00,2026-01-21 16:00,,2025-07-18 08:00,2025-09-18 16:00,2025-07-18 08:00,2025-09-18 16:00,2025-07-18 08:00,2025-09-18 16:00,2025-11-20 08:00,2026-01-21 16:00,,PT_Normal,,,,,JvBFsrQoUUuZHFvkw0Q00A,2cygJKH6aEOR36fvudJ3Ow,,,N,0,0,,,2023-02-08 18:30,2023-02-08 18:31,NotPrmUser,NotPrmUser,
144410,27206,55176,178,0,N,1,N,N,CP_Drtn,TT_Task,DT_FixedDUR2,TK_NotStart,DES1100,90% Review,,712,0,80,0,0,0,80,0,0,0,,,,2026-01-22 08:00,2026-02-04 16:00,,2025-09-19 08:00,2025-10-02 16:00,2025-09-19 08:00,2025-10-02 16:00,2025-09-19 08:00,2025-10-02 16:00,2026-01-22 08:00,2026-02-04 16:00,,PT_Normal,,,,,dRvTvSCBx0+JjqHAuJEidA,2IVgnaSH/0K5zoZJmxS/lw,,,N,0,0,,,2023-02-08 18:30,2023-02-08 18:31,NotPrmUser,NotPrmUser,
144411,27206,55176,178,0,N,1,N,N,CP_Drtn,TT_Task,DT_FixedDUR2,TK_NotStart,DES1110,100% Submittal,,792,0,160,0,0,0,160,0,0,0,,,,2026-02-19 08:00,2026-03-18 16:00,,2025-10-03 08:00,2025-10-30 16:00,2025-10-03 08:00,2025-10-30 16:00,2025-10-03 08:00,2025-10-30 16:00,2026-02-19 08:00,2026-03-18 16:00,,PT_Normal,,,,,ipUaJ9PUckOZq6+LVId7oA,Nu9noo9M20OOGxoqeJ2/gA,,,N,0,0,,,2023-02-08 18:30,2023-02-08 18:31,NotPrmUser,NotPrmUser,
144412,27206,55176,178,0,N,1,N,N,CP_Drtn,TT_Task,DT_FixedDUR2,TK_NotStart,DES1120,Issue IFC Design Package,,0,0,80,0,0,0,80,0,0,0,,,,2026-03-19 08:00,2026-04-01 16:00,,2026-03-19 08:00,2026-04-01 16:00,2026-03-19 08:00,2026-04-01 16:00,2026-03-19 08:00,2026-04-01 16:00,2026-03-19 08:00,2026-04-01 16:00,,PT_Normal,,,,,QJrb7lZB9U6z+98gLVJonw,D3P28bzGCEq9e3UWdsOaJQ,,,Y,0,0,,,2023-02-08 18:30,2023-02-08 18:31,NotPrmUser,NotPrmUser,
144413,27206,55177,178,0,N,1,N,N,CP_Drtn,TT_Task,DT_FixedDUR2,TK_NotStart,DES1130,60% Submittal,,840,0,400,0,0,0,400,0,0,0,,,,2025-08-28 08:00,2025-11-05 16:00,,2025-04-03 08:00,2025-06-11 16:00,2025-04-03 08:00,2025-06-11 16:00,2025-04-03 08:00,2025-06-11 16:00,2025-08-28 08:00,2025-11-05 16:00,,PT_Normal,,,,,o2B/EJTXi0KgcmI2y5E6Eg,Cw7Lh1DQgU63/ZhIEOhFhw,,,N,0,0,,,2023-02-08 18:30,2023-02-08 18:31,NotPrmUser,NotPrmUser,
144414,27206,55177,178,0,N,1,N,N,CP_Drtn,TT_Task,DT_FixedDUR2,TK_NotStart,DES1140,60% Review,,920,0,80,0,0,0,80,0,0,0,,,,2025-11-20 08:00,2025-12-03 16:00,,2025-06-12 08:00,2025-06-25 16:00,2025-06-12 08:00,2025-06-25 16:00,2025-06-12 08:00,2025-06-25 16:00,2025-11-20 08:00,2025-12-03 16:00,,PT_Normal,,,,,S0gZx/otR0+tfGuVkU97og,yx1q1BFHoEalAM64r/DGNQ,,,N,0,0,,,2023-02-08 18:30,2023-02-08 18:31,NotPrmUser,NotPrmUser,
144415,27206,55177,178,0,N,1,N,N,CP_Drtn,TT_Task,DT_FixedDUR2,TK_NotStart,DES1150,90% Submittal,,1200,0,320,0,0,0,320,0,0,0,,,,2026-01-22 08:00,2026-03-18 16:00,,2025-06-26 08:00,2025-08-20 16:00,2025-06-26 08:00,2025-08-20 16:00,2025-06-26 08:00,2025-08-20 16:00,2026-01-22 08:00,2026-03-18 16:00,,PT_Normal,,,,,Jd+PU/zw4EywHvzv/w7M1w,LN6ncU0HKE6Ns4lpFZcVfw,,,N,0,0,,,2023-02-08 18:30,2023-02-08 18:31,NotPrmUser,NotPrmUser,
144416,27206,55177,178,0,N,1,N,N,CP_Drtn,TT_Task,DT_FixedDUR2,TK_NotStart,DES1160,90% Review,,1200,0,80,0,0,0,80,0,0,0,,,,2026-03-19 08:00,2026-04-01 16:00,,2025-08-21 08:00,2025-09-03 16:00,2025-08-21 08:00,2025-09-03 16:00,2025-08-21 08:00,2025-09-03 16:00,2026-03-19 08:00,2026-04-01 16:00,,PT_Normal,,,,,fZ93Oi9Uw0O1NXfdAJtllQ,mO4lFsi32EKVt2LIf5Kb/Q,,,N,0,0,,,2023-02-08 18:30,2023-02-08 18:31,NotPrmUser,NotPrmUser,
144417,27206,55177,178,0,N,1,N,N,CP_Drtn,TT_Task,DT_FixedDUR2,TK_NotStart,DES1170,100% Submittal,,1200,960,160,0,0,0,160,0,0,0,,,,2026-04-02 08:00,2026-04-29 16:00,,2025-09-04 08:00,2025-10-01 16:00,2025-09-04 08:00,2025-10-01 16:00,2025-09-04 08:00,2025-10-01 16:00,2026-04-02 08:00,2026-04-29 16:00,,PT_Normal,,,,,ej5wk697XU+IMfS+clPo6g,kzdoc4cIoE+6jam10F2WTQ,,,N,0,0,,,2023-02-08 18:30,2023-02-08 18:31,NotPrmUser,NotPrmUser,
144418,27206,55177,178,0,N,1,N,N,CP_Drtn,TT_Task,DT_FixedDUR2,TK_NotStart,DES1180,Issue IFC Design Package,,240,0,80,0,0,0,80,0,0,0,,,,2026-04-30 08:00,2026-05-13 16:00,,2026-03-19 08:00,2026-04-01 16:00,2026-03-19 08:00,2026-04-01 16:00,2026-03-19 08:00,2026-04-01 16:00,2026-04-30 08:00,2026-05-13 16:00,,PT_Normal,,,,,POxki/2A0kqgmVWWKlw0cg,EVs+Wn5bGUSzyRDJtiPq9g,,,N,0,0,,,2023-02-08 18:30,2023-02-08 18:31,NotPrmUser,NotPrmUser,
144419,27206,55178,178,0,N,1,N,N,CP_Drtn,TT_Task,DT_FixedDUR2,TK_NotStart,DES1190,Issue Services Worksheet to Design Firms,,792,0,160,0,0,0,160,0,0,0,,,,2025-06-25 08:00,2025-07-22 16:00,,2025-02-06 08:00,2025-03-05 16:00,2025-02-06 08:00,2025-03-05 16:00,2025-02-06 08:00,2025-03-05 16:00,2025-06-25 08:00,2025-07-22 16:00,,PT_Normal,,,,,6qEYZM0Gv0WgQg0wqH7j/A,SYVIo5tX2EGev8HIgkLYdw,,,N,0,0,,,2023-02-08 18:30,2023-02-08 18:31,NotPrmUser,NotPrmUser,
144420,27206,55179,178,0,N,1,N,N,CP_Drtn,TT_Task,DT_FixedDUR2,TK_NotStart,DES1220,SED Design,,5344,0,240,0,0,0,240,0,0,0,,,,2027-08-03 08:00,2027-09-13 16:00,,2025-01-09 08:00,2025-02-19 16:00,2025-01-09 08:00,2025-02-19 16:00,2025-01-09 08:00,2025-02-19 16:00,2027-08-03 08:00,2027-09-13 16:00,,PT_Normal,,,,,kHANUPZKSEOafLQ9NuZeng,riFK8ffEUkeKViNweS8QNQ,,,N,0,0,,,2023-02-08 18:30,2023-02-08 18:31,NotPrmUser,NotPrmUser,
144421,27206,55179,178,0,N,1,N,N,CP_Drtn,TT_Task,DT_FixedDUR2,TK_NotStart,DES1230,Issue IFC Design Package,,5344,4496,160,0,0,0,160,0,0,0,,,,2027-09-14 08:00,2027-10-11 16:00,,2025-02-20 08:00,2025-03-19 16:00,2025-02-20 08:00,2025-03-19 16:00,2025-02-20 08:00,2025-03-19 16:00,2027-09-14 08:00,2027-10-11 16:00,,PT_Normal,,,,,cmNLLINmAUawYHjyXxMI7Q,thVXlQcEb0+u9oFZLEktiQ,,,N,0,0,,,2023-02-08 18:30,2023-02-09 16:38,NotPrmUser,NotPrmUser,
144422,27206,55181,178,0,N,1,N,N,CP_Drtn,TT_Task,DT_FixedDUR2,TK_NotStart,PRO1000,Civil BOM - Long Lead @ 30%,,680,0,120,0,0,0,120,0,0,0,,,,2025-08-14 08:00,2025-09-03 16:00,,2025-04-17 08:00,2025-05-07 16:00,2025-04-17 08:00,2025-05-07 16:00,2025-04-17 08:00,2025-05-07 16:00,2025-08-14 08:00,2025-09-03 16:00,,PT_Normal,,,,,Sb+0Knqih06wkHsNTRipBg,ll9RBGqBtUKahjPHvqSe1Q,,,N,0,0,,,2023-02-08 18:30,2023-02-08 18:31,NotPrmUser,NotPrmUser,
144423,27206,55181,178,0,N,1,N,N,CP_Drtn,TT_Task,DT_FixedDUR2,TK_NotStart,PRO1020,Electrical BOM - Long Lead @ 60%,,920,0,120,0,0,0,120,0,0,0,,,,2025-12-04 08:00,2025-12-24 16:00,,2025-06-26 08:00,2025-07-16 16:00,2025-06-26 08:00,2025-07-16 16:00,2025-06-26 08:00,2025-07-16 16:00,2025-12-04 08:00,2025-12-24 16:00,,PT_Normal,,,,,i4Xs9sBt8k+ncNf/zPyfOA,OfUqoG7v7UyJlKHq5DpdSQ,,,N,0,0,,,2023-02-08 18:30,2023-02-08 18:31,NotPrmUser,NotPrmUser,
144424,27206,55181,178,0,N,1,N,N,CP_Drtn,TT_Task,DT_FixedDUR2,TK_NotStart,PRO1040,BOM - Short Lead @ 60%,,712,0,120,0,0,0,120,0,0,0,,,,2026-02-05 08:00,2026-02-25 16:00,,2025-10-03 08:00,2025-10-23 16:00,2025-10-03 08:00,2025-10-23 16:00,2025-10-03 08:00,2025-10-23 16:00,2026-02-05 08:00,2026-02-25 16:00,,PT_Normal,,,,,BGfg2UdQDUCUS/rPU+WGUg,QXhBIYMRNUK4YEkVls6D4w,,,N,0,0,,,2023-02-08 18:30,2023-02-08 18:31,NotPrmUser,NotPrmUser,
144425,27206,55182,178,0,N,1,N,N,CP_Drtn,TT_Task,DT_FixedDUR2,TK_NotStart,PER1000,CalTrans Permit,,0,0,2000,0,0,0,2000,0,0,0,,,,2025-04-17 08:00,2026-04-01 16:00,,2025-04-17 08:00,2026-04-01 16:00,2025-04-17 08:00,2026-04-01 16:00,2025-04-17 08:00,2026-04-01 16:00,2025-04-17 08:00,2026-04-01 16:00,,PT_Normal,,,,,X+PJnkoCAkS698q0ikkVoA,UGcxpottG0e6hsEWFrGFTA,,,Y,0,0,,,2023-02-08 18:30,2023-02-08 18:31,NotPrmUser,NotPrmUser,
144426,27206,55182,178,0,N,1,N,N,CP_Drtn,TT_Task,DT_FixedDUR2,TK_NotStart,PER1010,City & County Permits,,1200,1200,800,0,0,0,800,0,0,0,,,,2025-11-13 08:00,2026-04-01 16:00,,2025-04-17 08:00,2025-09-03 16:00,2025-04-17 08:00,2025-09-03 16:00,2025-04-17 08:00,2025-09-03 16:00,2025-11-13 08:00,2026-04-01 16:00,,PT_Normal,,,,,T3p3XrCvyUqAFDR3bacoRA,gfIHiQCejEGv0J/zlLnhOA,,,N,0,0,,,2023-02-08 18:30,2023-02-08 18:31,NotPrmUser,NotPrmUser,
144427,27206,55182,178,0,N,1,N,N,CP_Drtn,TT_Task,DT_FixedDUR2,TK_NotStart,PER1020,Other Permit (TBD),,1200,1200,800,0,0,0,800,0,0,0,,,,2025-11-13 08:00,2026-04-01 16:00,,2025-04-17 08:00,2025-09-03 16:00,2025-04-17 08:00,2025-09-03 16:00,2025-04-17 08:00,2025-09-03 16:00,2025-11-13 08:00,2026-04-01 16:00,,PT_Normal,,,,,IFzlFGjJwkW0uKfze5Xi5Q,dfylQUkSyUmFitG3IhkpTQ,,,N,0,0,,,2023-02-08 18:30,2023-02-08 18:31,NotPrmUser,NotPrmUser,
144428,27206,55183,178,0,N,1,N,N,CP_Drtn,TT_Task,DT_FixedDUR2,TK_NotStart,PUB1000,Public Affairs / Community Outreach,,5416,5416,800,0,0,0,800,0,0,0,,,,2028-02-08 08:00,2028-06-26 16:00,,2025-07-04 08:00,2025-11-20 16:00,2025-07-04 08:00,2025-11-20 16:00,2025-07-04 08:00,2025-11-20 16:00,2028-02-08 08:00,2028-06-26 16:00,,PT_Normal,,,,,llqK8kkn8E6/P7ngf/TBwA,mwJ1S+roeUWcK3Lw2OmJlg,,,N,0,0,,,2023-02-08 18:30,2023-02-08 18:31,NotPrmUser,NotPrmUser,
144429,27206,55184,178,0,N,1,N,N,CP_Drtn,TT_Task,DT_FixedDUR2,TK_NotStart,LAN1000,Land Rights and Easement Acquisition,,880,880,1200,0,0,0,1200,0,0,0,,,,2025-09-04 08:00,2026-04-01 16:00,,2025-04-03 08:00,2025-10-29 16:00,2025-04-03 08:00,2025-10-29 16:00,2025-04-03 08:00,2025-10-29 16:00,2025-09-04 08:00,2026-04-01 16:00,,PT_Normal,,,,,B+8yYz/X2UiNl0Fq5eJ90g,FiLd3lPWA0a09uSJDBrI/g,,,N,0,0,,,2023-02-08 18:30,2023-02-08 18:31,NotPrmUser,NotPrmUser,
144430,27206,55184,178,0,N,1,N,N,CP_Drtn,TT_Task,DT_FixedDUR2,TK_NotStart,LAN1010,Tribal Land Rights,,880,880,1200,0,0,0,1200,0,0,0,,,,2025-09-04 08:00,2026-04-01 16:00,,2025-04-03 08:00,2025-10-29 16:00,2025-04-03 08:00,2025-10-29 16:00,2025-04-03 08:00,2025-10-29 16:00,2025-09-04 08:00,2026-04-01 16:00,,PT_Normal,,,,,CLF6qf2rbEyVW5kMlkR4+g,mKgNBmi7t06Iv72ieMt97A,,,N,0,0,,,2023-02-08 18:30,2023-02-08 18:31,NotPrmUser,NotPrmUser,
144431,27206,55184,178,0,N,1,N,N,CP_Drtn,TT_Task,DT_FixedDUR2,TK_NotStart,LAN1020,Laydown Yards,,880,880,1200,0,0,0,1200,0,0,0,,,,2025-09-04 08:00,2026-04-01 16:00,,2025-04-03 08:00,2025-10-29 16:00,2025-04-03 08:00,2025-10-29 16:00,2025-04-03 08:00,2025-10-29 16:00,2025-09-04 08:00,2026-04-01 16:00,,PT_Normal,,,,,Y71V+KGuG0yJ/5KXynX0uw,iA+EqLAPFk6X0QeYzfh3GA,,,N,0,0,,,2023-02-08 18:30,2023-02-08 18:31,NotPrmUser,NotPrmUser,
144432,27206,55185,178,0,N,1,N,N,CP_Drtn,TT_Task,DT_FixedDUR2,TK_NotStart,ENV1000,10% Environmental Submittal,,760,0,200,0,0,0,200,0,0,0,,,,2025-05-22 08:00,2025-06-25 16:00,,2025-01-09 08:00,2025-02-12 16:00,2025-01-09 08:00,2025-02-12 16:00,2025-01-09 08:00,2025-02-12 16:00,2025-05-22 08:00,2025-06-25 16:00,,PT_Normal,,,,,tvNt8BkI9E6opxGYOPMizw,Xvq654/anUmysrOSGeUVyA,,,N,0,0,,,2023-02-08 18:30,2023-02-08 18:31,NotPrmUser,NotPrmUser,
144433,27206,55185,178,0,N,1,N,N,CP_Drtn,TT_Task,DT_FixedDUR2,TK_NotStart,ENV1010,10% Environmental Review,,760,0,120,0,0,0,120,0,0,0,,,,2025-06-26 08:00,2025-07-16 16:00,,2025-02-13 08:00,2025-03-05 16:00,2025-02-13 08:00,2025-03-05 16:00,2025-02-13 08:00,2025-03-05 16:00,2025-06-26 08:00,2025-07-16 16:00,,PT_Normal,,,,,m/hjoQK8IUuvtxx7nbPIig,vfvPcib5v0Oc/a43NhOavw,,,N,0,0,,,2023-02-08 18:30,2023-02-08 18:31,NotPrmUser,NotPrmUser,
144434,27206,55185,178,0,N,1,N,N,CP_Drtn,TT_Task,DT_FixedDUR2,TK_NotStart,ENV1020,30% Environmental Submittal,,760,0,200,0,0,0,200,0,0,0,,,,2025-11-06 08:00,2025-12-10 16:00,,2025-06-26 08:00,2025-07-30 16:00,2025-06-26 08:00,2025-07-30 16:00,2025-06-26 08:00,2025-07-30 16:00,2025-11-06 08:00,2025-12-10 16:00,,PT_Normal,,,,,VBW0I6JhaESTyg/AoICr8A,coC7cVFKvU+nIl9FrzFW0Q,,,N,0,0,,,2023-02-08 18:30,2023-02-08 18:31,NotPrmUser,NotPrmUser,
144435,27206,55185,178,0,N,1,N,N,CP_Drtn,TT_Task,DT_FixedDUR2,TK_NotStart,ENV1030,30% Environmental Review,,760,0,120,0,0,0,120,0,0,0,,,,2025-12-11 08:00,2025-12-31 16:00,,2025-07-31 08:00,2025-08-20 16:00,2025-07-31 08:00,2025-08-20 16:00,2025-07-31 08:00,2025-08-20 16:00,2025-12-11 08:00,2025-12-31 16:00,,PT_Normal,,,,,4Iu3leudyEOWATPxrs+MCQ,tLHs6FBc80yP8TkLQ3UunA,,,N,0,0,,,2023-02-08 18:30,2023-02-08 18:31,NotPrmUser,NotPrmUser,
144436,27206,55185,178,0,N,1,N,N,CP_Drtn,TT_Task,DT_FixedDUR2,TK_NotStart,ENV1040,60% Environmental Submittal,,760,0,280,0,0,0,280,0,0,0,,,,2026-01-01 08:00,2026-02-18 16:00,,2025-08-21 08:00,2025-10-08 16:00,2025-08-21 08:00,2025-10-08 16:00,2025-08-21 08:00,2025-10-08 16:00,2026-01-01 08:00,2026-02-18 16:00,,PT_Normal,,,,,oJgIoPPsxUqgQo+lwjTpYg,chk2H3PrnEiP/ap8KW4vUQ,,,N,0,0,,,2023-02-08 18:30,2023-02-08 18:31,NotPrmUser,NotPrmUser,
144437,27206,55185,178,0,N,1,N,N,CP_Drtn,TT_Task,DT_FixedDUR2,TK_NotStart,ENV1050,60% Environmental Release,,880,880,120,0,0,0,120,0,0,0,,,,2026-03-12 08:00,2026-04-01 16:00,,2025-10-09 08:00,2025-10-29 16:00,2025-10-09 08:00,2025-10-29 16:00,2025-10-09 08:00,2025-10-29 16:00,2026-03-12 08:00,2026-04-01 16:00,,PT_Normal,,,,,MSIvUzLKw0yBmgJuNy6C1Q,KAcVS9QMqUu/pzB9xcGCHw,,,N,0,0,,,2023-02-08 18:30,2023-02-08 18:31,NotPrmUser,NotPrmUser,
144438,27206,55185,178,0,N,1,N,N,CP_Drtn,TT_Task,DT_FixedDUR2,TK_NotStart,ENV1060,BIA NEPA Submittal,,760,0,80,0,0,0,80,0,0,0,,,,2026-02-19 08:00,2026-03-04 16:00,,2025-10-09 08:00,2025-10-22 16:00,2025-10-09 08:00,2025-10-22 16:00,2025-10-09 08:00,2025-10-22 16:00,2026-02-19 08:00,2026-03-04 16:00,,PT_Normal,,,,,pU9yTPnVW0CYxWB8+pzjNA,Zc9c+h6JZEuz5HL1jIw20g,,,N,0,0,,,2023-02-08 18:30,2023-02-08 18:31,NotPrmUser,NotPrmUser,
144439,27206,55185,178,0,N,1,N,N,CP_Drtn,TT_Task,DT_FixedDUR2,TK_NotStart,ENV1070,"BIA Received (Add 250 days, if needed)",,760,760,160,0,0,0,160,0,0,0,,,,2026-03-05 08:00,2026-04-01 16:00,,2025-10-23 08:00,2025-11-19 16:00,2025-10-23 08:00,2025-11-19 16:00,2025-10-23 08:00,2025-11-19 16:00,2026-03-05 08:00,2026-04-01 16:00,,PT_Normal,,,,,u2VaXchvLEGHspZxS3Jd+A,49Mw1tRN70GteRgtesFIpw,,,N,0,0,,,2023-02-08 18:30,2023-02-08 18:31,NotPrmUser,NotPrmUser,
144440,27206,55175,178,0,N,1,N,N,CP_Drtn,TT_Task,DT_FixedDUR2,TK_NotStart,DES1010,Seismic / Geotech Submittal,,760,0,200,0,0,0,200,0,0,0,,,,2025-07-17 08:00,2025-08-20 16:00,,2025-03-06 08:00,2025-04-09 16:00,2025-03-06 08:00,2025-04-09 16:00,2025-03-06 08:00,2025-04-09 16:00,2025-07-17 08:00,2025-08-20 16:00,,PT_Normal,,,,,w/fzJswwNE6OnUDSgO1AUw,D6LktkQt7kSbCadrCQyGDQ,,,N,0,0,,,2023-02-08 18:30,2023-02-08 18:31,NotPrmUser,NotPrmUser,
144441,27206,55175,178,0,N,1,N,N,CP_Drtn,TT_Task,DT_FixedDUR2,TK_NotStart,DES1020,Potholing Submittal,,760,0,200,0,0,0,200,0,0,0,,,,2025-08-21 08:00,2025-09-24 16:00,,2025-04-10 08:00,2025-05-14 16:00,2025-04-10 08:00,2025-05-14 16:00,2025-04-10 08:00,2025-05-14 16:00,2025-08-21 08:00,2025-09-24 16:00,,PT_Normal,,,,,T3vznOqC7U2vVmozozPUQg,W1FoLds6i0OJhp18WeZsiw,,,N,0,0,,,2023-02-08 18:30,2023-02-08 18:31,NotPrmUser,NotPrmUser,
144442,27206,55175,178,0,N,1,N,N,CP_Drtn,TT_Task,DT_FixedDUR2,TK_NotStart,DES1030,Potholing Release /Perform Potholing,,760,0,240,0,0,0,240,0,0,0,,,,2025-09-25 08:00,2025-11-05 16:00,,2025-05-15 08:00,2025-06-25 16:00,2025-05-15 08:00,2025-06-25 16:00,2025-05-15 08:00,2025-06-25 16:00,2025-09-25 08:00,2025-11-05 16:00,,PT_Normal,,,,,MyczsiF2jkSlnKPS9CIxjw,1/qPm6AwcEO6RkfAHiUf9w,,,N,0,0,,,2023-02-08 18:30,2023-02-08 18:31,NotPrmUser,NotPrmUser,
144443,27206,55187,178,0,N,1,N,N,CP_Drtn,TT_Task,DT_FixedDUR2,TK_NotStart,PCON100,Initiate Performance Partnering Process @ 60%,,1112,0,40,0,0,0,40,0,0,0,,,,2026-01-29 08:00,2026-02-04 16:00,,2025-07-18 08:00,2025-07-24 16:00,2025-07-18 08:00,2025-07-24 16:00,2025-07-18 08:00,2025-07-24 16:00,2026-01-29 08:00,2026-02-04 16:00,,PT_Normal,,,,,aWjZu+29j0u/UZgT25kEkQ,I1q5xo4j7UaAgV4e/7aWwg,,,N,0,0,,,2023-02-08 18:30,2023-02-08 18:31,NotPrmUser,NotPrmUser,
144444,27206,55187,178,0,N,1,N,N,CP_Drtn,TT_Task,DT_FixedDUR2,TK_NotStart,PCON110,Receive Estimate from Contractor,,1112,0,120,0,0,0,120,0,0,0,,,,2026-02-05 08:00,2026-02-25 16:00,,2025-07-25 08:00,2025-08-14 16:00,2025-07-25 08:00,2025-08-14 16:00,2025-07-25 08:00,2025-08-14 16:00,2026-02-05 08:00,2026-02-25 16:00,,PT_Normal,,,,,OnUlKQ4QhUixCxTQQKMTnA,JHnoq2Ebz026PsVDpcgX5A,,,N,0,0,,,2023-02-08 18:30,2023-02-08 18:31,NotPrmUser,NotPrmUser,
144445,27206,55187,178,0,N,1,N,N,CP_Drtn,TT_Task,DT_FixedDUR2,TK_NotStart,PCON120,Bid Estimate Negotiations,,1112,0,80,0,0,0,80,0,0,0,,,,2026-02-26 08:00,2026-03-11 16:00,,2025-08-15 08:00,2025-08-28 16:00,2025-08-15 08:00,2025-08-28 16:00,2025-08-15 08:00,2025-08-28 16:00,2026-02-26 08:00,2026-03-11 16:00,,PT_Normal,,,,,U6JGZcXFq0qhzStkhWCeKA,jMrQlIP0I0mO8tzepS/trQ,,,N,0,0,,,2023-02-08 18:30,2023-02-08 18:31,NotPrmUser,NotPrmUser,
144446,27206,55187,178,0,N,1,N,N,CP_Drtn,TT_Task,DT_FixedDUR2,TK_NotStart,PCON130,Revise Estimate based on IFC,,1112,0,40,0,0,0,40,0,0,0,,,,2026-03-12 08:00,2026-03-18 16:00,,2025-08-29 08:00,2025-09-04 16:00,2025-08-29 08:00,2025-09-04 16:00,2025-08-29 08:00,2025-09-04 16:00,2026-03-12 08:00,2026-03-18 16:00,,PT_Normal,,,,,3fTDIYKtOEGsJI01qLd4Fg,8vDqFtjQbEiImDxBgP3W7Q,,,N,0,0,,,2023-02-08 18:30,2023-02-08 18:31,NotPrmUser,NotPrmUser,
144447,27206,55187,178,0,N,1,N,N,CP_Drtn,TT_Task,DT_FixedDUR2,TK_NotStart,PCON140,Issue Release,,1112,1112,80,0,0,0,80,0,0,0,,,,2026-03-19 08:00,2026-04-01 16:00,,2025-09-05 08:00,2025-09-18 16:00,2025-09-05 08:00,2025-09-18 16:00,2025-09-05 08:00,2025-09-18 16:00,2026-03-19 08:00,2026-04-01 16:00,,PT_Normal,,,,,lWwGzL3TzkGaDw0G2BSMNQ,GYw1dqgTNku00sVoqLePuQ,,,N,0,0,,,2023-02-08 18:30,2023-02-08 18:31,NotPrmUser,NotPrmUser,
144448,27206,55189,178,0,N,1,N,N,CP_Drtn,TT_Task,DT_FixedDUR2,TK_NotStart,PCON200,Civil Pre-Construction Meeting (Civil Construction Ready),,0,0,40,0,0,0,40,0,0,0,,,,2026-04-02 08:00,2026-04-08 16:00,,2026-04-02 08:00,2026-04-08 16:00,2026-04-02 08:00,2026-04-08 16:00,2026-04-02 08:00,2026-04-08 16:00,2026-04-02 08:00,2026-04-08 16:00,,PT_Normal,,,,,icSuEYpFRU665rZ4uZzlDw,PQryjWv5mEyVhYk2XGQubg,,,Y,0,0,,,2023-02-08 18:30,2023-02-08 18:31,NotPrmUser,NotPrmUser,
144449,27206,55189,178,0,N,1,N,N,CP_Drtn,TT_Task,DT_FixedDUR2,TK_NotStart,PCON210,Electrical - Pre-Construction Meeting (Electical Construction Ready),,240,0,40,0,0,0,40,0,0,0,,,,2026-05-14 08:00,2026-05-20 16:00,,2026-04-02 08:00,2026-04-08 16:00,2026-04-02 08:00,2026-04-08 16:00,2026-04-02 08:00,2026-04-08 16:00,2026-05-14 08:00,2026-05-20 16:00,,PT_Normal,,,,,OOkNQDAolUGgof9ODqax5Q,TOs5hpq+fE6aTr+rtDUvIA,,,N,0,0,,,2023-02-08 18:30,2023-02-08 18:31,NotPrmUser,NotPrmUser,
144450,27206,55188,178,0,N,1,N,N,CP_Drtn,TT_Task,DT_FixedDUR2,TK_NotStart,PCON150,Initiate Performance Partnering Process @ 60%,,1480,0,40,0,0,0,40,0,0,0,,,,2026-03-12 08:00,2026-03-18 16:00,,2025-06-26 08:00,2025-07-02 16:00,2025-06-26 08:00,2025-07-02 16:00,2025-06-26 08:00,2025-07-02 16:00,2026-03-12 08:00,2026-03-18 16:00,,PT_Normal,,,,,b3isZY3L9UGsI0Y5OIJ+6A,TjopcQQ1F0ea6y7WBTwqXQ,,,N,0,0,,,2023-02-08 18:30,2023-02-08 18:31,NotPrmUser,NotPrmUser,
144451,27206,55188,178,0,N,1,N,N,CP_Drtn,TT_Task,DT_FixedDUR2,TK_NotStart,PCON160,Receive Estimate from Contractor,,1480,0,120,0,0,0,120,0,0,0,,,,2026-03-19 08:00,2026-04-08 16:00,,2025-07-03 08:00,2025-07-23 16:00,2025-07-03 08:00,2025-07-23 16:00,2025-07-03 08:00,2025-07-23 16:00,2026-03-19 08:00,2026-04-08 16:00,,PT_Normal,,,,,fQYP5IQ7JEOGAJ1zdL+u2Q,s++bWbZV00ux6KCgEnT+bg,,,N,0,0,,,2023-02-08 18:30,2023-02-08 18:31,NotPrmUser,NotPrmUser,
144452,27206,55188,178,0,N,1,N,N,CP_Drtn,TT_Task,DT_FixedDUR2,TK_NotStart,PCON170,Bid Estimate Negotiations,,1480,0,80,0,0,0,80,0,0,0,,,,2026-04-09 08:00,2026-04-22 16:00,,2025-07-24 08:00,2025-08-06 16:00,2025-07-24 08:00,2025-08-06 16:00,2025-07-24 08:00,2025-08-06 16:00,2026-04-09 08:00,2026-04-22 16:00,,PT_Normal,,,,,WwDzUoNj90aWQZVi8d6bKw,3/Lu548NA0KPshLM7iEzVA,,,N,0,0,,,2023-02-08 18:30,2023-02-08 18:31,NotPrmUser,NotPrmUser,
144453,27206,55188,178,0,N,1,N,N,CP_Drtn,TT_Task,DT_FixedDUR2,TK_NotStart,PCON180,Revise Estimate based on IFC,,1480,0,40,0,0,0,40,0,0,0,,,,2026-04-23 08:00,2026-04-29 16:00,,2025-08-07 08:00,2025-08-13 16:00,2025-08-07 08:00,2025-08-13 16:00,2025-08-07 08:00,2025-08-13 16:00,2026-04-23 08:00,2026-04-29 16:00,,PT_Normal,,,,,ZPeuuJeSxkW113Od0BPz5g,GfhgkI9OakentnuAu4WxVQ,,,N,0,0,,,2023-02-08 18:30,2023-02-08 18:31,NotPrmUser,NotPrmUser,
144454,27206,55188,178,0,N,1,N,N,CP_Drtn,TT_Task,DT_FixedDUR2,TK_NotStart,PCON190,Issue Release,,1480,1240,80,0,0,0,80,0,0,0,,,,2026-04-30 08:00,2026-05-13 16:00,,2025-08-14 08:00,2025-08-27 16:00,2025-08-14 08:00,2025-08-27 16:00,2025-08-14 08:00,2025-08-27 16:00,2026-04-30 08:00,2026-05-13 16:00,,PT_Normal,,,,,AnchHxxCy0SNinR9aD6Bjg,CpYYF2y0F06TSwly/vzVrQ,,,N,0,0,,,2023-02-08 18:30,2023-02-08 18:31,NotPrmUser,NotPrmUser,
144455,27206,55181,178,0,N,1,N,N,CP_Drtn,TT_Task,DT_FixedDUR2,TK_NotStart,PRO1010,Order Long Lead Civil Material,,680,680,1200,0,0,0,1200,0,0,0,,,,2025-09-04 08:00,2026-04-01 16:00,,2025-05-08 08:00,2025-12-03 16:00,2025-05-08 08:00,2025-12-03 16:00,2025-05-08 08:00,2025-12-03 16:00,2025-09-04 08:00,2026-04-01 16:00,,PT_Normal,,,,,o4qnGBg74kyEjGBUw6XB2g,CG+1vB7fjUik+0vWhW/y8w,,,N,0,0,,,2023-02-08 18:30,2023-02-08 18:31,NotPrmUser,NotPrmUser,
144456,27206,55181,178,0,N,1,N,N,CP_Drtn,TT_Task,DT_FixedDUR2,TK_NotStart,PRO1050,Order Short Lead Materials,,712,712,200,0,0,0,200,0,0,0,,,,2026-02-26 08:00,2026-04-01 16:00,,2025-10-24 08:00,2025-11-27 16:00,2025-10-24 08:00,2025-11-27 16:00,2025-10-24 08:00,2025-11-27 16:00,2026-02-26 08:00,2026-04-01 16:00,,PT_Normal,,,,,q03xJWf3pE2jsXmJVwr/hQ,iUKTLuEcs0CnvfqzZ4IUiQ,,,N,0,0,,,2023-02-08 18:30,2023-02-08 18:31,NotPrmUser,NotPrmUser,
144457,27206,55181,178,0,N,1,N,N,CP_Drtn,TT_Task,DT_FixedDUR2,TK_NotStart,PRO1030,Order Long Lead Electrical Materials,,920,680,800,0,0,0,800,0,0,0,,,,2025-12-25 08:00,2026-05-13 16:00,,2025-07-17 08:00,2025-12-03 16:00,2025-07-17 08:00,2025-12-03 16:00,2025-07-17 08:00,2025-12-03 16:00,2025-12-25 08:00,2026-05-13 16:00,,PT_Normal,,,,,SPWJ4wlLF0WE2NiGpAmZ2g,kEMrvwyPDEuauZdULRDqCQ,,,N,0,0,,,2023-02-08 18:30,2023-02-08 18:31,NotPrmUser,NotPrmUser,
144458,27206,55191,178,0,N,1,N,N,CP_Phys,TT_Task,DT_FixedRate,TK_NotStart,CON2000,Civil Construction (Trenching 300 feet/day),7730,0,0,2816,0,5632,5632,2816,0,0,0,,,,2026-04-09 08:00,2027-08-13 16:00,,2026-04-09 08:00,2027-08-13 16:00,2026-04-09 08:00,2027-08-13 16:00,2026-04-09 08:00,2027-08-13 16:00,2026-04-09 08:00,2027-08-13 16:00,,PT_Normal,,,,,u8QqA/VKP0WZYTRWEsHgVQ,vCiOhAoV3EWw/YAhC65MZg,,,Y,0,0,,,2023-02-08 18:30,2023-02-10 12:04,NotPrmUser,NotPrmUser,
144459,27206,55192,178,0,N,1,N,N,CP_Drtn,TT_Task,DT_FixedDUR2,TK_NotStart,CON3000,Electrical Construction,7786,0,0,2576,0,1288,1288,2576,0,0,0,,,,2026-05-21 08:00,2027-08-13 16:00,,2026-05-21 08:00,2027-08-13 16:00,2026-05-21 08:00,2027-08-13 16:00,2026-05-21 08:00,2027-08-13 16:00,2026-05-21 08:00,2027-08-13 16:00,,PT_Normal,,,,,BOqiPxj9mEy2T908n2z9yw,IzDOIgnqFkmDtwfsKNPoHw,,,Y,0,0,,,2023-02-08 18:30,2023-02-08 19:37,NotPrmUser,NotPrmUser,
144460,27206,55193,178,0,N,1,N,N,CP_Drtn,TT_Task,DT_FixedDUR2,TK_NotStart,CON4000,Service Cutover,,848,0,2216,0,0,0,2216,0,0,0,,,,2026-12-18 08:00,2028-01-10 16:00,,2026-07-23 08:00,2027-08-13 16:00,2026-07-23 08:00,2027-08-13 16:00,2026-07-23 08:00,2027-08-13 16:00,2026-12-18 08:00,2028-01-10 16:00,,PT_Normal,,,,,h9beTuB8FUW/BlqsPL5F1w,nOn9V0VRjES3YicEzrxlQQ,,,N,0,0,,,2023-02-08 18:30,2023-02-09 16:38,NotPrmUser,NotPrmUser,
144461,27206,55194,178,0,N,1,N,N,CP_Drtn,TT_Task,DT_FixedDUR2,TK_NotStart,CON5000,Scada Construction,,848,0,520,0,0,0,520,0,0,0,,,,2027-10-12 08:00,2028-01-10 16:00,,2027-05-17 08:00,2027-08-13 16:00,2027-05-17 08:00,2027-08-13 16:00,2027-05-17 08:00,2027-08-13 16:00,2027-10-12 08:00,2028-01-10 16:00,,PT_Normal,,,,,LwBFuMiV70+A5KJ7Vs5wKg,uuavF6z3+02QK9pgq8T7Zw,,,N,0,0,,,2023-02-08 18:30,2023-02-09 16:38,NotPrmUser,NotPrmUser,
144462,27206,55195,178,0,N,1,N,N,CP_Drtn,TT_Task,DT_FixedDUR2,TK_NotStart,CON6000,Substation Construction,,848,0,520,0,0,0,520,0,0,0,,,,2027-10-12 08:00,2028-01-10 16:00,,2027-05-17 08:00,2027-08-13 16:00,2027-05-17 08:00,2027-08-13 16:00,2027-05-17 08:00,2027-08-13 16:00,2027-10-12 08:00,2028-01-10 16:00,,PT_Normal,,,,,ViSovPpJXEqYLsqcSnCKLg,P6rec+a/g0mh/2FStiZw3Q,,,N,0,0,,,2023-02-08 18:30,2023-02-09 16:38,NotPrmUser,NotPrmUser,
144463,27206,55196,178,0,N,1,N,N,CP_Drtn,TT_Task,DT_FixedDrtn,TK_NotStart,CON7000,Overhead RFS (1000 feet per day),7785,0,0,848,0,848,848,848,0,0,0,,,,2027-08-16 08:00,2028-01-10 16:00,,2027-08-16 08:00,2028-01-10 16:00,2027-08-16 08:00,2028-01-10 16:00,2027-08-16 08:00,2028-01-10 16:00,2027-08-16 08:00,2028-01-10 16:00,,PT_Normal,,,,,tkFKLO7n30qE9JFy4Rb9mQ,g9IWZnLolkKo2Hn5pRxblw,,,Y,0,0,,,2023-02-08 18:30,2023-02-08 18:31,NotPrmUser,NotPrmUser,
144464,27206,55190,178,0,N,1,N,N,CP_Drtn,TT_Task,DT_FixedDUR2,TK_NotStart,ISD1000,ISD - Energize - Put in service,,1800,1800,8,0,0,0,8,20,0,20,,,,2028-06-26 08:00,2028-06-26 16:00,,2027-08-16 08:00,2027-08-16 16:00,2027-08-16 08:00,2027-08-16 16:00,2027-08-16 08:00,2027-08-16 16:00,2028-06-26 08:00,2028-06-26 16:00,,PT_Normal,,,,,WdT7zq0ss0KOQf10TW/bDA,EvkhLh3XLEuj1JaN26D1bw,,,N,0,0,,,2023-02-08 18:30,2023-02-09 16:38,NotPrmUser,NotPrmUser,
144465,27206,55173,178,0,N,1,N,N,CP_Drtn,TT_Task,DT_FixedDUR2,TK_NotStart,SUR1000,Survey and LiDAR,7385,0,0,400,0,7347,7347,400,0,0,0,,,,2024-10-31 08:00,2025-01-08 16:00,,2024-10-31 08:00,2025-01-08 16:00,2024-10-31 08:00,2025-01-08 16:00,2024-10-31 08:00,2025-01-08 16:00,2024-10-31 08:00,2025-01-08 16:00,,PT_Normal,,,,,GMLaLb2npU6mMfiTU3fEqw,LghSPegFmUaKyEfGyek8uw,,,Y,0,0,,,2023-02-08 18:30,2023-02-08 18:31,NotPrmUser,NotPrmUser,
144466,27206,55178,178,0,N,1,N,N,CP_Drtn,TT_Task,DT_FixedDUR2,TK_NotStart,DES1200,Receive Services Worksheet and Cable Info from Design Firms,,792,0,160,0,0,0,160,0,0,0,,,,2025-07-23 08:00,2025-08-19 16:00,,2025-03-06 08:00,2025-04-02 16:00,2025-03-06 08:00,2025-04-02 16:00,2025-03-06 08:00,2025-04-02 16:00,2025-07-23 08:00,2025-08-19 16:00,,PT_Normal,,,,,9Doe0DjVPkmojpCUntnKZA,pO01oXlyv0eSVYbvOTQbQA,,,N,0,0,,,2023-02-08 18:30,2023-02-08 18:31,NotPrmUser,NotPrmUser,
144467,27206,55178,178,0,N,1,N,N,CP_Drtn,TT_Task,DT_FixedDUR2,TK_NotStart,DES1210,Issue to Trench Inspectors,,2280,1432,80,0,0,0,80,0,0,0,,,,2026-12-04 08:00,2026-12-17 16:00,,2025-10-31 08:00,2025-11-13 16:00,2025-10-31 08:00,2025-11-13 16:00,2025-10-31 08:00,2025-11-13 16:00,2026-12-04 08:00,2026-12-17 16:00,,PT_Normal,,,,,t4+KRGZJBECsaOo2y+xvKA,ox87VI0zVEicWaSTXclVVg,,,N,0,0,,,2023-02-08 18:30,2023-02-08 18:31,NotPrmUser,NotPrmUser,
144468,27206,55190,178,0,N,1,N,N,CP_Drtn,TT_FinMile,DT_FixedDrtn,TK_NotStart,CON1020,Construction Complete,,0,0,0,0,0,0,0,0,0,0,,,,2028-01-10 16:00,2028-01-10 16:00,,2028-01-10 16:00,2028-01-10 16:00,2028-01-10 16:00,2028-01-10 16:00,2028-01-10 16:00,2028-01-10 16:00,2028-01-10 16:00,2028-01-10 16:00,,PT_Normal,,,,,CKh+9/LGT0+oGSUgKeRbzw,quf2Gg/CA0SArsEccXCalg,,,Y,0,0,,,2023-02-08 18:30,2023-02-08 18:31,NotPrmUser,NotPrmUser,
144469,27206,55190,178,0,N,1,N,N,CP_Drtn,TT_Mile,DT_FixedDrtn,TK_NotStart,CON1010,Construction Start,,4624,4624,0,0,0,0,0,0,0,0,,,,2028-06-26 16:00,2028-06-26 16:00,,2026-04-09 08:00,2026-04-09 08:00,2026-04-09 08:00,2026-04-09 08:00,2026-04-09 08:00,2026-04-09 08:00,2028-06-26 16:00,2028-06-26 16:00,,PT_Normal,,,,,bRAUnHot3Ea+RQw1FIZQ2A,IbEpfSsVdU+2xjOrOlOpXw,,,N,0,0,,,2023-02-08 18:30,2023-02-08 18:31,NotPrmUser,NotPrmUser,
144470,27206,55199,178,0,N,1,N,N,CP_Drtn,TT_Task,DT_FixedDUR2,TK_NotStart,CLO1020,GIS/As-Built and Records Complete,,480,480,480,0,0,0,480,0,0,0,,,,2028-04-04 08:00,2028-06-26 16:00,,2028-01-11 08:00,2028-04-03 16:00,2028-01-11 08:00,2028-04-03 16:00,2028-01-11 08:00,2028-04-03 16:00,2028-04-04 08:00,2028-06-26 16:00,,PT_Normal,,,,,dRwxzKssYUayW51DVNzIZA,yPp/38Y8jEG151/HwQiixw,,,N,0,0,,,2023-02-08 18:30,2023-02-08 18:31,NotPrmUser,NotPrmUser,
144471,27206,55200,178,0,N,1,N,N,CP_Drtn,TT_Task,DT_FixedDUR2,TK_NotStart,CLO1030,"PO's complete, Work Order Reconcilled and Closed",,0,0,960,0,0,0,960,0,0,0,,,,2028-01-11 08:00,2028-06-26 16:00,,2028-01-11 08:00,2028-06-26 16:00,2028-01-11 08:00,2028-06-26 16:00,2028-01-11 08:00,2028-06-26 16:00,2028-01-11 08:00,2028-06-26 16:00,,PT_Normal,,,,,z9TLrx3B+EKi7cvDsJ5/SQ,oJnVDdwch0aQ61f3E7l41w,,,Y,0,0,,,2023-02-08 18:30,2023-02-08 18:31,NotPrmUser,NotPrmUser,
144472,27206,55198,178,0,N,1,N,N,CP_Drtn,TT_FinMile,DT_FixedDrtn,TK_NotStart,CLO1010,Project Complete,,0,0,0,0,0,0,0,0,0,0,,,,2028-06-26 16:00,2028-06-26 16:00,,2028-06-26 16:00,2028-06-26 16:00,2028-06-26 16:00,2028-06-26 16:00,2028-06-26 16:00,2028-06-26 16:00,2028-06-26 16:00,2028-06-26 16:00,,PT_Normal,,,,,cxv/doY8FUOv3ikRAJN0mA,ZceD6e7f8kWDD66FTLYwcA,,,Y,0,0,,,2023-02-08 18:30,2023-02-08 18:31,NotPrmUser,NotPrmUser,
144473,27206,55174,178,0,N,1,N,N,CP_Drtn,TT_LOE,DT_FixedDUR2,TK_NotStart,DES1000,Design Summary,7257,3184,0,2560,0,12990,12990,2560,0,0,0,,,,2025-01-09 08:00,2027-10-11 16:00,,2025-01-09 08:00,2026-04-01 16:00,2025-01-09 08:00,2026-04-01 16:00,2025-01-09 08:00,2026-04-01 16:00,2025-01-09 08:00,2027-10-11 16:00,,PT_Normal,,,,,GtVaaSStoUam4zOUs9pKBw,eKAizkhXGkOPSba84+/bZg,,,Y,0,0,,,2023-02-08 18:30,2023-02-08 18:31,NotPrmUser,NotPrmUser,
144474,27206,55190,178,0,N,1,N,N,CP_Drtn,TT_LOE,DT_FixedDUR2,TK_NotStart,CON1000,Construction Summary,7385,0,0,3664,0,9484,9484,3664,20,0,20,,,,2028-01-10 16:00,2028-01-10 16:00,,2026-04-09 08:00,2028-01-10 16:00,2026-04-09 08:00,2028-01-10 16:00,2026-04-09 08:00,2028-01-10 16:00,2028-01-10 16:00,2028-01-10 16:00,,PT_Normal,,,,,hDPYfXsjy0eYOvDn60vynA,VI3txDKlHE+AoqKDSlh+LQ,,,N,0,0,,,2023-02-08 18:30,2023-02-08 18:31,NotPrmUser,NotPrmUser,
144475,27206,55198,178,0,N,1,N,N,CP_Drtn,TT_LOE,DT_FixedDUR2,TK_NotStart,CLO1000,Close Out Summary,7385,0,0,960,0,4449,4449,960,0,0,0,,,,2028-01-11 08:00,2028-06-26 16:00,,2028-01-11 08:00,2028-06-26 16:00,2028-01-11 08:00,2028-06-26 16:00,2028-01-11 08:00,2028-06-26 16:00,2028-01-11 08:00,2028-06-26 16:00,,PT_Normal,,,,,+2IeBTZSbkm8qDuriu0JnQ,fM0pj9GPBUWH1IR8D/52dA,,,Y,0,0,,,2023-02-08 18:30,2023-02-08 18:31,NotPrmUser,NotPrmUser,
144476,27206,55171,178,0,N,1,N,N,CP_Drtn,TT_LOE,DT_FixedDUR2,TK_NotStart,PCON1000,Pre-Construction Summary,,0,0,3176,0,0,0,3176,0,0,0,,,,2024-10-01 08:00,2026-04-08 16:00,,2024-10-01 08:00,2026-04-08 16:00,2024-10-01 08:00,2026-04-08 16:00,2024-10-01 08:00,2026-04-08 16:00,2024-10-01 08:00,2026-04-08 16:00,,PT_Normal,,,,,Mhv+FCEuEkCpnLAr6LpLCA,f4AR+JsED0CR8ylFGo1CxA,,,Y,0,0,,,2023-02-08 18:30,2023-02-08 18:31,NotPrmUser,NotPrmUser,
144862,27212,54962,178,0,N,1,N,N,CP_Drtn,TT_Task,DT_FixedDUR2,TK_NotStart,SCO1000,Bundling / Phasing of circuits for project sequencing,,0,0,80,0,0,0,80,0,0,0,2023-09-25 00:00,,,2023-09-25 08:00,2023-10-06 16:00,,2023-09-25 08:00,2023-10-06 16:00,2023-09-25 08:00,2023-10-06 16:00,2023-09-25 08:00,2023-10-06 16:00,2023-09-25 08:00,2023-10-06 16:00,CS_MSOA,PT_Normal,,,,,1c9Hz+4jTEmfTO65iES1uQ,E8WkKHLW2kaces5YDbFAIQ,,,Y,0,0,,,2023-02-08 18:30,2023-02-08 18:31,NotPrmUser,NotPrmUser,
144863,27212,54962,178,0,N,1,N,N,CP_Drtn,TT_Task,DT_FixedDUR2,TK_NotStart,SCO1010,Constructability Review,,0,0,40,0,0,0,40,0,0,0,,,,2023-10-09 08:00,2023-10-13 16:00,,2023-10-09 08:00,2023-10-13 16:00,2023-10-09 08:00,2023-10-13 16:00,2023-10-09 08:00,2023-10-13 16:00,2023-10-09 08:00,2023-10-13 16:00,,PT_Normal,,,,,jDGHe5v26UqcbV2xwFXG8w,NOv936bssUG4VwdIraZe8Q,,,Y,0,0,,,2023-02-08 18:30,2023-02-08 18:31,NotPrmUser,NotPrmUser,
144864,27212,54962,178,0,N,1,N,N,CP_Drtn,TT_Task,DT_FixedDUR2,TK_NotStart,SCO1020,SDG&E Review,,0,0,16,0,0,0,16,0,0,0,,,,2023-10-16 08:00,2023-10-17 16:00,,2023-10-16 08:00,2023-10-17 16:00,2023-10-16 08:00,2023-10-17 16:00,2023-10-16 08:00,2023-10-17 16:00,2023-10-16 08:00,2023-10-17 16:00,,PT_Normal,,,,,8CToL1j0NkqCWAjRctgDNw,M3094KPfHkOfO+x3t3EdGA,,,Y,0,0,,,2023-02-08 18:30,2023-02-08 18:31,NotPrmUser,NotPrmUser,
144865,27212,54963,178,0,N,1,N,N,CP_Drtn,TT_Task,DT_FixedDUR2,TK_NotStart,PLA1000,Workorder Setup,,0,0,40,0,0,0,40,0,0,0,,,,2023-10-18 08:00,2023-10-24 16:00,,2023-10-18 08:00,2023-10-24 16:00,2023-10-18 08:00,2023-10-24 16:00,2023-10-18 08:00,2023-10-24 16:00,2023-10-18 08:00,2023-10-24 16:00,,PT_Normal,,,,,HTFHky7iKUCltOub0DFe/w,hSkd16RCk0OsaiQsUgVyZw,,,Y,0,0,,,2023-02-08 18:30,2023-02-08 18:31,NotPrmUser,NotPrmUser,
144866,27212,54966,178,0,N,1,N,N,CP_Drtn,TT_Task,DT_FixedDUR2,TK_NotStart,DES1040,10% Submittal,,0,0,160,0,0,0,160,0,0,0,,,,2024-01-10 08:00,2024-02-06 16:00,,2024-01-10 08:00,2024-02-06 16:00,2024-01-10 08:00,2024-02-06 16:00,2024-01-10 08:00,2024-02-06 16:00,2024-01-10 08:00,2024-02-06 16:00,,PT_Normal,,,,,ZjcFuDjPc0yK9LQ7n+2KnQ,x7kUXhin4kyG82HGswX4fw,,,Y,0,0,,,2023-02-08 18:30,2023-02-08 18:31,NotPrmUser,NotPrmUser,
144867,27212,54966,178,0,N,1,N,N,CP_Drtn,TT_Task,DT_FixedDUR2,TK_NotStart,DES1050,30% Submittal,,0,0,320,0,0,0,320,0,0,0,,,,2024-02-07 08:00,2024-04-02 16:00,,2024-02-07 08:00,2024-04-02 16:00,2024-02-07 08:00,2024-04-02 16:00,2024-02-07 08:00,2024-04-02 16:00,2024-02-07 08:00,2024-04-02 16:00,,PT_Normal,,,,,TDo/cjsrYU+hbRU60fGHUQ,WHmsMe+YRE2fzmr1p6tzhA,,,Y,0,0,,,2023-02-08 18:30,2023-02-08 18:31,NotPrmUser,NotPrmUser,
144868,27212,54966,178,0,N,1,N,N,CP_Drtn,TT_Task,DT_FixedDUR2,TK_NotStart,DES1060,30% Review,,0,0,80,0,0,0,80,0,0,0,,,,2024-04-03 08:00,2024-04-16 16:00,,2024-04-03 08:00,2024-04-16 16:00,2024-04-03 08:00,2024-04-16 16:00,2024-04-03 08:00,2024-04-16 16:00,2024-04-03 08:00,2024-04-16 16:00,,PT_Normal,,,,,xSfAAJPvUEyMfz0Cmxfbcw,lxcTZea6R0Om4SICt6WBKQ,,,Y,0,0,,,2023-02-08 18:30,2023-02-08 18:31,NotPrmUser,NotPrmUser,
144869,27212,54966,178,0,N,1,N,N,CP_Drtn,TT_Task,DT_FixedDUR2,TK_NotStart,DES1070,60% Submittal,,712,0,448,0,0,0,448,0,0,0,,,,2024-08-20 08:00,2024-11-05 16:00,,2024-04-17 08:00,2024-07-03 16:00,2024-04-17 08:00,2024-07-03 16:00,2024-04-17 08:00,2024-07-03 16:00,2024-08-20 08:00,2024-11-05 16:00,,PT_Normal,,,,,2i/Mlmmii0+mMkpLZ27Vng,zwBs2YA0HkCG5W5Yugx3Wg,,,N,0,0,,,2023-02-08 18:30,2023-02-08 18:31,NotPrmUser,NotPrmUser,
144870,27212,54966,178,0,N,1,N,N,CP_Drtn,TT_Task,DT_FixedDUR2,TK_NotStart,DES1080,60% Review,,712,0,80,0,0,0,80,0,0,0,,,,2024-11-06 08:00,2024-11-19 16:00,,2024-07-04 08:00,2024-07-17 16:00,2024-07-04 08:00,2024-07-17 16:00,2024-07-04 08:00,2024-07-17 16:00,2024-11-06 08:00,2024-11-19 16:00,,PT_Normal,,,,,QlMp2uHWqkGx6+IykHLlEw,Y7c6PJUSTU6FjPsHJYF4Ww,,,N,0,0,,,2023-02-08 18:30,2023-02-08 18:31,NotPrmUser,NotPrmUser,
144871,27212,54966,178,0,N,1,N,N,CP_Drtn,TT_Task,DT_FixedDUR2,TK_NotStart,DES1090,90% Submittal,,712,0,360,0,0,0,360,0,0,0,,,,2024-11-20 08:00,2025-01-21 16:00,,2024-07-18 08:00,2024-09-18 16:00,2024-07-18 08:00,2024-09-18 16:00,2024-07-18 08:00,2024-09-18 16:00,2024-11-20 08:00,2025-01-21 16:00,,PT_Normal,,,,,bQujuJfbE0uWt9zkTftmZQ,DJVAHZtEk0mirjovJ9jwEA,,,N,0,0,,,2023-02-08 18:30,2023-02-08 18:31,NotPrmUser,NotPrmUser,
144872,27212,54966,178,0,N,1,N,N,CP_Drtn,TT_Task,DT_FixedDUR2,TK_NotStart,DES1100,90% Review,,712,0,80,0,0,0,80,0,0,0,,,,2025-01-22 08:00,2025-02-04 16:00,,2024-09-19 08:00,2024-10-02 16:00,2024-09-19 08:00,2024-10-02 16:00,2024-09-19 08:00,2024-10-02 16:00,2025-01-22 08:00,2025-02-04 16:00,,PT_Normal,,,,,i14oF/RqPUa3sR2D/a9eYw,yr/LTfrmd0+LojhF/0wgYQ,,,N,0,0,,,2023-02-08 18:30,2023-02-08 18:31,NotPrmUser,NotPrmUser,
144873,27212,54966,178,0,N,1,N,N,CP_Drtn,TT_Task,DT_FixedDUR2,TK_NotStart,DES1110,100% Submittal,,792,0,160,0,0,0,160,0,0,0,,,,2025-02-19 08:00,2025-03-18 16:00,,2024-10-03 08:00,2024-10-30 16:00,2024-10-03 08:00,2024-10-30 16:00,2024-10-03 08:00,2024-10-30 16:00,2025-02-19 08:00,2025-03-18 16:00,,PT_Normal,,,,,3DGqFPJgb06YbcijDqiEUg,v2acMkT3w02u9VL3SXEh7A,,,N,0,0,,,2023-02-08 18:30,2023-02-08 18:31,NotPrmUser,NotPrmUser,
144874,27212,54966,178,0,N,1,N,N,CP_Drtn,TT_Task,DT_FixedDUR2,TK_NotStart,DES1120,Issue IFC Design Package,,0,0,80,0,0,0,80,0,0,0,,,,2025-03-19 08:00,2025-04-01 16:00,,2025-03-19 08:00,2025-04-01 16:00,2025-03-19 08:00,2025-04-01 16:00,2025-03-19 08:00,2025-04-01 16:00,2025-03-19 08:00,2025-04-01 16:00,,PT_Normal,,,,,uWZ94I+hmUy705m/ynWurQ,MRY/+KD0v02NtcpXZj/ORQ,,,Y,0,0,,,2023-02-08 18:30,2023-02-08 18:31,NotPrmUser,NotPrmUser,
144875,27212,54967,178,0,N,1,N,N,CP_Drtn,TT_Task,DT_FixedDUR2,TK_NotStart,DES1130,60% Submittal,,840,0,400,0,0,0,400,0,0,0,,,,2024-08-28 08:00,2024-11-05 16:00,,2024-04-03 08:00,2024-06-11 16:00,2024-04-03 08:00,2024-06-11 16:00,2024-04-03 08:00,2024-06-11 16:00,2024-08-28 08:00,2024-11-05 16:00,,PT_Normal,,,,,WEyFWlO4f0OTf8vvN8n5tA,KRa4NZqFhUKkuZn39s4hNQ,,,N,0,0,,,2023-02-08 18:30,2023-02-08 18:31,NotPrmUser,NotPrmUser,
144876,27212,54967,178,0,N,1,N,N,CP_Drtn,TT_Task,DT_FixedDUR2,TK_NotStart,DES1140,60% Review,,920,0,80,0,0,0,80,0,0,0,,,,2024-11-20 08:00,2024-12-03 16:00,,2024-06-12 08:00,2024-06-25 16:00,2024-06-12 08:00,2024-06-25 16:00,2024-06-12 08:00,2024-06-25 16:00,2024-11-20 08:00,2024-12-03 16:00,,PT_Normal,,,,,Dah04ZcyOkuNeMVoMl54mQ,2FuaFspuX028m0uNe0k1vg,,,N,0,0,,,2023-02-08 18:30,2023-02-08 18:31,NotPrmUser,NotPrmUser,
144877,27212,54967,178,0,N,1,N,N,CP_Drtn,TT_Task,DT_FixedDUR2,TK_NotStart,DES1150,90% Submittal,,1200,0,320,0,0,0,320,0,0,0,,,,2025-01-22 08:00,2025-03-18 16:00,,2024-06-26 08:00,2024-08-20 16:00,2024-06-26 08:00,2024-08-20 16:00,2024-06-26 08:00,2024-08-20 16:00,2025-01-22 08:00,2025-03-18 16:00,,PT_Normal,,,,,c4W31z/W0UiaIn90dbFP/w,8yEuZfx4o0G5DqvRoFlWTQ,,,N,0,0,,,2023-02-08 18:30,2023-02-08 18:31,NotPrmUser,NotPrmUser,
144878,27212,54967,178,0,N,1,N,N,CP_Drtn,TT_Task,DT_FixedDUR2,TK_NotStart,DES1160,90% Review,,1200,0,80,0,0,0,80,0,0,0,,,,2025-03-19 08:00,2025-04-01 16:00,,2024-08-21 08:00,2024-09-03 16:00,2024-08-21 08:00,2024-09-03 16:00,2024-08-21 08:00,2024-09-03 16:00,2025-03-19 08:00,2025-04-01 16:00,,PT_Normal,,,,,oPLmqirpokyVkQoANlG0sg,b6UZVXmexkOTG09LnbZOBw,,,N,0,0,,,2023-02-08 18:30,2023-02-08 18:31,NotPrmUser,NotPrmUser,
144879,27212,54967,178,0,N,1,N,N,CP_Drtn,TT_Task,DT_FixedDUR2,TK_NotStart,DES1170,100% Submittal,,1200,960,160,0,0,0,160,0,0,0,,,,2025-04-02 08:00,2025-04-29 16:00,,2024-09-04 08:00,2024-10-01 16:00,2024-09-04 08:00,2024-10-01 16:00,2024-09-04 08:00,2024-10-01 16:00,2025-04-02 08:00,2025-04-29 16:00,,PT_Normal,,,,,PSsF572Tc0udH5k1KPnyuw,Vf/iegFQBEytIeaMsucWQw,,,N,0,0,,,2023-02-08 18:30,2023-02-08 18:31,NotPrmUser,NotPrmUser,
144880,27212,54967,178,0,N,1,N,N,CP_Drtn,TT_Task,DT_FixedDUR2,TK_NotStart,DES1180,Issue IFC Design Package,,240,0,80,0,0,0,80,0,0,0,,,,2025-04-30 08:00,2025-05-13 16:00,,2025-03-19 08:00,2025-04-01 16:00,2025-03-19 08:00,2025-04-01 16:00,2025-03-19 08:00,2025-04-01 16:00,2025-04-30 08:00,2025-05-13 16:00,,PT_Normal,,,,,AYLAJL5At0Ow9e3KrXgFjg,ZCd39MJ2S0aJvmB5IsIISw,,,N,0,0,,,2023-02-08 18:30,2023-02-08 18:31,NotPrmUser,NotPrmUser,
144881,27212,54968,178,0,N,1,N,N,CP_Drtn,TT_Task,DT_FixedDUR2,TK_NotStart,DES1190,Issue Services Worksheet to Design Firms,,792,0,160,0,0,0,160,0,0,0,,,,2024-06-25 08:00,2024-07-22 16:00,,2024-02-07 08:00,2024-03-05 16:00,2024-02-07 08:00,2024-03-05 16:00,2024-02-07 08:00,2024-03-05 16:00,2024-06-25 08:00,2024-07-22 16:00,,PT_Normal,,,,,/a0ZHkRhmkWNGONxCBzO0g,FWI0PKoX+EKmcrY3ZWJQWw,,,N,0,0,,,2023-02-08 18:30,2023-02-08 18:31,NotPrmUser,NotPrmUser,
144882,27212,54969,178,0,N,1,N,N,CP_Drtn,TT_Task,DT_FixedDUR2,TK_NotStart,DES1220,SED Design,,5344,0,240,0,0,0,240,0,0,0,,,,2026-08-03 08:00,2026-09-11 16:00,,2024-01-10 08:00,2024-02-20 16:00,2024-01-10 08:00,2024-02-20 16:00,2024-01-10 08:00,2024-02-20 16:00,2026-08-03 08:00,2026-09-11 16:00,,PT_Normal,,,,,8tlEXm/rBUS6L+uZ/Ko8/Q,IeAQGkOJyEmoe78DGY/jJw,,,N,0,0,,,2023-02-08 18:30,2023-02-08 18:31,NotPrmUser,NotPrmUser,
144883,27212,54969,178,0,N,1,N,N,CP_Drtn,TT_Task,DT_FixedDUR2,TK_NotStart,DES1230,Issue IFC Design Package,,5344,4496,160,0,0,0,160,0,0,0,,,,2026-09-14 08:00,2026-10-09 16:00,,2024-02-21 08:00,2024-03-19 16:00,2024-02-21 08:00,2024-03-19 16:00,2024-02-21 08:00,2024-03-19 16:00,2026-09-14 08:00,2026-10-09 16:00,,PT_Normal,,,,,qE9V4Zu0OEyelj2b6+PhXQ,l7qRoOtVl0GGqPjQDu3YQw,,,N,0,0,,,2023-02-08 18:30,2023-02-08 18:31,NotPrmUser,NotPrmUser,
144884,27212,54971,178,0,N,1,N,N,CP_Drtn,TT_Task,DT_FixedDUR2,TK_NotStart,PRO1000,Civil BOM - Long Lead @ 30%,,680,0,120,0,0,0,120,0,0,0,,,,2024-08-14 08:00,2024-09-03 16:00,,2024-04-17 08:00,2024-05-07 16:00,2024-04-17 08:00,2024-05-07 16:00,2024-04-17 08:00,2024-05-07 16:00,2024-08-14 08:00,2024-09-03 16:00,,PT_Normal,,,,,eZgHKUW7bkyRa/afTYHluw,GMb+QKvowUq9gO98lqfaYg,,,N,0,0,,,2023-02-08 18:30,2023-02-08 18:31,NotPrmUser,NotPrmUser,
144885,27212,54971,178,0,N,1,N,N,CP_Drtn,TT_Task,DT_FixedDUR2,TK_NotStart,PRO1020,Electrical BOM - Long Lead @ 60%,,920,0,120,0,0,0,120,0,0,0,,,,2024-12-04 08:00,2024-12-24 16:00,,2024-06-26 08:00,2024-07-16 16:00,2024-06-26 08:00,2024-07-16 16:00,2024-06-26 08:00,2024-07-16 16:00,2024-12-04 08:00,2024-12-24 16:00,,PT_Normal,,,,,aqL8dUu7pkWd2/+7U6cAgg,vaB3FVyVT0mkgi+B05H7LQ,,,N,0,0,,,2023-02-08 18:30,2023-02-08 18:31,NotPrmUser,NotPrmUser,
144886,27212,54971,178,0,N,1,N,N,CP_Drtn,TT_Task,DT_FixedDUR2,TK_NotStart,PRO1040,BOM - Short Lead @ 60%,,712,0,120,0,0,0,120,0,0,0,,,,2025-02-05 08:00,2025-02-25 16:00,,2024-10-03 08:00,2024-10-23 16:00,2024-10-03 08:00,2024-10-23 16:00,2024-10-03 08:00,2024-10-23 16:00,2025-02-05 08:00,2025-02-25 16:00,,PT_Normal,,,,,HjNhwiZHhU+cDwCjRoQfHA,5ugCkEdVK06i2UaKt4dSVA,,,N,0,0,,,2023-02-08 18:30,2023-02-08 18:31,NotPrmUser,NotPrmUser,
144887,27212,54972,178,0,N,1,N,N,CP_Drtn,TT_Task,DT_FixedDUR2,TK_NotStart,PER1000,CalTrans Permit,,0,0,2000,0,0,0,2000,0,0,0,,,,2024-04-17 08:00,2025-04-01 16:00,,2024-04-17 08:00,2025-04-01 16:00,2024-04-17 08:00,2025-04-01 16:00,2024-04-17 08:00,2025-04-01 16:00,2024-04-17 08:00,2025-04-01 16:00,,PT_Normal,,,,,Afzuk67bUEqvB9SBBS1+7A,LX6fUekVGESXVik9Aj8J1Q,,,Y,0,0,,,2023-02-08 18:30,2023-02-08 18:31,NotPrmUser,NotPrmUser,
144888,27212,54972,178,0,N,1,N,N,CP_Drtn,TT_Task,DT_FixedDUR2,TK_NotStart,PER1010,City & County Permits,,1200,1200,800,0,0,0,800,0,0,0,,,,2024-11-13 08:00,2025-04-01 16:00,,2024-04-17 08:00,2024-09-03 16:00,2024-04-17 08:00,2024-09-03 16:00,2024-04-17 08:00,2024-09-03 16:00,2024-11-13 08:00,2025-04-01 16:00,,PT_Normal,,,,,ycTtgRB2KkCshw379MPnKw,OS4KjBge2Emelplcm9kiKA,,,N,0,0,,,2023-02-08 18:30,2023-02-08 18:31,NotPrmUser,NotPrmUser,
144889,27212,54972,178,0,N,1,N,N,CP_Drtn,TT_Task,DT_FixedDUR2,TK_NotStart,PER1020,Other Permit (TBD),,1200,1200,800,0,0,0,800,0,0,0,,,,2024-11-13 08:00,2025-04-01 16:00,,2024-04-17 08:00,2024-09-03 16:00,2024-04-17 08:00,2024-09-03 16:00,2024-04-17 08:00,2024-09-03 16:00,2024-11-13 08:00,2025-04-01 16:00,,PT_Normal,,,,,meyw2IwFzEWJue2wfp4Xgg,uZ0/WgqEXEGazPB3WS6kMQ,,,N,0,0,,,2023-02-08 18:30,2023-02-08 18:31,NotPrmUser,NotPrmUser,
144890,27212,54973,178,0,N,1,N,N,CP_Drtn,TT_Task,DT_FixedDUR2,TK_NotStart,PUB1000,Public Affairs / Community Outreach,,5416,5416,800,0,0,0,800,0,0,0,,,,2027-02-08 08:00,2027-06-25 16:00,,2024-07-04 08:00,2024-11-20 16:00,2024-07-04 08:00,2024-11-20 16:00,2024-07-04 08:00,2024-11-20 16:00,2027-02-08 08:00,2027-06-25 16:00,,PT_Normal,,,,,Cfo404vQ3EOJjNQp4EYhTA,PFZIdGQXDE6CyNt4a6lIIQ,,,N,0,0,,,2023-02-08 18:30,2023-02-08 18:31,NotPrmUser,NotPrmUser,
144891,27212,54974,178,0,N,1,N,N,CP_Drtn,TT_Task,DT_FixedDUR2,TK_NotStart,LAN1000,Land Rights and Easement Acquisition,,880,880,1200,0,0,0,1200,0,0,0,,,,2024-09-04 08:00,2025-04-01 16:00,,2024-04-03 08:00,2024-10-29 16:00,2024-04-03 08:00,2024-10-29 16:00,2024-04-03 08:00,2024-10-29 16:00,2024-09-04 08:00,2025-04-01 16:00,,PT_Normal,,,,,/4BepT6bX0SofQxXY+Qi5w,lFEnosgg8U2UPzK3yOGtIg,,,N,0,0,,,2023-02-08 18:30,2023-02-08 18:31,NotPrmUser,NotPrmUser,
144892,27212,54974,178,0,N,1,N,N,CP_Drtn,TT_Task,DT_FixedDUR2,TK_NotStart,LAN1010,Tribal Land Rights,,880,880,1200,0,0,0,1200,0,0,0,,,,2024-09-04 08:00,2025-04-01 16:00,,2024-04-03 08:00,2024-10-29 16:00,2024-04-03 08:00,2024-10-29 16:00,2024-04-03 08:00,2024-10-29 16:00,2024-09-04 08:00,2025-04-01 16:00,,PT_Normal,,,,,xaVRj8Z1N0Kgr6BocQQ0qQ,BtOx+7bGl0ihOvOkGnegmA,,,N,0,0,,,2023-02-08 18:30,2023-02-08 18:31,NotPrmUser,NotPrmUser,
144893,27212,54974,178,0,N,1,N,N,CP_Drtn,TT_Task,DT_FixedDUR2,TK_NotStart,LAN1020,Laydown Yards,,880,880,1200,0,0,0,1200,0,0,0,,,,2024-09-04 08:00,2025-04-01 16:00,,2024-04-03 08:00,2024-10-29 16:00,2024-04-03 08:00,2024-10-29 16:00,2024-04-03 08:00,2024-10-29 16:00,2024-09-04 08:00,2025-04-01 16:00,,PT_Normal,,,,,8yeINOQ7UUuOPublj1ZLOA,O/UCCp5uVUWyDEeiOIZg/A,,,N,0,0,,,2023-02-08 18:30,2023-02-08 18:31,NotPrmUser,NotPrmUser,
144894,27212,54975,178,0,N,1,N,N,CP_Drtn,TT_Task,DT_FixedDUR2,TK_NotStart,ENV1000,10% Environmental Submittal,,760,0,200,0,0,0,200,0,0,0,,,,2024-05-22 08:00,2024-06-25 16:00,,2024-01-10 08:00,2024-02-13 16:00,2024-01-10 08:00,2024-02-13 16:00,2024-01-10 08:00,2024-02-13 16:00,2024-05-22 08:00,2024-06-25 16:00,,PT_Normal,,,,,N01I/U9+MUKX/zWOD5qvmw,TThTv2kg80WcZpjBnDER8Q,,,N,0,0,,,2023-02-08 18:30,2023-02-08 18:31,NotPrmUser,NotPrmUser,
144895,27212,54975,178,0,N,1,N,N,CP_Drtn,TT_Task,DT_FixedDUR2,TK_NotStart,ENV1010,10% Environmental Review,,760,0,120,0,0,0,120,0,0,0,,,,2024-06-26 08:00,2024-07-16 16:00,,2024-02-14 08:00,2024-03-05 16:00,2024-02-14 08:00,2024-03-05 16:00,2024-02-14 08:00,2024-03-05 16:00,2024-06-26 08:00,2024-07-16 16:00,,PT_Normal,,,,,s0pb21RjWUOUSnDbXZkLHA,+Vu9BYqOz0WkGGuafgGJOg,,,N,0,0,,,2023-02-08 18:30,2023-02-08 18:31,NotPrmUser,NotPrmUser,
144896,27212,54975,178,0,N,1,N,N,CP_Drtn,TT_Task,DT_FixedDUR2,TK_NotStart,ENV1020,30% Environmental Submittal,,760,0,200,0,0,0,200,0,0,0,,,,2024-11-06 08:00,2024-12-10 16:00,,2024-06-26 08:00,2024-07-30 16:00,2024-06-26 08:00,2024-07-30 16:00,2024-06-26 08:00,2024-07-30 16:00,2024-11-06 08:00,2024-12-10 16:00,,PT_Normal,,,,,79qjiEcCgEGA+1baOppgnw,Nj960Tjv/USJL08FyyrUYQ,,,N,0,0,,,2023-02-08 18:30,2023-02-08 18:31,NotPrmUser,NotPrmUser,
144897,27212,54975,178,0,N,1,N,N,CP_Drtn,TT_Task,DT_FixedDUR2,TK_NotStart,ENV1030,30% Environmental Review,,760,0,120,0,0,0,120,0,0,0,,,,2024-12-11 08:00,2024-12-31 16:00,,2024-07-31 08:00,2024-08-20 16:00,2024-07-31 08:00,2024-08-20 16:00,2024-07-31 08:00,2024-08-20 16:00,2024-12-11 08:00,2024-12-31 16:00,,PT_Normal,,,,,IclBEPZPxUexRl03BA96hA,e4euqnyYSUWHeXIFzynIpQ,,,N,0,0,,,2023-02-08 18:30,2023-02-08 18:31,NotPrmUser,NotPrmUser,
144898,27212,54975,178,0,N,1,N,N,CP_Drtn,TT_Task,DT_FixedDUR2,TK_NotStart,ENV1040,60% Environmental Submittal,,760,0,280,0,0,0,280,0,0,0,,,,2025-01-01 08:00,2025-02-18 16:00,,2024-08-21 08:00,2024-10-08 16:00,2024-08-21 08:00,2024-10-08 16:00,2024-08-21 08:00,2024-10-08 16:00,2025-01-01 08:00,2025-02-18 16:00,,PT_Normal,,,,,NZ+/Wc3aa0aQL3P2gzq0jA,VGztxVBQnU+/KKGORQnEwQ,,,N,0,0,,,2023-02-08 18:30,2023-02-08 18:31,NotPrmUser,NotPrmUser,
144899,27212,54975,178,0,N,1,N,N,CP_Drtn,TT_Task,DT_FixedDUR2,TK_NotStart,ENV1050,60% Environmental Release,,880,880,120,0,0,0,120,0,0,0,,,,2025-03-12 08:00,2025-04-01 16:00,,2024-10-09 08:00,2024-10-29 16:00,2024-10-09 08:00,2024-10-29 16:00,2024-10-09 08:00,2024-10-29 16:00,2025-03-12 08:00,2025-04-01 16:00,,PT_Normal,,,,,QUfnfbwpMk2pits1C050XQ,EMn6NwLJQken/l8lP2c2cg,,,N,0,0,,,2023-02-08 18:30,2023-02-08 18:31,NotPrmUser,NotPrmUser,
144900,27212,54975,178,0,N,1,N,N,CP_Drtn,TT_Task,DT_FixedDUR2,TK_NotStart,ENV1060,BIA NEPA Submittal,,760,0,80,0,0,0,80,0,0,0,,,,2025-02-19 08:00,2025-03-04 16:00,,2024-10-09 08:00,2024-10-22 16:00,2024-10-09 08:00,2024-10-22 16:00,2024-10-09 08:00,2024-10-22 16:00,2025-02-19 08:00,2025-03-04 16:00,,PT_Normal,,,,,FHG5iovdJUSJLk0tXJAIkw,lMeUKTjGm0KS86ciQTD2vA,,,N,0,0,,,2023-02-08 18:30,2023-02-08 18:31,NotPrmUser,NotPrmUser,
144901,27212,54975,178,0,N,1,N,N,CP_Drtn,TT_Task,DT_FixedDUR2,TK_NotStart,ENV1070,"BIA Received (Add 250 days, if needed)",,760,760,160,0,0,0,160,0,0,0,,,,2025-03-05 08:00,2025-04-01 16:00,,2024-10-23 08:00,2024-11-19 16:00,2024-10-23 08:00,2024-11-19 16:00,2024-10-23 08:00,2024-11-19 16:00,2025-03-05 08:00,2025-04-01 16:00,,PT_Normal,,,,,AvPi9vTFW0usyHS2xacvEA,JgQF3drd7Umbi79YkUnyiA,,,N,0,0,,,2023-02-08 18:30,2023-02-08 18:31,NotPrmUser,NotPrmUser,
144902,27212,54965,178,0,N,1,N,N,CP_Drtn,TT_Task,DT_FixedDUR2,TK_NotStart,DES1010,Seismic / Geotech Submittal,,760,0,200,0,0,0,200,0,0,0,,,,2024-07-17 08:00,2024-08-20 16:00,,2024-03-06 08:00,2024-04-09 16:00,2024-03-06 08:00,2024-04-09 16:00,2024-03-06 08:00,2024-04-09 16:00,2024-07-17 08:00,2024-08-20 16:00,,PT_Normal,,,,,AQnJCO8ZOEuWBreBpP6xQg,9D4wvFqUQ06UxweYtBlkCw,,,N,0,0,,,2023-02-08 18:30,2023-02-08 18:31,NotPrmUser,NotPrmUser,
144903,27212,54965,178,0,N,1,N,N,CP_Drtn,TT_Task,DT_FixedDUR2,TK_NotStart,DES1020,Potholing Submittal,,760,0,200,0,0,0,200,0,0,0,,,,2024-08-21 08:00,2024-09-24 16:00,,2024-04-10 08:00,2024-05-14 16:00,2024-04-10 08:00,2024-05-14 16:00,2024-04-10 08:00,2024-05-14 16:00,2024-08-21 08:00,2024-09-24 16:00,,PT_Normal,,,,,m0aOdUBh4kyEEhh0yC2BoQ,0wdvaC4vS0K0bsmX9N8xKQ,,,N,0,0,,,2023-02-08 18:30,2023-02-08 18:31,NotPrmUser,NotPrmUser,
144904,27212,54965,178,0,N,1,N,N,CP_Drtn,TT_Task,DT_FixedDUR2,TK_NotStart,DES1030,Potholing Release /Perform Potholing,,760,0,240,0,0,0,240,0,0,0,,,,2024-09-25 08:00,2024-11-05 16:00,,2024-05-15 08:00,2024-06-25 16:00,2024-05-15 08:00,2024-06-25 16:00,2024-05-15 08:00,2024-06-25 16:00,2024-09-25 08:00,2024-11-05 16:00,,PT_Normal,,,,,h+tDraXzPUuEooMg2DUcEQ,kLqeohfyBEC5pAG/X/drDw,,,N,0,0,,,2023-02-08 18:30,2023-02-08 18:31,NotPrmUser,NotPrmUser,
144905,27212,54977,178,0,N,1,N,N,CP_Drtn,TT_Task,DT_FixedDUR2,TK_NotStart,PCON100,Initiate Performance Partnering Process @ 60%,,1112,0,40,0,0,0,40,0,0,0,,,,2025-01-29 08:00,2025-02-04 16:00,,2024-07-18 08:00,2024-07-24 16:00,2024-07-18 08:00,2024-07-24 16:00,2024-07-18 08:00,2024-07-24 16:00,2025-01-29 08:00,2025-02-04 16:00,,PT_Normal,,,,,TjnqLH2WsEiR4Sxk5reWWA,jw+D3KywcEuIAlsfnKoYEg,,,N,0,0,,,2023-02-08 18:30,2023-02-08 18:31,NotPrmUser,NotPrmUser,
144906,27212,54977,178,0,N,1,N,N,CP_Drtn,TT_Task,DT_FixedDUR2,TK_NotStart,PCON110,Receive Estimate from Contractor,,1112,0,120,0,0,0,120,0,0,0,,,,2025-02-05 08:00,2025-02-25 16:00,,2024-07-25 08:00,2024-08-14 16:00,2024-07-25 08:00,2024-08-14 16:00,2024-07-25 08:00,2024-08-14 16:00,2025-02-05 08:00,2025-02-25 16:00,,PT_Normal,,,,,O6m/9tV15kK9w7sXOOkTvA,n0u7uGu/vU6J+gbgsWC5HA,,,N,0,0,,,2023-02-08 18:30,2023-02-08 18:31,NotPrmUser,NotPrmUser,
144907,27212,54977,178,0,N,1,N,N,CP_Drtn,TT_Task,DT_FixedDUR2,TK_NotStart,PCON120,Bid Estimate Negotiations,,1112,0,80,0,0,0,80,0,0,0,,,,2025-02-26 08:00,2025-03-11 16:00,,2024-08-15 08:00,2024-08-28 16:00,2024-08-15 08:00,2024-08-28 16:00,2024-08-15 08:00,2024-08-28 16:00,2025-02-26 08:00,2025-03-11 16:00,,PT_Normal,,,,,RyiGkPVgpEmSOnLbGf6OLw,vNPPPdhHt0KObSf2EqvyTQ,,,N,0,0,,,2023-02-08 18:30,2023-02-08 18:31,NotPrmUser,NotPrmUser,
144908,27212,54977,178,0,N,1,N,N,CP_Drtn,TT_Task,DT_FixedDUR2,TK_NotStart,PCON130,Revise Estimate based on IFC,,1112,0,40,0,0,0,40,0,0,0,,,,2025-03-12 08:00,2025-03-18 16:00,,2024-08-29 08:00,2024-09-04 16:00,2024-08-29 08:00,2024-09-04 16:00,2024-08-29 08:00,2024-09-04 16:00,2025-03-12 08:00,2025-03-18 16:00,,PT_Normal,,,,,EgAa1TWt+Eamioz1FRQyUw,l2kQZec560ibZG2qNdvczA,,,N,0,0,,,2023-02-08 18:30,2023-02-08 18:31,NotPrmUser,NotPrmUser,
144909,27212,54977,178,0,N,1,N,N,CP_Drtn,TT_Task,DT_FixedDUR2,TK_NotStart,PCON140,Issue Release,,1112,1112,80,0,0,0,80,0,0,0,,,,2025-03-19 08:00,2025-04-01 16:00,,2024-09-05 08:00,2024-09-18 16:00,2024-09-05 08:00,2024-09-18 16:00,2024-09-05 08:00,2024-09-18 16:00,2025-03-19 08:00,2025-04-01 16:00,,PT_Normal,,,,,bfLFaXYy2EiYeS/68paCdw,ZdX48ttcl0W1rv6N2E02Zg,,,N,0,0,,,2023-02-08 18:30,2023-02-08 18:31,NotPrmUser,NotPrmUser,
144910,27212,54979,178,0,N,1,N,N,CP_Drtn,TT_Task,DT_FixedDUR2,TK_NotStart,PCON200,Civil Pre-Construction Meeting (Civil Construction Ready),,0,0,40,0,0,0,40,0,0,0,,,,2025-04-02 08:00,2025-04-08 16:00,,2025-04-02 08:00,2025-04-08 16:00,2025-04-02 08:00,2025-04-08 16:00,2025-04-02 08:00,2025-04-08 16:00,2025-04-02 08:00,2025-04-08 16:00,,PT_Normal,,,,,qap9UUInvUqB/+G01ZVZdA,AJG+0UmfCU66T8RtYSTbhA,,,Y,0,0,,,2023-02-08 18:30,2023-02-08 18:31,NotPrmUser,NotPrmUser,
144911,27212,54979,178,0,N,1,N,N,CP_Drtn,TT_Task,DT_FixedDUR2,TK_NotStart,PCON210,Electrical - Pre-Construction Meeting (Electical Construction Ready),,240,0,40,0,0,0,40,0,0,0,,,,2025-05-14 08:00,2025-05-20 16:00,,2025-04-02 08:00,2025-04-08 16:00,2025-04-02 08:00,2025-04-08 16:00,2025-04-02 08:00,2025-04-08 16:00,2025-05-14 08:00,2025-05-20 16:00,,PT_Normal,,,,,Genrl+DvWUeB/ZlKp6FTkA,JUHP8GlfBEueX2FwyyFAQw,,,N,0,0,,,2023-02-08 18:30,2023-02-08 18:31,NotPrmUser,NotPrmUser,
144912,27212,54978,178,0,N,1,N,N,CP_Drtn,TT_Task,DT_FixedDUR2,TK_NotStart,PCON150,Initiate Performance Partnering Process @ 60%,,1480,0,40,0,0,0,40,0,0,0,,,,2025-03-12 08:00,2025-03-18 16:00,,2024-06-26 08:00,2024-07-02 16:00,2024-06-26 08:00,2024-07-02 16:00,2024-06-26 08:00,2024-07-02 16:00,2025-03-12 08:00,2025-03-18 16:00,,PT_Normal,,,,,5IN8riG6RE2lqPjN85IWyQ,5aU6a1S4TUC3AVICuuxqdA,,,N,0,0,,,2023-02-08 18:30,2023-02-08 18:31,NotPrmUser,NotPrmUser,
144913,27212,54978,178,0,N,1,N,N,CP_Drtn,TT_Task,DT_FixedDUR2,TK_NotStart,PCON160,Receive Estimate from Contractor,,1480,0,120,0,0,0,120,0,0,0,,,,2025-03-19 08:00,2025-04-08 16:00,,2024-07-03 08:00,2024-07-23 16:00,2024-07-03 08:00,2024-07-23 16:00,2024-07-03 08:00,2024-07-23 16:00,2025-03-19 08:00,2025-04-08 16:00,,PT_Normal,,,,,CGP5A1ojgUCPqLQPCT7Cqw,+lvob3Tz+E2XJv+zzlfl3Q,,,N,0,0,,,2023-02-08 18:30,2023-02-08 18:31,NotPrmUser,NotPrmUser,
144914,27212,54978,178,0,N,1,N,N,CP_Drtn,TT_Task,DT_FixedDUR2,TK_NotStart,PCON170,Bid Estimate Negotiations,,1480,0,80,0,0,0,80,0,0,0,,,,2025-04-09 08:00,2025-04-22 16:00,,2024-07-24 08:00,2024-08-06 16:00,2024-07-24 08:00,2024-08-06 16:00,2024-07-24 08:00,2024-08-06 16:00,2025-04-09 08:00,2025-04-22 16:00,,PT_Normal,,,,,ntzipaFwVE6YM2R+yA8bQQ,lDUhN6OdzEmpNFUckTLb/w,,,N,0,0,,,2023-02-08 18:30,2023-02-08 18:31,NotPrmUser,NotPrmUser,
144915,27212,54978,178,0,N,1,N,N,CP_Drtn,TT_Task,DT_FixedDUR2,TK_NotStart,PCON180,Revise Estimate based on IFC,,1480,0,40,0,0,0,40,0,0,0,,,,2025-04-23 08:00,2025-04-29 16:00,,2024-08-07 08:00,2024-08-13 16:00,2024-08-07 08:00,2024-08-13 16:00,2024-08-07 08:00,2024-08-13 16:00,2025-04-23 08:00,2025-04-29 16:00,,PT_Normal,,,,,hG8ZasATZES4bKAEKj4KgQ,b2pZUuEmfkutMHefttXPmw,,,N,0,0,,,2023-02-08 18:30,2023-02-08 18:31,NotPrmUser,NotPrmUser,
144916,27212,54978,178,0,N,1,N,N,CP_Drtn,TT_Task,DT_FixedDUR2,TK_NotStart,PCON190,Issue Release,,1480,1240,80,0,0,0,80,0,0,0,,,,2025-04-30 08:00,2025-05-13 16:00,,2024-08-14 08:00,2024-08-27 16:00,2024-08-14 08:00,2024-08-27 16:00,2024-08-14 08:00,2024-08-27 16:00,2025-04-30 08:00,2025-05-13 16:00,,PT_Normal,,,,,niSkR9UmoUCwViyWdHkfTA,xYg2aARBpkqlQypLheJANw,,,N,0,0,,,2023-02-08 18:30,2023-02-08 18:31,NotPrmUser,NotPrmUser,
144917,27212,54971,178,0,N,1,N,N,CP_Drtn,TT_Task,DT_FixedDUR2,TK_NotStart,PRO1010,Order Long Lead Civil Material,,680,680,1200,0,0,0,1200,0,0,0,,,,2024-09-04 08:00,2025-04-01 16:00,,2024-05-08 08:00,2024-12-03 16:00,2024-05-08 08:00,2024-12-03 16:00,2024-05-08 08:00,2024-12-03 16:00,2024-09-04 08:00,2025-04-01 16:00,,PT_Normal,,,,,RHkafBKEl0K7QYuXUog2sw,ZA8JMi0nvU6MPTvZ8tNIXA,,,N,0,0,,,2023-02-08 18:30,2023-02-08 18:31,NotPrmUser,NotPrmUser,
144918,27212,54971,178,0,N,1,N,N,CP_Drtn,TT_Task,DT_FixedDUR2,TK_NotStart,PRO1050,Order Short Lead Materials,,712,712,200,0,0,0,200,0,0,0,,,,2025-02-26 08:00,2025-04-01 16:00,,2024-10-24 08:00,2024-11-27 16:00,2024-10-24 08:00,2024-11-27 16:00,2024-10-24 08:00,2024-11-27 16:00,2025-02-26 08:00,2025-04-01 16:00,,PT_Normal,,,,,1hBV7h/vKkKamjYSIq0X1A,tMEVfnN04UWZ0R9SFo8b0w,,,N,0,0,,,2023-02-08 18:30,2023-02-08 18:31,NotPrmUser,NotPrmUser,
144919,27212,54971,178,0,N,1,N,N,CP_Drtn,TT_Task,DT_FixedDUR2,TK_NotStart,PRO1030,Order Long Lead Electrical Materials,,920,680,800,0,0,0,800,0,0,0,,,,2024-12-25 08:00,2025-05-13 16:00,,2024-07-17 08:00,2024-12-03 16:00,2024-07-17 08:00,2024-12-03 16:00,2024-07-17 08:00,2024-12-03 16:00,2024-12-25 08:00,2025-05-13 16:00,,PT_Normal,,,,,fZrQeOrSfk2NgWgjjFUmAQ,+0Hyn/5GVkq6vv5IdWGAEA,,,N,0,0,,,2023-02-08 18:30,2023-02-08 18:31,NotPrmUser,NotPrmUser,
144920,27212,54981,178,0,N,1,N,N,CP_Phys,TT_Task,DT_FixedRate,TK_NotStart,CON2000,Civil Construction (Trenching 300 feet/day),7730,0,0,2816,0,5632,5632,2816,0,0,0,,,,2025-04-09 08:00,2026-08-13 16:00,,2025-04-09 08:00,2026-08-13 16:00,2025-04-09 08:00,2026-08-13 16:00,2025-04-09 08:00,2026-08-13 16:00,2025-04-09 08:00,2026-08-13 16:00,,PT_Normal,,,,,74c1PZAKlkyjmVM3najrMQ,6IQWsYd3IkujuSYMuHP/eg,,,Y,0,0,,,2023-02-08 18:30,2023-02-08 19:11,NotPrmUser,NotPrmUser,
144921,27212,54982,178,0,N,1,N,N,CP_Drtn,TT_Task,DT_FixedDUR2,TK_NotStart,CON3000,Electrical Construction,7786,0,0,2576,0,1288,1288,2576,0,0,0,,,,2025-05-21 08:00,2026-08-13 16:00,,2025-05-21 08:00,2026-08-13 16:00,2025-05-21 08:00,2026-08-13 16:00,2025-05-21 08:00,2026-08-13 16:00,2025-05-21 08:00,2026-08-13 16:00,,PT_Normal,,,,,PC6afYq0PU2naSfwMTjcvw,Wv0v4pP7XkWGUwhz+oCPAA,,,Y,0,0,,,2023-02-08 18:30,2023-02-08 19:36,NotPrmUser,NotPrmUser,
144922,27212,54983,178,0,N,1,N,N,CP_Drtn,TT_Task,DT_FixedDUR2,TK_NotStart,CON4000,Service Cutover,,848,0,2216,0,0,0,2216,0,0,0,,,,2025-12-18 08:00,2027-01-08 16:00,,2025-07-23 08:00,2026-08-13 16:00,2025-07-23 08:00,2026-08-13 16:00,2025-07-23 08:00,2026-08-13 16:00,2025-12-18 08:00,2027-01-08 16:00,,PT_Normal,,,,,1dLDEZD2VU+Kj5cBcSC0tg,NudHoCJuP0ujTovTtXrR2w,,,N,0,0,,,2023-02-08 18:30,2023-02-08 18:31,NotPrmUser,NotPrmUser,
144923,27212,54984,178,0,N,1,N,N,CP_Drtn,TT_Task,DT_FixedDUR2,TK_NotStart,CON5000,Scada Construction,,848,0,520,0,0,0,520,0,0,0,,,,2026-10-12 08:00,2027-01-08 16:00,,2026-05-15 08:00,2026-08-13 16:00,2026-05-15 08:00,2026-08-13 16:00,2026-05-15 08:00,2026-08-13 16:00,2026-10-12 08:00,2027-01-08 16:00,,PT_Normal,,,,,3xBn+VXKKE21ObXm+XS3xQ,JUC7bIbJY0ecJmVHljDQJw,,,N,0,0,,,2023-02-08 18:30,2023-02-08 18:31,NotPrmUser,NotPrmUser,
144924,27212,54985,178,0,N,1,N,N,CP_Drtn,TT_Task,DT_FixedDUR2,TK_NotStart,CON6000,Substation Construction,,848,0,520,0,0,0,520,0,0,0,,,,2026-10-12 08:00,2027-01-08 16:00,,2026-05-15 08:00,2026-08-13 16:00,2026-05-15 08:00,2026-08-13 16:00,2026-05-15 08:00,2026-08-13 16:00,2026-10-12 08:00,2027-01-08 16:00,,PT_Normal,,,,,X0/KqDJLhUi/gJTBOgn6ww,4HIH2JkN8kW14ORCWMzgGQ,,,N,0,0,,,2023-02-08 18:30,2023-02-08 18:31,NotPrmUser,NotPrmUser,
144925,27212,54986,178,0,N,1,N,N,CP_Drtn,TT_Task,DT_FixedDrtn,TK_NotStart,CON7000,Overhead RFS (1000 feet per day),7785,0,0,848,0,848,848,848,0,0,0,,,,2026-08-14 08:00,2027-01-08 16:00,,2026-08-14 08:00,2027-01-08 16:00,2026-08-14 08:00,2027-01-08 16:00,2026-08-14 08:00,2027-01-08 16:00,2026-08-14 08:00,2027-01-08 16:00,,PT_Normal,,,,,j1EzAf/7ek20fPkmFlig0w,BqVuw8+CeEiJVEp5IttZhQ,,,Y,0,0,,,2023-02-08 18:30,2023-02-08 18:31,NotPrmUser,NotPrmUser,
144926,27212,54980,178,0,N,1,N,N,CP_Drtn,TT_Task,DT_FixedDUR2,TK_NotStart,ISD1000,ISD - Energize - Put in service,,1800,1800,8,0,0,0,8,20,0,20,,,,2027-06-25 08:00,2027-06-25 16:00,,2026-08-14 08:00,2026-08-14 16:00,2026-08-14 08:00,2026-08-14 16:00,2026-08-14 08:00,2026-08-14 16:00,2027-06-25 08:00,2027-06-25 16:00,,PT_Normal,,,,,GLYEpseNYE2QNNvSEqsAkQ,4Scn+BvLKESVEFjrDvmrLA,,,N,0,0,,,2023-02-08 18:30,2023-02-08 18:31,NotPrmUser,NotPrmUser,
144927,27212,54963,178,0,N,1,N,N,CP_Drtn,TT_Task,DT_FixedDUR2,TK_NotStart,SUR1000,Survey and LiDAR,7385,0,0,400,0,7347,7347,400,0,0,0,,,,2023-10-25 08:00,2024-01-09 16:00,,2023-10-25 08:00,2024-01-09 16:00,2023-10-25 08:00,2024-01-09 16:00,2023-10-25 08:00,2024-01-09 16:00,2023-10-25 08:00,2024-01-09 16:00,,PT_Normal,,,,,x7rZKjbQskOUm8QHhnZJqg,5DdAY3FZMkmWdYb3WZ4tlA,,,Y,0,0,,,2023-02-08 18:30,2023-02-08 18:31,NotPrmUser,NotPrmUser,
144928,27212,54968,178,0,N,1,N,N,CP_Drtn,TT_Task,DT_FixedDUR2,TK_NotStart,DES1200,Receive Services Worksheet and Cable Info from Design Firms,,792,0,160,0,0,0,160,0,0,0,,,,2024-07-23 08:00,2024-08-19 16:00,,2024-03-06 08:00,2024-04-02 16:00,2024-03-06 08:00,2024-04-02 16:00,2024-03-06 08:00,2024-04-02 16:00,2024-07-23 08:00,2024-08-19 16:00,,PT_Normal,,,,,8/go3CpnvEOTz0TAY47aXA,xTBWn4lcu0aYf+0wYsDQtg,,,N,0,0,,,2023-02-08 18:30,2023-02-08 18:31,NotPrmUser,NotPrmUser,
144929,27212,54968,178,0,N,1,N,N,CP_Drtn,TT_Task,DT_FixedDUR2,TK_NotStart,DES1210,Issue to Trench Inspectors,,2280,1432,80,0,0,0,80,0,0,0,,,,2025-12-04 08:00,2025-12-17 16:00,,2024-10-31 08:00,2024-11-13 16:00,2024-10-31 08:00,2024-11-13 16:00,2024-10-31 08:00,2024-11-13 16:00,2025-12-04 08:00,2025-12-17 16:00,,PT_Normal,,,,,JEOUAcHTjkuKTHBNY0O5uA,+SQvvX02o0qMrR+sP/iKkg,,,N,0,0,,,2023-02-08 18:30,2023-02-08 18:31,NotPrmUser,NotPrmUser,
144930,27212,54980,178,0,N,1,N,N,CP_Drtn,TT_FinMile,DT_FixedDrtn,TK_NotStart,CON1020,Construction Complete,,0,0,0,0,0,0,0,0,0,0,,,,2027-01-08 16:00,2027-01-08 16:00,,2027-01-08 16:00,2027-01-08 16:00,2027-01-08 16:00,2027-01-08 16:00,2027-01-08 16:00,2027-01-08 16:00,2027-01-08 16:00,2027-01-08 16:00,,PT_Normal,,,,,zdgJm1Wwr0WywmRaUMLGNg,7SNtcE0prkyqeTYkAZaFBw,,,Y,0,0,,,2023-02-08 18:30,2023-02-08 18:31,NotPrmUser,NotPrmUser,
144931,27212,54980,178,0,N,1,N,N,CP_Drtn,TT_Mile,DT_FixedDrtn,TK_NotStart,CON1010,Construction Start,,4624,4624,0,0,0,0,0,0,0,0,,,,2027-06-25 16:00,2027-06-25 16:00,,2025-04-09 08:00,2025-04-09 08:00,2025-04-09 08:00,2025-04-09 08:00,2025-04-09 08:00,2025-04-09 08:00,2027-06-25 16:00,2027-06-25 16:00,,PT_Normal,,,,,rGrp417vY0OBKDPBCx5wvA,jpHehRo86kuUFu/wNTlYkQ,,,N,0,0,,,2023-02-08 18:30,2023-02-08 18:31,NotPrmUser,NotPrmUser,
144932,27212,54989,178,0,N,1,N,N,CP_Drtn,TT_Task,DT_FixedDUR2,TK_NotStart,CLO1020,GIS/As-Built and Records Complete,,480,480,480,0,0,0,480,0,0,0,,,,2027-04-05 08:00,2027-06-25 16:00,,2027-01-11 08:00,2027-04-02 16:00,2027-01-11 08:00,2027-04-02 16:00,2027-01-11 08:00,2027-04-02 16:00,2027-04-05 08:00,2027-06-25 16:00,,PT_Normal,,,,,jH8UDki2pkWMKzycWG2lxQ,M+hKmndUz0m++QaZJ6s17w,,,N,0,0,,,2023-02-08 18:30,2023-02-08 18:31,NotPrmUser,NotPrmUser,
144933,27212,54990,178,0,N,1,N,N,CP_Drtn,TT_Task,DT_FixedDUR2,TK_NotStart,CLO1030,"PO's complete, Work Order Reconcilled and Closed",,0,0,960,0,0,0,960,0,0,0,,,,2027-01-11 08:00,2027-06-25 16:00,,2027-01-11 08:00,2027-06-25 16:00,2027-01-11 08:00,2027-06-25 16:00,2027-01-11 08:00,2027-06-25 16:00,2027-01-11 08:00,2027-06-25 16:00,,PT_Normal,,,,,GaN1AAfj9kCD/qcn2FGlzw,k6aQ2I6yhkC5+V/591p5LA,,,Y,0,0,,,2023-02-08 18:30,2023-02-08 18:31,NotPrmUser,NotPrmUser,
144934,27212,54988,178,0,N,1,N,N,CP_Drtn,TT_FinMile,DT_FixedDrtn,TK_NotStart,CLO1010,Project Complete,,0,0,0,0,0,0,0,0,0,0,,,,2027-06-25 16:00,2027-06-25 16:00,,2027-06-25 16:00,2027-06-25 16:00,2027-06-25 16:00,2027-06-25 16:00,2027-06-25 16:00,2027-06-25 16:00,2027-06-25 16:00,2027-06-25 16:00,,PT_Normal,,,,,gw1R6RcWy0CXxPLQWAkUBA,h8OM74z/ZkCix5D80dafHA,,,Y,0,0,,,2023-02-08 18:30,2023-02-08 18:31,NotPrmUser,NotPrmUser,
144935,27212,54964,178,0,N,1,N,N,CP_Drtn,TT_LOE,DT_FixedDUR2,TK_NotStart,DES1000,Design Summary,7257,3184,0,2560,0,12990,12990,2560,0,0,0,,,,2024-01-10 08:00,2026-10-09 16:00,,2024-01-10 08:00,2025-04-01 16:00,2024-01-10 08:00,2025-04-01 16:00,2024-01-10 08:00,2025-04-01 16:00,2024-01-10 08:00,2026-10-09 16:00,,PT_Normal,,,,,pV4fRskSAkC2+hRcoE9SWA,ac0bDX/rJUuvFxIG7agUDg,,,Y,0,0,,,2023-02-08 18:30,2023-02-08 18:31,NotPrmUser,NotPrmUser,
144936,27212,54980,178,0,N,1,N,N,CP_Drtn,TT_LOE,DT_FixedDUR2,TK_NotStart,CON1000,Construction Summary,7385,0,0,3664,0,9484,9484,3664,20,0,20,,,,2027-01-08 16:00,2027-01-08 16:00,,2025-04-09 08:00,2027-01-08 16:00,2025-04-09 08:00,2027-01-08 16:00,2025-04-09 08:00,2027-01-08 16:00,2027-01-08 16:00,2027-01-08 16:00,,PT_Normal,,,,,EUPKNMndnUqQnWN2PmE6xA,EsKZvi6CDkSvKww6JT4Miw,,,N,0,0,,,2023-02-08 18:30,2023-02-08 18:31,NotPrmUser,NotPrmUser,
144937,27212,54988,178,0,N,1,N,N,CP_Drtn,TT_LOE,DT_FixedDUR2,TK_NotStart,CLO1000,Close Out Summary,7385,0,0,960,0,4449,4449,960,0,0,0,,,,2027-01-11 08:00,2027-06-25 16:00,,2027-01-11 08:00,2027-06-25 16:00,2027-01-11 08:00,2027-06-25 16:00,2027-01-11 08:00,2027-06-25 16:00,2027-01-11 08:00,2027-06-25 16:00,,PT_Normal,,,,,yrXmvjVWbESqOpAuDX6hvw,YLmtGubFfkKJMweQNydZJw,,,Y,0,0,,,2023-02-08 18:30,2023-02-08 18:31,NotPrmUser,NotPrmUser,
144938,27212,54961,178,0,N,1,N,N,CP_Drtn,TT_LOE,DT_FixedDUR2,TK_NotStart,PCON1000,Pre-Construction Summary,,0,0,3176,0,0,0,3176,0,0,0,,,,2023-09-25 08:00,2025-04-08 16:00,,2023-09-25 08:00,2025-04-08 16:00,2023-09-25 08:00,2025-04-08 16:00,2023-09-25 08:00,2025-04-08 16:00,2023-09-25 08:00,2025-04-08 16:00,,PT_Normal,,,,,9hUlEcypQkO4EvII0Cpp6Q,ACF+KgHKv0KIn6qKnI5s7w,,,Y,0,0,,,2023-02-08 18:30,2023-02-08 18:31,NotPrmUser,NotPrmUser,
