# P01-1

Schedule from Primavera P6, 2023-07-03 to 2027-10-01, data date 2023-05-01, costs in USD.

## Calendars

- Corporate - Standard Full Time: Mon-Fri 08:00-16:00; Sat-Sun off. Exceptions (off unless hours are given): 2023-07-04, 2023-11-23 to 2023-11-24, 2023-12-22, 2023-12-25, 2024-01-01.

## Resources

| Resource | Group | Rate |
| --- | --- | --- |
| Civil Crew | labor |  |
| Mob/Demob | labor |  |
| Potholing Crew | labor |  |
| Supervision | labor |  |
| Electric Crew | labor |  |
| RFS Crew | labor |  |
| Mileage | equipment |  |
| Project Surveyor | labor | 135 |
| Survey Project Manager | labor | 160 |
| Licensed Land Surveyor | labor | 180 |
| Survey Crew (2 FTE) | labor | 230 |
| Survey CADD Drafter | labor | 115 |
| Survey Admin | labor | 75 |
| Principal Surveyor | labor | 195 |
| Project Manager II | labor | 162.74 |
| Document Controls Specialist II | labor | 75.08 |
| Project Manager III | labor | 179.08 |
| Project Coordinator | labor | 90 |
| Project Manager I | labor | 114.05 |
| Senior Designer | labor | 166.21 |
| Senior Engineer | labor | 174.18 |
| Civil Designer I | labor | 99 |
| Civil Designer II | labor | 118 |
| Civil Designer III | labor | 135 |
| Electrical Designer I | labor | 99 |
| Electrical Designer II | labor | 118 |
| Electrical Designer III | labor | 135 |
| Engineer I | labor | 114 |
| Engineer II | labor | 132 |
| Engineer III | labor | 152 |
| Engineer IV | labor | 170 |
| Drafter I | labor | 75 |
| Drafter II | labor | 92 |
| Principal Engineer | labor | 208.7 |
| Project Manager II | labor | 165.99 |
| Document Controls Specialist II | labor | 78.08 |
| Principal Program Manager | labor | 271.57 |
| Senior Planner | labor | 165.14 |
| Project Biologist | labor | 131.2 |
| Biologist II | labor | 78 |
| Biologist III | labor | 107.33 |
| Senior Biologist | labor | 157.43 |
| Project Planner | labor | 132.12 |
| Project Archaeologist | labor | 101 |
| Archaeologist I | labor | 66.06 |
| Project Environmental Scientist | labor | 108.77 |
| Program Manager | labor | 172.55 |
| Designer III | labor | 112.71 |
| Native American Monitor | labor | 70 |
| Archaeologist II | labor | 71.79 |
| QSP | labor | 120.79 |
| Administrative Requirements | labor | 204000 |
| Subsurface Investigation | labor | 10200 |
| Excavation Fill | labor | 680106 |
| Base Courses | labor | 80135 |
| Rigid Paving | labor | 35243 |
| Equipment Cost | equipment | 327000 |
| Material Cost | material | 623000 |
| Electric Work | labor | 152561 |
| Inspector | labor | 150 |
| Archaeologist III | labor | 89.16 |

## Schedule

| ID | WBS | Activity | Type | Duration | Start | Finish | Predecessors | Total float | Free float | Constraint | Resources | Cost | ISD Year |
| --- | --- | --- | --- | --- | --- | --- | --- | --- | --- | --- | --- | --- | --- |
| PCON1000 |  | Pre-Construction Summary | level of effort | 412d | 2023-07-03 | 2025-02-05 | SCO1000 SS | 0d |  |  |  |  | 2026 |
|  | 1 | **Scoping** |  |  | 2023-07-03 | 2023-07-26 |  |  |  |  |  |  |  |
| SCO1000 |  | Bundling / Phasing of circuits for project sequencing |  | 10d | 2023-07-03 | 2023-07-17 |  | 0d |  | start on or after 2023-07-03 |  |  |  |
| SCO1010 |  | Constructability Review |  | 5d | 2023-07-18 | 2023-07-24 | SCO1000 | 0d |  |  |  |  |  |
| SCO1020 |  | SDG&E Review |  | 2d | 2023-07-25 | 2023-07-26 | SCO1010 | 0d |  |  |  |  |  |
|  | 2 | **Planning** |  |  | 2023-07-27 | 2023-10-11 |  |  |  |  |  |  |  |
| PLA1000 |  | Workorder Setup |  | 5d | 2023-07-27 | 2023-08-02 | SCO1020 | 0d |  |  |  |  |  |
| SUR1000 |  | Survey and LiDAR |  | 50d | 2023-08-03 | 2023-10-11 | PLA1000 | 0d |  |  | Project Surveyor [1830 h]; Survey Project Manager [512 h]; Licensed Land Surveyor [405 h]; Survey Crew (2 FTE) [4867 h]; Survey CADD Drafter [1065 h]; Survey Admin [426 h]; Principal Surveyor [77 h] | 1,690,720 | 2026 |
|  | 3 | **Design** |  |  | 2023-10-12 | 2025-01-29 |  |  |  |  |  |  |  |
| DES1000 |  | Design Summary | level of effort | 335d | 2023-10-12 | 2025-01-29 | DES1040 SS | 512d | 0d |  | Project Manager II [420 h]; Document Controls Specialist II [70 h]; Project Manager III [1657 h]; Project Coordinator [1199 h]; Project Manager I [631 h]; Senior Designer [1692 h]; Senior Engineer [378 h]; Civil Designer I [177 h]; Civil Designer II [988 h]; Civil Designer III [692 h]; Electrical Designer I [645 h]; Electrical Designer II [1241 h]; Electrical Designer III [1207 h]; Engineer I [732 h]; Engineer II [1639 h]; Engineer III [744 h]; Engineer IV [565 h]; Drafter I [739 h]; Drafter II [777 h]; Principal Engineer [40 h] | 2,142,240.87 | 2026 |
|  | 6 | **Geotech, Seismic and Potholing** |  |  | 2023-12-11 | 2024-04-10 |  |  |  |  |  |  |  |
| DES1010 |  | Seismic / Geotech Submittal (60-90 for BIA) - Avg 45 days |  | 25d | 2023-12-11 | 2024-01-17 | ENV1010 | 85d | 0d |  |  |  |  |
| DES1020 |  | Potholing Submittal |  | 25d | 2024-01-18 | 2024-02-21 | DES1010 | 85d | 5d |  |  |  |  |
| DES1030 |  | Potholing Release /Perform Potholing |  | 30d | 2024-02-29 | 2024-04-10 | DES1020, DES1130 FF | 80d | 0d |  |  |  |  |
|  | 1 | **Civil Design** |  |  | 2023-10-12 | 2024-10-02 |  |  |  |  |  |  |  |
| DES1040 |  | 10% Submittal |  | 25d | 2023-10-12 | 2023-11-15 | SUR1000 | 0d |  |  |  |  |  |
| DES1050 |  | 30% Submittal |  | 50d | 2023-11-16 | 2024-01-31 | DES1040 | 0d |  |  |  |  |  |
| DES1060 |  | 30% Review |  | 10d | 2024-02-01 | 2024-02-14 | DES1050 | 0d |  |  |  |  |  |
| DES1070 |  | 60% Submittal (60 taking less tahn 30%) |  | 70d | 2024-02-15 | 2024-05-22 | DES1060, DES1200, DES1030 FF | 75d | 0d |  |  |  |  |
| DES1080 |  | 60% Review (check env reviews at 30 and 60) |  | 10d | 2024-05-23 | 2024-06-05 | DES1070 | 75d | 0d |  |  |  |  |
| DES1090 |  | 90% Submittal |  | 45d | 2024-06-06 | 2024-08-07 | DES1080 | 75d | 0d |  |  |  |  |
| DES1100 |  | 90% Review - 20 days review |  | 10d | 2024-08-08 | 2024-08-21 | DES1090 | 75d | 0d |  |  |  |  |
| DES1110 |  | 100% Submittal |  | 20d | 2024-08-22 | 2024-09-18 | DES1100 | 85d | 0d |  |  |  |  |
| DES1120 |  | Issue IFC Design Package |  | 10d | 2024-09-19 | 2024-10-02 | DES1110, DES1000 FF | 85d |  |  |  |  |  |

| ID | WBS | Activity | Duration | Start | Finish | Predecessors | Total float | Free float |
| --- | --- | --- | --- | --- | --- | --- | --- | --- |
|  | 2 | **Electrical Design** |  | 2024-01-18 | 2025-01-29 |  |  |  |
| DES1130 |  | 60% Submittal | 60d | 2024-01-18 | 2024-04-10 | DES1200 | 80d | 0d |
| DES1140 |  | 60% Review | 10d | 2024-04-11 | 2024-04-24 | DES1130 | 110d | 0d |
| DES1150 |  | 90% Submittal | 50d | 2024-04-25 | 2024-07-03 | DES1140 | 140d | 0d |
| DES1160 |  | 90% Review | 10d | 2024-07-04 | 2024-07-17 | DES1150 | 140d | 0d |
| DES1170 |  | 100% Submittal | 20d | 2024-07-18 | 2024-08-14 | DES1160 | 140d | 110d |
| DES1180 |  | Issue IFC Design Package | 10d | 2025-01-16 | 2025-01-29 | DES1170, DES1000 FF, PER1000 FF, LAN1000 FF | 30d | 0d |
|  | 3 | **Service Cutover Design** |  | 2023-11-16 | 2024-10-02 |  |  |  |
| DES1190 |  | Issue Services Worksheet to Design Firms | 20d | 2023-11-16 | 2023-12-15 | DES1040 | 80d | 0d |
| DES1200 |  | Receive Services Worksheet and Cable Info from Design Firms | 20d | 2023-12-18 | 2024-01-17 | DES1190 | 80d | 0d |
| DES1210 |  | Issue to Trench Inspectors | 10d | 2024-09-19 | 2024-10-02 | DES1200, DES1110, DES1000 FF | 297d | 165d |
|  | 4 | **Substation Engineering Design** |  | 2023-10-12 | 2023-12-26 |  |  |  |
| DES1220 |  | SED Design | 30d | 2023-10-12 | 2023-11-22 | SUR1000 | 797d | 0d |
| DES1230 |  | Issue IFC Design Package | 20d | 2023-11-27 | 2023-12-26 | DES1220, DES1000 FF | 797d | 665d |
|  | 5 | **Remove from Service (Existing OH) Design** |  |  |  |  |  |  |
|  | 4 | **Procurement** |  | 2024-02-15 | 2024-10-16 |  |  |  |
| PRO1000 |  | Civil BOM - Long Lead @ 30% | 15d | 2024-02-15 | 2024-03-06 | DES1060 | 85d | 0d |
| PRO1010 |  | Order Long Lead Civil Material | 150d | 2024-03-07 | 2024-10-02 | PRO1000 | 85d |  |
| PRO1020 |  | Electrical BOM - Long Lead @ 60% | 15d | 2024-04-25 | 2024-05-15 | DES1140 | 115d | 0d |
| PRO1030 |  | Order Long Lead Electrical Materials | 100d | 2024-05-16 | 2024-10-02 | PRO1020 | 115d | 85d |
| PRO1040 |  | BOM - Short Lead @ 60% | 15d | 2024-08-22 | 2024-09-11 | DES1100 | 75d | 0d |
| PRO1050 |  | Order Short Lead Materials | 25d | 2024-09-12 | 2024-10-16 | PRO1040 | 75d |  |
|  | 5 | **Permitting** |  | 2024-02-15 | 2025-01-29 |  |  |  |
| PER1000 |  | CalTrans Permit | 250d | 2024-02-15 | 2025-01-29 | DES1060 | 0d |  |
| PER1010 |  | City & County Permits | 100d | 2024-02-15 | 2024-07-03 | DES1060 | 150d |  |
| PER1020 |  | Other Permit (TBD) | 100d | 2024-02-15 | 2024-07-03 | DES1060 | 150d |  |

| ID | WBS | Activity | Duration | Start | Finish | Predecessors | Total float | Free float |
| --- | --- | --- | --- | --- | --- | --- | --- | --- |
|  | 6 | **Public Affairs** |  | 2024-05-23 | 2024-10-09 |  |  |  |
| PUB1000 |  | Public Affairs / Community Outreach | 100d | 2024-05-23 | 2024-10-09 | DES1070 | 777d |  |
|  | 7 | **Land Services** |  | 2024-02-01 | 2024-08-28 |  |  |  |
| LAN1000 |  | Land Rights and Easement Acquisition | 150d | 2024-02-01 | 2024-08-28 | DES1050 | 110d |  |
| LAN1010 |  | Tribal Land Rights | 150d | 2024-02-01 | 2024-08-28 | DES1050 | 110d |  |
| LAN1020 |  | Laydown Yards | 150d | 2024-02-01 | 2024-08-28 | DES1050 | 110d |  |
|  | 8 | **Environmental** |  | 2023-10-12 | 2024-10-09 |  |  |  |
| ENV1000 |  | 10% Environmental Submittal | 25d | 2023-10-12 | 2023-11-15 | SUR1000 | 85d | 0d |
| ENV1010 |  | 10% Environmental Review | 15d | 2023-11-16 | 2023-12-08 | ENV1000 | 85d | 0d |
| ENV1020 |  | 30% Environmental Submittal | 25d | 2024-04-11 | 2024-05-15 | DES1030 | 80d | 0d |
| ENV1030 |  | 30% Environmental Review | 15d | 2024-05-16 | 2024-06-05 | ENV1020 | 80d | 0d |
| ENV1040 |  | 60% Environmental Submittal | 35d | 2024-06-06 | 2024-07-24 | ENV1030, DES1080, DES1140 | 80d | 0d |
| ENV1050 |  | 60% Environmental Review | 15d | 2024-07-25 | 2024-08-14 | ENV1040 | 80d | 0d |
| ENV1060 |  | BIA NEPA Submittal | 20d | 2024-08-15 | 2024-09-11 | ENV1050 | 80d | 0d |
| ENV1070 |  | BIA Received (Add 250 days, if needed) | 20d | 2024-09-12 | 2024-10-09 | ENV1060 | 80d |  |
|  | 9 | **Bid and Award - Contracting** |  | 2024-04-25 | 2024-08-07 |  |  |  |
|  | 1 | **Civil Contractor** |  | 2024-06-06 | 2024-08-07 |  |  |  |
| PCON100 |  | Initiate Performance Partnering Process @ 60% | 5d | 2024-06-06 | 2024-06-12 | DES1080 | 125d | 0d |
| PCON110 |  | Receive Estimate from Contractor | 15d | 2024-06-13 | 2024-07-03 | PCON100 | 125d | 0d |
| PCON120 |  | Bid Estimate Negotiations | 10d | 2024-07-04 | 2024-07-17 | PCON110 | 125d | 0d |
| PCON130 |  | Revise Estimate based on IFC | 5d | 2024-07-18 | 2024-07-24 | PCON120 | 125d | 0d |
| PCON140 |  | Issue Release (add milestone bid award) | 10d | 2024-07-25 | 2024-08-07 | PCON130 | 125d |  |
|  | 2 | **Electrical Contractor** |  | 2024-04-25 | 2024-06-26 |  |  |  |
| PCON150 |  | Initiate Performance Partnering Process @ 60% | 5d | 2024-04-25 | 2024-05-01 | DES1140 | 185d | 0d |
| PCON160 |  | Receive Estimate from Contractor | 15d | 2024-05-02 | 2024-05-22 | PCON150 | 185d | 0d |
| PCON170 |  | Bid Estimate Negotiations | 10d | 2024-05-23 | 2024-06-05 | PCON160 | 185d | 0d |
| PCON180 |  | Revise Estimate based on IFC | 5d | 2024-06-06 | 2024-06-12 | PCON170 | 185d | 0d |
| PCON190 |  | Issue Release | 10d | 2024-06-13 | 2024-06-26 | PCON180 | 185d | 155d |

| ID | WBS | Activity | Type | Duration | Start | Finish | Predecessors | Total float | Free float | Resources | Cost | Construction Start | Construction Finish | ISD Year | ISD |
| --- | --- | --- | --- | --- | --- | --- | --- | --- | --- | --- | --- | --- | --- | --- | --- |
|  | 10 | **Pre-Construction** |  |  | 2025-01-30 | 2025-02-05 |  |  |  |  |  |  |  |  |  |
| PCON200 |  | Civil Pre-Construction Meeting (Civil Construction Ready) |  | 5d | 2025-01-30 | 2025-02-05 | PCON140, PER1000, PER1010, PER1020, PRO1010, PRO1050, LAN1020, LAN1010, LAN1000, ENV1050, ENV1070, DES1120, PCON1000 FF | 0d |  |  |  |  |  |  |  |
| PCON210 |  | Electrical - Pre-Construction Meeting (Electical Construction Ready) |  | 5d | 2025-01-30 | 2025-02-05 | PCON190, PRO1030, PER1000, PER1010, PER1020, LAN1020, LAN1010, LAN1000, ENV1050, ENV1070, DES1180 | 30d | 0d |  |  |  |  |  |  |
|  | 11 | **Construction** |  |  | 2025-02-06 | 2027-04-16 |  |  |  |  |  |  |  |  |  |
| CON1000 |  | Construction Summary | level of effort | 572d | 2025-02-06 | 2027-04-16 | CON1010 SS, CON1020 FF | 0d |  | Project Surveyor [215 h]; Survey Project Manager [60 h]; Licensed Land Surveyor [48 h]; Survey Crew (2 FTE) [573 h]; Survey CADD Drafter [125 h]; Survey Admin [50 h]; Principal Surveyor [9 h]; Project Coordinator [67 h]; Project Manager III [92 h]; Project Manager I [35 h]; Project Manager II [23 h]; Document Controls Specialist II [4 h]; Civil Designer I [24 h]; Civil Designer II [132 h]; Civil Designer III [92 h]; Electrical Designer I [86 h]; Electrical Designer II [165 h]; Electrical Designer III [161 h]; Engineer I [98 h]; Engineer II [219 h]; Engineer III [99 h]; Engineer IV [75 h]; Drafter I [99 h]; Drafter II [104 h]; Senior Designer [226 h]; Senior Engineer [50 h]; Principal Engineer [5 h]; Principal Program Manager [33 h]; Senior Planner [11 h]; Project Biologist [340 h]; Biologist II [499 h]; Biologist III [210 h]; Senior Biologist [7 h]; Project Planner [11 h]; Project Archaeologist [48 h]; Archaeologist I [593 h]; Project Environmental Scientist [35 h]; Program Manager [167 h]; Designer III [47 h]; Native American Monitor [746 h]; Archaeologist II [439 h]; QSP [180 h]; Administrative Requirements [25 h]; Subsurface Investigation [25 h]; Excavation Fill [25 h]; Base Courses [25 h]; Rigid Paving [25 h]; Equipment Cost [25 h]; Material Cost [25]; Electric Work [25 h]; Inspector [3520 h] | 54,082,787.9 | 2024-11-27 | 2027-02-04 | 2026 |  |
| CON1010 |  | Construction Start | milestone | 0d | 2025-02-06 | 2025-02-06 | PCON200, PCON210 | 692d |  |  |  |  |  |  |  |
| ISD1000 |  | ISD - Energize - Put in service |  | 1d | 2026-10-15 | 2026-10-15 | CON2000, CON3000, CON4000, CON5000, CON6000 | 251d |  | Mileage [25 h] |  |  |  | 2026 | 2026-10-15 |
| CON1020 |  | Construction Complete | milestone | 0d | 2027-04-16 | 2027-04-16 | CON2000, CON3000, CON4000, CON5000, CON6000, CON7000 | 0d |  |  |  |  |  |  |  |
|  | 1 | **Civil Construction** |  |  | 2025-02-06 | 2026-10-14 |  |  |  |  |  |  |  |  |  |
| CON2000 |  | Civil Construction (Trenching 300 feet/day) |  | 440d | 2025-02-06 | 2026-10-14 | PCON200 | 0d |  | Civil Crew [2640 h]; Mob/Demob [40 h]; Mob/Demob [80 h]; Potholing Crew [48 h]; Supervision [5280 h] |  |  |  |  |  |
|  | 2 | **Electrical Construction** |  |  | 2025-03-20 | 2026-10-14 |  |  |  |  |  |  |  |  |  |
| CON3000 |  | Electrical Construction |  | 410d | 2025-03-20 | 2026-10-14 | PCON210, CON2000 SS+30d | 0d |  | Electric Crew [1640 h] |  |  |  |  |  |
|  | 3 | **Service Cutover** |  |  | 2025-05-22 | 2026-10-14 |  |  |  |  |  |  |  |  |  |
| CON4000 |  | Service Cutover |  | 365d | 2025-05-22 | 2026-10-14 | DES1210, CON3000 SS+45d | 132d | 0d |  |  |  |  |  |  |
|  | 4 | **SCADA** |  |  | 2026-07-16 | 2026-10-14 |  |  |  |  |  |  |  |  |  |
| CON5000 |  | Scada Construction |  | 65d | 2026-07-16 | 2026-10-14 | CON2000 FF, CON3000 FF, DES1230 | 132d | 0d |  |  |  |  |  |  |
|  | 5 | **Substation** |  |  | 2026-07-16 | 2026-10-14 |  |  |  |  |  |  |  |  |  |
| CON6000 |  | Substation Construction |  | 65d | 2026-07-16 | 2026-10-14 | CON2000 FF, CON3000 FF | 132d | 0d |  |  |  |  |  |  |
|  | 6 | **OH RFS** |  |  | 2026-10-15 | 2027-04-16 |  |  |  |  |  |  |  |  |  |
| CON7000 |  | Overhead RFS (1000 feet per day) |  | 132d | 2026-10-15 | 2027-04-16 | CON3000 | 0d |  | RFS Crew [1056 h] |  |  |  |  |  |
|  | 7 | **(New WBS)** |  |  |  |  |  |  |  |  |  |  |  |  |  |
|  | 12 | **Closeout** |  |  | 2027-04-19 | 2027-10-01 |  |  |  |  |  |  |  |  |  |
| CLO1000 |  | Close Out Summary | level of effort | 120d | 2027-04-19 | 2027-10-01 | CON1020, CLO1010 FF | 0d |  | Project Surveyor [108 h]; Survey Project Manager [30 h]; Licensed Land Surveyor [24 h]; Survey Crew (2 FTE) [286 h]; Survey CADD Drafter [63 h]; Survey Admin [25 h]; Principal Surveyor [5 h]; Project Biologist [195 h]; Biologist II [82 h]; Biologist III [99 h]; Senior Biologist [12 h]; Project Archaeologist [22 h]; Project Environmental Scientist [39 h]; Program Manager [183 h]; Designer III [5 h]; Project Manager II [23 h]; Document Controls Specialist II [4 h]; Project Coordinator [67 h]; Project Manager III [92 h]; Project Manager I [35 h]; Senior Designer [338 h]; Senior Engineer [76 h]; Civil Designer I [35 h]; Civil Designer II [198 h]; Civil Designer III [138 h]; Electrical Designer I [129 h]; Electrical Designer II [248 h]; Electrical Designer III [241 h]; Engineer I [146 h]; Engineer II [328 h]; Engineer III [149 h]; Engineer IV [113 h]; Drafter I [148 h]; Drafter II [155 h]; Principal Engineer [8 h]; Principal Program Manager [4 h]; Senior Planner [1 h]; Project Biologist [38 h]; Biologist II [55 h]; Biologist III [23 h]; Senior Biologist [1 h]; Project Planner [1 h]; Project Archaeologist [5 h]; Archaeologist II [49 h]; Archaeologist I [66 h]; Project Environmental Scientist [4 h]; Program Manager [19 h]; Native American Monitor [83 h]; Archaeologist III [37 h]; Archaeologist II [185 h]; QSP [20 h]; Principal Program Manager [37 h] | 592,373.39 |  |  | 2026 |  |
| CLO1010 |  | Project Complete | milestone | 0d | 2027-10-01 | 2027-10-01 | CLO1020, CLO1030 | 0d |  |  |  |  |  |  |  |

| ID | WBS | Activity | Duration | Start | Finish | Predecessors | Total float |
| --- | --- | --- | --- | --- | --- | --- | --- |
|  | 1 | **Technical** |  | 2027-04-19 | 2027-07-09 |  |  |
| CLO1020 |  | GIS/As-Built and Records Complete | 60d | 2027-04-19 | 2027-07-09 | CON1020 | 60d |
|  | 2 | **Accounting** |  | 2027-04-19 | 2027-10-01 |  |  |
| CLO1030 |  | PO's complete, Work Order Reconcilled and Closed | 120d | 2027-04-19 | 2027-10-01 | CON1020 | 0d |

# P02-1

Schedule from Primavera P6, 2023-07-17 to 2027-10-14, data date 2023-05-01, costs in USD.

## Calendars

- Corporate - Standard Full Time: Mon-Fri 08:00-16:00; Sat-Sun off. Exceptions (off unless hours are given): 2023-11-23 to 2023-11-24, 2023-12-22, 2023-12-25, 2024-01-01.

## Resources

| Resource | Group | Rate |
| --- | --- | --- |
| Civil Crew | labor |  |
| Mob/Demob | labor |  |
| Potholing Crew | labor |  |
| Supervision | labor |  |
| Electric Crew | labor |  |
| RFS Crew | labor |  |
| Mileage | equipment |  |
| Project Surveyor | labor | 135 |
| Survey Project Manager | labor | 160 |
| Licensed Land Surveyor | labor | 180 |
| Survey Crew (2 FTE) | labor | 230 |
| Survey CADD Drafter | labor | 115 |
| Survey Admin | labor | 75 |
| Principal Surveyor | labor | 195 |
| Project Manager II | labor | 162.74 |
| Document Controls Specialist II | labor | 75.08 |
| Project Manager III | labor | 179.08 |
| Project Coordinator | labor | 90 |
| Project Manager I | labor | 114.05 |
| Senior Designer | labor | 166.21 |
| Senior Engineer | labor | 174.18 |
| Civil Designer I | labor | 99 |
| Civil Designer II | labor | 118 |
| Civil Designer III | labor | 135 |
| Electrical Designer I | labor | 99 |
| Electrical Designer II | labor | 118 |
| Electrical Designer III | labor | 135 |
| Engineer I | labor | 114 |
| Engineer II | labor | 132 |
| Engineer III | labor | 152 |
| Engineer IV | labor | 170 |
| Drafter I | labor | 75 |
| Drafter II | labor | 92 |
| Principal Engineer | labor | 208.7 |
| Project Manager II | labor | 165.99 |
| Document Controls Specialist II | labor | 78.08 |
| Principal Program Manager | labor | 271.57 |
| Senior Planner | labor | 165.14 |
| Project Biologist | labor | 131.2 |
| Biologist II | labor | 78 |
| Biologist III | labor | 107.33 |
| Senior Biologist | labor | 157.43 |
| Project Planner | labor | 132.12 |
| Project Archaeologist | labor | 101 |
| Archaeologist I | labor | 66.06 |
| Project Environmental Scientist | labor | 108.77 |
| Program Manager | labor | 172.55 |
| Designer III | labor | 112.71 |
| Native American Monitor | labor | 70 |
| Archaeologist II | labor | 71.79 |
| QSP | labor | 120.79 |
| Administrative Requirements | labor | 204000 |
| Subsurface Investigation | labor | 10200 |
| Excavation Fill | labor | 680106 |
| Base Courses | labor | 80135 |
| Rigid Paving | labor | 35243 |
| Equipment Cost | equipment | 327000 |
| Material Cost | material | 623000 |
| Electric Work | labor | 152561 |
| Inspector | labor | 150 |
| Archaeologist III | labor | 89.16 |

## Schedule

| ID | WBS | Activity | Type | Duration | Start | Finish | Predecessors | Total float | Free float | Constraint | Resources | Cost | ISD Year |
| --- | --- | --- | --- | --- | --- | --- | --- | --- | --- | --- | --- | --- | --- |
| PCON1000 |  | Pre-Construction Summary | level of effort | 412d | 2023-07-17 | 2025-02-18 | SCO1000 SS | 0d |  |  |  |  | 2026 |
|  | 1 | **Scoping** |  |  | 2023-07-17 | 2023-08-08 |  |  |  |  |  |  |  |
| SCO1000 |  | Bundling / Phasing of circuits for project sequencing |  | 10d | 2023-07-17 | 2023-07-28 |  | 0d |  | start on or after 2023-07-17 |  |  |  |
| SCO1010 |  | Constructability Review |  | 5d | 2023-07-31 | 2023-08-04 | SCO1000 | 0d |  |  |  |  |  |
| SCO1020 |  | SDG&E Review |  | 2d | 2023-08-07 | 2023-08-08 | SCO1010 | 0d |  |  |  |  |  |
|  | 2 | **Planning** |  |  | 2023-08-09 | 2023-10-24 |  |  |  |  |  |  |  |
| PLA1000 |  | Workorder Setup |  | 5d | 2023-08-09 | 2023-08-15 | SCO1020 | 0d |  |  |  |  |  |
| SUR1000 |  | Survey and LiDAR |  | 50d | 2023-08-16 | 2023-10-24 | PLA1000 | 0d |  |  | Project Surveyor [1830 h]; Survey Project Manager [512 h]; Licensed Land Surveyor [405 h]; Survey Crew (2 FTE) [4867 h]; Survey CADD Drafter [1065 h]; Survey Admin [426 h]; Principal Surveyor [77 h] | 1,690,720 | 2026 |
|  | 3 | **Design** |  |  | 2023-10-25 | 2025-02-11 |  |  |  |  |  |  |  |
| DES1000 |  | Design Summary | level of effort | 335d | 2023-10-25 | 2025-02-11 | DES1040 SS | 512d | 0d |  | Project Manager II [420 h]; Document Controls Specialist II [70 h]; Project Manager III [1657 h]; Project Coordinator [1199 h]; Project Manager I [631 h]; Senior Designer [1692 h]; Senior Engineer [378 h]; Civil Designer I [177 h]; Civil Designer II [988 h]; Civil Designer III [692 h]; Electrical Designer I [645 h]; Electrical Designer II [1241 h]; Electrical Designer III [1207 h]; Engineer I [732 h]; Engineer II [1639 h]; Engineer III [744 h]; Engineer IV [565 h]; Drafter I [739 h]; Drafter II [777 h]; Principal Engineer [40 h] | 2,142,240.87 | 2026 |
|  | 6 | **Geotech, Seismic and Potholing** |  |  | 2023-12-26 | 2024-04-23 |  |  |  |  |  |  |  |
| DES1010 |  | Seismic / Geotech Submittal |  | 25d | 2023-12-26 | 2024-01-30 | ENV1010 | 110d | 0d |  |  |  |  |
| DES1020 |  | Potholing Submittal |  | 25d | 2024-01-31 | 2024-03-05 | DES1010 | 110d | 5d |  |  |  |  |
| DES1030 |  | Potholing Release /Perform Potholing |  | 30d | 2024-03-13 | 2024-04-23 | DES1020, DES1130 FF | 105d | 0d |  |  |  |  |
|  | 1 | **Civil Design** |  |  | 2023-10-25 | 2024-10-15 |  |  |  |  |  |  |  |
| DES1040 |  | 10% Submittal |  | 25d | 2023-10-25 | 2023-11-30 | SUR1000 | 0d |  |  |  |  |  |
| DES1050 |  | 30% Submittal |  | 50d | 2023-12-01 | 2024-02-13 | DES1040 | 0d |  |  |  |  |  |
| DES1060 |  | 30% Review |  | 10d | 2024-02-14 | 2024-02-27 | DES1050 | 0d |  |  |  |  |  |
| DES1070 |  | 60% Submittal |  | 70d | 2024-02-28 | 2024-06-04 | DES1060, DES1200, DES1030 FF | 75d | 0d |  |  |  |  |
| DES1080 |  | 60% Review |  | 10d | 2024-06-05 | 2024-06-18 | DES1070 | 75d | 0d |  |  |  |  |
| DES1090 |  | 90% Submittal |  | 45d | 2024-06-19 | 2024-08-20 | DES1080 | 75d | 0d |  |  |  |  |
| DES1100 |  | 90% Review |  | 10d | 2024-08-21 | 2024-09-03 | DES1090 | 75d | 0d |  |  |  |  |
| DES1110 |  | 100% Submittal |  | 20d | 2024-09-04 | 2024-10-01 | DES1100 | 85d | 0d |  |  |  |  |
| DES1120 |  | Issue IFC Design Package |  | 10d | 2024-10-02 | 2024-10-15 | DES1110, DES1000 FF | 85d |  |  |  |  |  |

| ID | WBS | Activity | Duration | Start | Finish | Predecessors | Total float | Free float |
| --- | --- | --- | --- | --- | --- | --- | --- | --- |
|  | 2 | **Electrical Design** |  | 2024-01-31 | 2025-02-11 |  |  |  |
| DES1130 |  | 60% Submittal | 60d | 2024-01-31 | 2024-04-23 | DES1200 | 105d | 0d |
| DES1140 |  | 60% Review | 10d | 2024-04-24 | 2024-05-07 | DES1130 | 115d | 0d |
| DES1150 |  | 90% Submittal | 50d | 2024-05-08 | 2024-07-16 | DES1140 | 140d | 0d |
| DES1160 |  | 90% Review | 10d | 2024-07-17 | 2024-07-30 | DES1150 | 140d | 0d |
| DES1170 |  | 100% Submittal | 20d | 2024-07-31 | 2024-08-27 | DES1160 | 140d | 110d |
| DES1180 |  | Issue IFC Design Package | 10d | 2025-01-29 | 2025-02-11 | DES1170, DES1000 FF, PER1000 FF, LAN1000 FF | 30d | 0d |
|  | 3 | **Service Cutover Design** |  | 2023-12-01 | 2024-10-15 |  |  |  |
| DES1190 |  | Issue Services Worksheet to Design Firms | 20d | 2023-12-01 | 2024-01-02 | DES1040 | 95d | 0d |
| DES1200 |  | Receive Services Worksheet and Cable Info from Design Firms | 20d | 2024-01-03 | 2024-01-30 | DES1190 | 95d | 0d |
| DES1210 |  | Issue to Trench Inspectors | 10d | 2024-10-02 | 2024-10-15 | DES1200, DES1110, DES1000 FF | 297d | 165d |
|  | 4 | **Substation Engineering Design** |  | 2023-10-25 | 2024-01-09 |  |  |  |
| DES1220 |  | SED Design | 30d | 2023-10-25 | 2023-12-07 | SUR1000 | 797d | 0d |
| DES1230 |  | Issue IFC Design Package | 20d | 2023-12-08 | 2024-01-09 | DES1220, DES1000 FF | 797d | 665d |
|  | 5 | **Remove from Service (Existing OH) Design** |  |  |  |  |  |  |
|  | 4 | **Procurement** |  | 2024-02-28 | 2024-10-29 |  |  |  |
| PRO1000 |  | Civil BOM - Long Lead @ 30% | 15d | 2024-02-28 | 2024-03-19 | DES1060 | 85d | 0d |
| PRO1010 |  | Order Long Lead Civil Material | 150d | 2024-03-20 | 2024-10-15 | PRO1000 | 85d |  |
| PRO1020 |  | Electrical BOM - Long Lead @ 60% | 15d | 2024-05-08 | 2024-05-28 | DES1140 | 115d | 0d |
| PRO1030 |  | Order Long Lead Electrical Materials | 100d | 2024-05-29 | 2024-10-15 | PRO1020 | 115d | 85d |
| PRO1040 |  | BOM - Short Lead @ 60% | 15d | 2024-09-04 | 2024-09-24 | DES1100 | 75d | 0d |
| PRO1050 |  | Order Short Lead Materials | 25d | 2024-09-25 | 2024-10-29 | PRO1040 | 75d |  |
|  | 5 | **Permitting** |  | 2024-02-28 | 2025-02-11 |  |  |  |
| PER1000 |  | CalTrans Permit | 250d | 2024-02-28 | 2025-02-11 | DES1060 | 0d |  |
| PER1010 |  | City & County Permits | 100d | 2024-02-28 | 2024-07-16 | DES1060 | 150d |  |
| PER1020 |  | Other Permit (TBD) | 100d | 2024-02-28 | 2024-07-16 | DES1060 | 150d |  |

| ID | WBS | Activity | Duration | Start | Finish | Predecessors | Total float | Free float |
| --- | --- | --- | --- | --- | --- | --- | --- | --- |
|  | 6 | **Public Affairs** |  | 2024-06-05 | 2024-10-22 |  |  |  |
| PUB1000 |  | Public Affairs / Community Outreach | 100d | 2024-06-05 | 2024-10-22 | DES1070 | 777d |  |
|  | 7 | **Land Services** |  | 2024-02-14 | 2024-09-10 |  |  |  |
| LAN1000 |  | Land Rights and Easement Acquisition | 150d | 2024-02-14 | 2024-09-10 | DES1050 | 110d |  |
| LAN1010 |  | Tribal Land Rights | 150d | 2024-02-14 | 2024-09-10 | DES1050 | 110d |  |
| LAN1020 |  | Laydown Yards | 150d | 2024-02-14 | 2024-09-10 | DES1050 | 110d |  |
|  | 8 | **Environmental** |  | 2023-10-25 | 2024-09-17 |  |  |  |
| ENV1000 |  | 10% Environmental Submittal | 25d | 2023-10-25 | 2023-11-30 | SUR1000 | 110d | 0d |
| ENV1010 |  | 10% Environmental Review | 15d | 2023-12-01 | 2023-12-21 | ENV1000 | 110d | 0d |
| ENV1020 |  | 30% Environmental Submittal | 25d | 2024-04-24 | 2024-05-28 | DES1030 | 105d | 0d |
| ENV1030 |  | 30% Environmental Review | 15d | 2024-05-29 | 2024-06-18 | ENV1020 | 105d | 0d |
| ENV1040 |  | 60% Environmental Submittal | 35d | 2024-06-19 | 2024-08-06 | ENV1030, DES1080, DES1140 | 105d | 0d |
| ENV1050 |  | 60% Environmental Release | 15d | 2024-08-07 | 2024-08-27 | ENV1040 | 120d |  |
| ENV1060 |  | BIA NEPA Submittal | 10d | 2024-08-07 | 2024-08-20 | ENV1040 | 105d | 0d |
| ENV1070 |  | BIA Received (Add 250 days, if needed) | 20d | 2024-08-21 | 2024-09-17 | ENV1060 | 105d |  |
|  | 9 | **Bid and Award - Contracting** |  | 2024-05-08 | 2024-08-20 |  |  |  |
|  | 1 | **Civil Contractor** |  | 2024-06-19 | 2024-08-20 |  |  |  |
| PCON100 |  | Initiate Performance Partnering Process @ 60% | 5d | 2024-06-19 | 2024-06-25 | DES1080 | 125d | 0d |
| PCON110 |  | Receive Estimate from Contractor | 15d | 2024-06-26 | 2024-07-16 | PCON100 | 125d | 0d |
| PCON120 |  | Bid Estimate Negotiations | 10d | 2024-07-17 | 2024-07-30 | PCON110 | 125d | 0d |
| PCON130 |  | Revise Estimate based on IFC | 5d | 2024-07-31 | 2024-08-06 | PCON120 | 125d | 0d |
| PCON140 |  | Issue Release | 10d | 2024-08-07 | 2024-08-20 | PCON130 | 125d |  |
|  | 2 | **Electrical Contractor** |  | 2024-05-08 | 2024-07-09 |  |  |  |
| PCON150 |  | Initiate Performance Partnering Process @ 60% | 5d | 2024-05-08 | 2024-05-14 | DES1140 | 185d | 0d |
| PCON160 |  | Receive Estimate from Contractor | 15d | 2024-05-15 | 2024-06-04 | PCON150 | 185d | 0d |
| PCON170 |  | Bid Estimate Negotiations | 10d | 2024-06-05 | 2024-06-18 | PCON160 | 185d | 0d |
| PCON180 |  | Revise Estimate based on IFC | 5d | 2024-06-19 | 2024-06-25 | PCON170 | 185d | 0d |
| PCON190 |  | Issue Release | 10d | 2024-06-26 | 2024-07-09 | PCON180 | 185d | 155d |

| ID | WBS | Activity | Type | Duration | Start | Finish | Predecessors | Total float | Free float | Resources | Cost | Construction Start | Construction Finish | ISD Year | ISD |
| --- | --- | --- | --- | --- | --- | --- | --- | --- | --- | --- | --- | --- | --- | --- | --- |
|  | 10 | **Pre-Construction** |  |  | 2025-02-12 | 2025-02-18 |  |  |  |  |  |  |  |  |  |
| PCON200 |  | Civil Pre-Construction Meeting (Civil Construction Ready) |  | 5d | 2025-02-12 | 2025-02-18 | PCON140, PER1000, PER1010, PER1020, PRO1010, PRO1050, LAN1020, LAN1010, LAN1000, ENV1050, ENV1070, DES1120, PCON1000 FF | 0d |  |  |  |  |  |  |  |
| PCON210 |  | Electrical - Pre-Construction Meeting (Electical Construction Ready) |  | 5d | 2025-02-12 | 2025-02-18 | PCON190, PRO1030, PER1000, PER1010, PER1020, LAN1020, LAN1010, LAN1000, ENV1050, ENV1070, DES1180 | 30d | 0d |  |  |  |  |  |  |
|  | 11 | **Construction** |  |  | 2025-02-19 | 2027-04-29 |  |  |  |  |  |  |  |  |  |
| CON1000 |  | Construction Summary | level of effort | 572d | 2025-02-19 | 2027-04-29 | CON1010 SS, CON1020 FF | 0d |  | Project Surveyor [215 h]; Survey Project Manager [60 h]; Licensed Land Surveyor [48 h]; Survey Crew (2 FTE) [573 h]; Survey CADD Drafter [125 h]; Survey Admin [50 h]; Principal Surveyor [9 h]; Project Coordinator [67 h]; Project Manager III [92 h]; Project Manager I [35 h]; Project Manager II [23 h]; Document Controls Specialist II [4 h]; Civil Designer I [24 h]; Civil Designer II [132 h]; Civil Designer III [92 h]; Electrical Designer I [86 h]; Electrical Designer II [165 h]; Electrical Designer III [161 h]; Engineer I [98 h]; Engineer II [219 h]; Engineer III [99 h]; Engineer IV [75 h]; Drafter I [99 h]; Drafter II [104 h]; Senior Designer [226 h]; Senior Engineer [50 h]; Principal Engineer [5 h]; Principal Program Manager [33 h]; Senior Planner [11 h]; Project Biologist [340 h]; Biologist II [499 h]; Biologist III [210 h]; Senior Biologist [7 h]; Project Planner [11 h]; Project Archaeologist [48 h]; Archaeologist I [593 h]; Project Environmental Scientist [35 h]; Program Manager [167 h]; Designer III [47 h]; Native American Monitor [746 h]; Archaeologist II [439 h]; QSP [180 h]; Administrative Requirements [25 h]; Subsurface Investigation [25 h]; Excavation Fill [25 h]; Base Courses [25 h]; Rigid Paving [25 h]; Equipment Cost [25 h]; Material Cost [25]; Electric Work [25 h]; Inspector [3520 h] | 54,082,787.9 | 2024-12-30 | 2027-03-09 | 2026 |  |
| CON1010 |  | Construction Start | milestone | 0d | 2025-02-19 | 2025-02-19 | PCON200, PCON210 | 692d |  |  |  |  |  |  |  |
| ISD1000 |  | ISD - Energize - Put in service |  | 1d | 2026-10-28 | 2026-10-28 | CON2000, CON3000, CON4000, CON5000, CON6000 | 251d |  | Mileage [25 h] |  |  |  | 2026 | 2026-10-28 |
| CON1020 |  | Construction Complete | milestone | 0d | 2027-04-29 | 2027-04-29 | CON2000, CON3000, CON4000, CON5000, CON6000, CON7000 | 0d |  |  |  |  |  |  |  |
|  | 1 | **Civil Construction** |  |  | 2025-02-19 | 2026-10-27 |  |  |  |  |  |  |  |  |  |
| CON2000 |  | Civil Construction (Trenching 300 feet/day) |  | 440d | 2025-02-19 | 2026-10-27 | PCON200 | 0d |  | Civil Crew [3520 h]; Mob/Demob [40 h]; Mob/Demob [80 h]; Potholing Crew [48 h]; Supervision [3520 h] |  |  |  |  |  |
|  | 2 | **Electrical Construction** |  |  | 2025-04-02 | 2026-10-27 |  |  |  |  |  |  |  |  |  |
| CON3000 |  | Electrical Construction |  | 410d | 2025-04-02 | 2026-10-27 | PCON210, CON2000 SS+30d | 0d |  | Electric Crew [1640 h] |  |  |  |  |  |
|  | 3 | **Service Cutover** |  |  | 2025-06-04 | 2026-10-27 |  |  |  |  |  |  |  |  |  |
| CON4000 |  | Service Cutover |  | 365d | 2025-06-04 | 2026-10-27 | DES1210, CON3000 SS+45d | 132d | 0d |  |  |  |  |  |  |
|  | 4 | **SCADA** |  |  | 2026-07-29 | 2026-10-27 |  |  |  |  |  |  |  |  |  |
| CON5000 |  | Scada Construction |  | 65d | 2026-07-29 | 2026-10-27 | CON2000 FF, CON3000 FF, DES1230 | 132d | 0d |  |  |  |  |  |  |
|  | 5 | **Substation** |  |  | 2026-07-29 | 2026-10-27 |  |  |  |  |  |  |  |  |  |
| CON6000 |  | Substation Construction |  | 65d | 2026-07-29 | 2026-10-27 | CON2000 FF, CON3000 FF | 132d | 0d |  |  |  |  |  |  |
|  | 6 | **OH RFS** |  |  | 2026-10-28 | 2027-04-29 |  |  |  |  |  |  |  |  |  |
| CON7000 |  | Overhead RFS (1000 feet per day) |  | 132d | 2026-10-28 | 2027-04-29 | CON3000 | 0d |  | RFS Crew [1056 h] |  |  |  |  |  |
|  | 7 | **(New WBS)** |  |  |  |  |  |  |  |  |  |  |  |  |  |
|  | 12 | **Closeout** |  |  | 2027-04-30 | 2027-10-14 |  |  |  |  |  |  |  |  |  |
| CLO1000 |  | Close Out Summary | level of effort | 120d | 2027-04-30 | 2027-10-14 | CON1020, CLO1010 FF | 0d |  | Project Surveyor [108 h]; Survey Project Manager [30 h]; Licensed Land Surveyor [24 h]; Survey Crew (2 FTE) [286 h]; Survey CADD Drafter [63 h]; Survey Admin [25 h]; Principal Surveyor [5 h]; Project Biologist [195 h]; Biologist II [82 h]; Biologist III [99 h]; Senior Biologist [12 h]; Project Archaeologist [22 h]; Project Environmental Scientist [39 h]; Program Manager [183 h]; Designer III [5 h]; Project Manager II [23 h]; Document Controls Specialist II [4 h]; Project Coordinator [67 h]; Project Manager III [92 h]; Project Manager I [35 h]; Senior Designer [338 h]; Senior Engineer [76 h]; Civil Designer I [35 h]; Civil Designer II [198 h]; Civil Designer III [138 h]; Electrical Designer I [129 h]; Electrical Designer II [248 h]; Electrical Designer III [241 h]; Engineer I [146 h]; Engineer II [328 h]; Engineer III [149 h]; Engineer IV [113 h]; Drafter I [148 h]; Drafter II [155 h]; Principal Engineer [8 h]; Principal Program Manager [4 h]; Senior Planner [1 h]; Project Biologist [38 h]; Biologist II [55 h]; Biologist III [23 h]; Senior Biologist [1 h]; Project Planner [1 h]; Project Archaeologist [5 h]; Archaeologist II [49 h]; Archaeologist I [66 h]; Project Environmental Scientist [4 h]; Program Manager [19 h]; Native American Monitor [83 h]; Archaeologist III [37 h]; Archaeologist II [185 h]; QSP [20 h]; Principal Program Manager [37 h] | 592,373.39 |  |  | 2026 |  |
| CLO1010 |  | Project Complete | milestone | 0d | 2027-10-14 | 2027-10-14 | CLO1020, CLO1030 | 0d |  |  |  |  |  |  |  |

| ID | WBS | Activity | Duration | Start | Finish | Predecessors | Total float |
| --- | --- | --- | --- | --- | --- | --- | --- |
|  | 1 | **Technical** |  | 2027-04-30 | 2027-07-22 |  |  |
| CLO1020 |  | GIS/As-Built and Records Complete | 60d | 2027-04-30 | 2027-07-22 | CON1020 | 60d |
|  | 2 | **Accounting** |  | 2027-04-30 | 2027-10-14 |  |  |
| CLO1030 |  | PO's complete, Work Order Reconcilled and Closed | 120d | 2027-04-30 | 2027-10-14 | CON1020 | 0d |

# P03-1

Schedule from Primavera P6, 2023-07-31 to 2027-10-28, data date 2023-05-01, costs in USD.

## Calendars

- Corporate - Standard Full Time: Mon-Fri 08:00-16:00; Sat-Sun off. Exceptions (off unless hours are given): 2023-11-23 to 2023-11-24, 2023-12-22, 2023-12-25, 2024-01-01.

## Resources

| Resource | Group | Rate |
| --- | --- | --- |
| Civil Crew | labor |  |
| Mob/Demob | labor |  |
| Potholing Crew | labor |  |
| Supervision | labor |  |
| Electric Crew | labor |  |
| RFS Crew | labor |  |
| Mileage | equipment |  |
| Project Surveyor | labor | 135 |
| Survey Project Manager | labor | 160 |
| Licensed Land Surveyor | labor | 180 |
| Survey Crew (2 FTE) | labor | 230 |
| Survey CADD Drafter | labor | 115 |
| Survey Admin | labor | 75 |
| Principal Surveyor | labor | 195 |
| Project Manager II | labor | 162.74 |
| Document Controls Specialist II | labor | 75.08 |
| Project Manager III | labor | 179.08 |
| Project Coordinator | labor | 90 |
| Project Manager I | labor | 114.05 |
| Senior Designer | labor | 166.21 |
| Senior Engineer | labor | 174.18 |
| Civil Designer I | labor | 99 |
| Civil Designer II | labor | 118 |
| Civil Designer III | labor | 135 |
| Electrical Designer I | labor | 99 |
| Electrical Designer II | labor | 118 |
| Electrical Designer III | labor | 135 |
| Engineer I | labor | 114 |
| Engineer II | labor | 132 |
| Engineer III | labor | 152 |
| Engineer IV | labor | 170 |
| Drafter I | labor | 75 |
| Drafter II | labor | 92 |
| Principal Engineer | labor | 208.7 |
| Project Manager II | labor | 165.99 |
| Document Controls Specialist II | labor | 78.08 |
| Principal Program Manager | labor | 271.57 |
| Senior Planner | labor | 165.14 |
| Project Biologist | labor | 131.2 |
| Biologist II | labor | 78 |
| Biologist III | labor | 107.33 |
| Senior Biologist | labor | 157.43 |
| Project Planner | labor | 132.12 |
| Project Archaeologist | labor | 101 |
| Archaeologist I | labor | 66.06 |
| Project Environmental Scientist | labor | 108.77 |
| Program Manager | labor | 172.55 |
| Designer III | labor | 112.71 |
| Native American Monitor | labor | 70 |
| Archaeologist II | labor | 71.79 |
| QSP | labor | 120.79 |
| Administrative Requirements | labor | 204000 |
| Subsurface Investigation | labor | 10200 |
| Excavation Fill | labor | 680106 |
| Base Courses | labor | 80135 |
| Rigid Paving | labor | 35243 |
| Equipment Cost | equipment | 327000 |
| Material Cost | material | 623000 |
| Electric Work | labor | 152561 |
| Inspector | labor | 150 |
| Archaeologist III | labor | 89.16 |

## Schedule

| ID | WBS | Activity | Type | Duration | Start | Finish | Predecessors | Total float | Free float | Constraint | Resources | Cost | ISD Year |
| --- | --- | --- | --- | --- | --- | --- | --- | --- | --- | --- | --- | --- | --- |
| PCON1000 |  | Pre-Construction Summary | level of effort | 412d | 2023-07-31 | 2025-03-04 | SCO1000 SS | 0d |  |  |  |  | 2026 |
|  | 1 | **Scoping** |  |  | 2023-07-31 | 2023-08-22 |  |  |  |  |  |  |  |
| SCO1000 |  | Bundling / Phasing of circuits for project sequencing |  | 10d | 2023-07-31 | 2023-08-11 |  | 0d |  | start on or after 2023-07-31 |  |  |  |
| SCO1010 |  | Constructability Review |  | 5d | 2023-08-14 | 2023-08-18 | SCO1000 | 0d |  |  |  |  |  |
| SCO1020 |  | SDG&E Review |  | 2d | 2023-08-21 | 2023-08-22 | SCO1010 | 0d |  |  |  |  |  |
|  | 2 | **Planning** |  |  | 2023-08-23 | 2023-11-07 |  |  |  |  |  |  |  |
| PLA1000 |  | Workorder Setup |  | 5d | 2023-08-23 | 2023-08-29 | SCO1020 | 0d |  |  |  |  |  |
| SUR1000 |  | Survey and LiDAR |  | 50d | 2023-08-30 | 2023-11-07 | PLA1000 | 0d |  |  | Project Surveyor [1830 h]; Survey Project Manager [512 h]; Licensed Land Surveyor [405 h]; Survey Crew (2 FTE) [4867 h]; Survey CADD Drafter [1065 h]; Survey Admin [426 h]; Principal Surveyor [77 h] | 1,690,720 | 2026 |
|  | 3 | **Design** |  |  | 2023-11-08 | 2025-02-25 |  |  |  |  |  |  |  |
| DES1000 |  | Design Summary | level of effort | 335d | 2023-11-08 | 2025-02-25 | DES1040 SS | 512d | 0d |  | Project Manager II [420 h]; Document Controls Specialist II [70 h]; Project Manager III [1657 h]; Project Coordinator [1199 h]; Project Manager I [631 h]; Senior Designer [1692 h]; Senior Engineer [378 h]; Civil Designer I [177 h]; Civil Designer II [988 h]; Civil Designer III [692 h]; Electrical Designer I [645 h]; Electrical Designer II [1241 h]; Electrical Designer III [1207 h]; Engineer I [732 h]; Engineer II [1639 h]; Engineer III [744 h]; Engineer IV [565 h]; Drafter I [739 h]; Drafter II [777 h]; Principal Engineer [40 h] | 2,142,240.87 | 2026 |
|  | 6 | **Geotech, Seismic and Potholing** |  |  | 2024-01-10 | 2024-05-07 |  |  |  |  |  |  |  |
| DES1010 |  | Seismic / Geotech Submittal |  | 25d | 2024-01-10 | 2024-02-13 | ENV1010 | 110d | 0d |  |  |  |  |
| DES1020 |  | Potholing Submittal |  | 25d | 2024-02-14 | 2024-03-19 | DES1010 | 110d | 5d |  |  |  |  |
| DES1030 |  | Potholing Release /Perform Potholing |  | 30d | 2024-03-27 | 2024-05-07 | DES1020, DES1130 FF | 105d | 0d |  |  |  |  |
|  | 1 | **Civil Design** |  |  | 2023-11-08 | 2025-02-25 |  |  |  |  |  |  |  |
| DES1040 |  | 10% Submittal |  | 25d | 2023-11-08 | 2023-12-14 | SUR1000 | 0d |  |  |  |  |  |
| DES1050 |  | 30% Submittal |  | 50d | 2023-12-15 | 2024-02-27 | DES1040 | 0d |  |  |  |  |  |
| DES1060 |  | 30% Review |  | 10d | 2024-02-28 | 2024-03-12 | DES1050 | 0d |  |  |  |  |  |
| DES1070 |  | 60% Submittal |  | 70d | 2024-03-13 | 2024-06-18 | DES1060, DES1200, DES1030 FF | 75d | 0d |  |  |  |  |
| DES1080 |  | 60% Review |  | 10d | 2024-06-19 | 2024-07-02 | DES1070 | 75d | 0d |  |  |  |  |
| DES1090 |  | 90% Submittal |  | 45d | 2024-07-03 | 2024-09-03 | DES1080 | 75d | 0d |  |  |  |  |
| DES1100 |  | 90% Review |  | 10d | 2024-09-04 | 2024-09-17 | DES1090 | 75d | 0d |  |  |  |  |
| DES1110 |  | 100% Submittal |  | 20d | 2024-09-18 | 2024-10-15 | DES1100 | 85d | 0d |  |  |  |  |
| DES1120 |  | Issue IFC Design Package |  | 10d | 2025-02-12 | 2025-02-25 | DES1110, DES1000 FF, PER1000 FF, PER1010 FF, PER1020 FF | 0d |  |  |  |  |  |

| ID | WBS | Activity | Duration | Start | Finish | Predecessors | Total float | Free float |
| --- | --- | --- | --- | --- | --- | --- | --- | --- |
|  | 2 | **Electrical Design** |  | 2024-02-14 | 2025-02-25 |  |  |  |
| DES1130 |  | 60% Submittal | 60d | 2024-02-14 | 2024-05-07 | DES1200 | 105d | 0d |
| DES1140 |  | 60% Review | 10d | 2024-05-08 | 2024-05-21 | DES1130 | 115d | 0d |
| DES1150 |  | 90% Submittal | 50d | 2024-05-22 | 2024-07-30 | DES1140 | 140d | 0d |
| DES1160 |  | 90% Review | 10d | 2024-07-31 | 2024-08-13 | DES1150 | 140d | 0d |
| DES1170 |  | 100% Submittal | 20d | 2024-08-14 | 2024-09-10 | DES1160 | 140d | 110d |
| DES1180 |  | Issue IFC Design Package | 10d | 2025-02-12 | 2025-02-25 | DES1170, DES1000 FF, PER1000 FF, PER1010 FF, PER1020 FF | 30d | 0d |
|  | 3 | **Service Cutover Design** |  | 2023-12-15 | 2024-10-29 |  |  |  |
| DES1190 |  | Issue Services Worksheet to Design Firms | 20d | 2023-12-15 | 2024-01-16 | DES1040 | 95d | 0d |
| DES1200 |  | Receive Services Worksheet and Cable Info from Design Firms | 20d | 2024-01-17 | 2024-02-13 | DES1190 | 95d | 0d |
| DES1210 |  | Issue to Trench Inspectors | 10d | 2024-10-16 | 2024-10-29 | DES1200, DES1110, DES1000 FF | 297d | 165d |
|  | 4 | **Substation Engineering Design** |  | 2023-11-08 | 2024-01-23 |  |  |  |
| DES1220 |  | SED Design | 30d | 2023-11-08 | 2023-12-21 | SUR1000 | 797d | 0d |
| DES1230 |  | Issue IFC Design Package | 20d | 2023-12-26 | 2024-01-23 | DES1220, DES1000 FF | 797d | 665d |
|  | 5 | **Remove from Service (Existing OH) Design** |  |  |  |  |  |  |
|  | 4 | **Procurement** |  | 2024-03-13 | 2024-11-12 |  |  |  |
| PRO1000 |  | Civil BOM - Long Lead @ 30% | 15d | 2024-03-13 | 2024-04-02 | DES1060 | 85d | 0d |
| PRO1010 |  | Order Long Lead Civil Material | 150d | 2024-04-03 | 2024-10-29 | PRO1000 | 85d |  |
| PRO1020 |  | Electrical BOM - Long Lead @ 60% | 15d | 2024-05-22 | 2024-06-11 | DES1140 | 115d | 0d |
| PRO1030 |  | Order Long Lead Electrical Materials | 100d | 2024-06-12 | 2024-10-29 | PRO1020 | 115d | 85d |
| PRO1040 |  | BOM - Short Lead @ 60% | 15d | 2024-09-18 | 2024-10-08 | DES1100 | 75d | 0d |
| PRO1050 |  | Order Short Lead Materials | 25d | 2024-10-09 | 2024-11-12 | PRO1040 | 75d |  |
|  | 5 | **Permitting** |  | 2024-03-13 | 2025-02-25 |  |  |  |
| PER1000 |  | CalTrans Permit | 250d | 2024-03-13 | 2025-02-25 | DES1060 | 0d |  |
| PER1010 |  | City & County Permits | 100d | 2024-03-13 | 2024-07-30 | DES1060 | 150d |  |
| PER1020 |  | Other Permit (TBD) | 100d | 2024-03-13 | 2024-07-30 | DES1060 | 150d |  |

| ID | WBS | Activity | Duration | Start | Finish | Predecessors | Total float | Free float |
| --- | --- | --- | --- | --- | --- | --- | --- | --- |
|  | 6 | **Public Affairs** |  | 2024-06-19 | 2024-11-05 |  |  |  |
| PUB1000 |  | Public Affairs / Community Outreach | 100d | 2024-06-19 | 2024-11-05 | DES1070 | 777d |  |
|  | 7 | **Land Services** |  | 2024-02-28 | 2024-09-24 |  |  |  |
| LAN1000 |  | Land Rights and Easement Acquisition | 150d | 2024-02-28 | 2024-09-24 | DES1050 | 110d |  |
| LAN1010 |  | Tribal Land Rights | 150d | 2024-02-28 | 2024-09-24 | DES1050 | 110d |  |
| LAN1020 |  | Laydown Yards | 150d | 2024-02-28 | 2024-09-24 | DES1050 | 110d |  |
|  | 8 | **Environmental** |  | 2023-11-08 | 2024-10-01 |  |  |  |
| ENV1000 |  | 10% Environmental Submittal | 25d | 2023-11-08 | 2023-12-14 | SUR1000 | 110d | 0d |
| ENV1010 |  | 10% Environmental Review | 15d | 2023-12-15 | 2024-01-09 | ENV1000 | 110d | 0d |
| ENV1020 |  | 30% Environmental Submittal | 25d | 2024-05-08 | 2024-06-11 | DES1030 | 105d | 0d |
| ENV1030 |  | 30% Environmental Review | 15d | 2024-06-12 | 2024-07-02 | ENV1020 | 105d | 0d |
| ENV1040 |  | 60% Environmental Submittal | 35d | 2024-07-03 | 2024-08-20 | ENV1030, DES1080, DES1140 | 105d | 0d |
| ENV1050 |  | 60% Environmental Release | 15d | 2024-08-21 | 2024-09-10 | ENV1040 | 120d |  |
| ENV1060 |  | BIA NEPA Submittal | 10d | 2024-08-21 | 2024-09-03 | ENV1040 | 105d | 0d |
| ENV1070 |  | BIA Received (Add 250 days, if needed) | 20d | 2024-09-04 | 2024-10-01 | ENV1060 | 105d |  |
|  | 9 | **Bid and Award - Contracting** |  | 2024-05-22 | 2024-09-03 |  |  |  |
|  | 1 | **Civil Contractor** |  | 2024-07-03 | 2024-09-03 |  |  |  |
| PCON100 |  | Initiate Performance Partnering Process @ 60% | 5d | 2024-07-03 | 2024-07-09 | DES1080 | 125d | 0d |
| PCON110 |  | Receive Estimate from Contractor | 15d | 2024-07-10 | 2024-07-30 | PCON100 | 125d | 0d |
| PCON120 |  | Bid Estimate Negotiations | 10d | 2024-07-31 | 2024-08-13 | PCON110 | 125d | 0d |
| PCON130 |  | Revise Estimate based on IFC | 5d | 2024-08-14 | 2024-08-20 | PCON120 | 125d | 0d |
| PCON140 |  | Issue Release | 10d | 2024-08-21 | 2024-09-03 | PCON130 | 125d |  |
|  | 2 | **Electrical Contractor** |  | 2024-05-22 | 2024-07-23 |  |  |  |
| PCON150 |  | Initiate Performance Partnering Process @ 60% | 5d | 2024-05-22 | 2024-05-28 | DES1140 | 185d | 0d |
| PCON160 |  | Receive Estimate from Contractor | 15d | 2024-05-29 | 2024-06-18 | PCON150 | 185d | 0d |
| PCON170 |  | Bid Estimate Negotiations | 10d | 2024-06-19 | 2024-07-02 | PCON160 | 185d | 0d |
| PCON180 |  | Revise Estimate based on IFC | 5d | 2024-07-03 | 2024-07-09 | PCON170 | 185d | 0d |
| PCON190 |  | Issue Release | 10d | 2024-07-10 | 2024-07-23 | PCON180 | 185d | 155d |

| ID | WBS | Activity | Type | Duration | Start | Finish | Predecessors | Total float | Free float | Resources | Cost | Construction Start | Construction Finish | ISD Year | ISD |
| --- | --- | --- | --- | --- | --- | --- | --- | --- | --- | --- | --- | --- | --- | --- | --- |
|  | 10 | **Pre-Construction** |  |  | 2025-02-26 | 2025-03-04 |  |  |  |  |  |  |  |  |  |
| PCON200 |  | Civil Pre-Construction Meeting (Civil Construction Ready) |  | 5d | 2025-02-26 | 2025-03-04 | PCON140, PER1000, PER1010, PER1020, PRO1010, PRO1050, LAN1020, LAN1010, LAN1000, ENV1050, ENV1070, DES1120, PCON1000 FF | 0d |  |  |  |  |  |  |  |
| PCON210 |  | Electrical - Pre-Construction Meeting (Electical Construction Ready) |  | 5d | 2025-02-26 | 2025-03-04 | PCON190, PRO1030, PER1000, PER1010, PER1020, LAN1020, LAN1010, LAN1000, ENV1050, ENV1070, DES1180 | 30d | 0d |  |  |  |  |  |  |
|  | 11 | **Construction** |  |  | 2025-03-05 | 2027-05-13 |  |  |  |  |  |  |  |  |  |
| CON1000 |  | Construction Summary | level of effort | 572d | 2025-03-05 | 2027-05-13 | CON1010 SS, CON1020 FF | 0d |  | Project Surveyor [215 h]; Survey Project Manager [60 h]; Licensed Land Surveyor [48 h]; Survey Crew (2 FTE) [573 h]; Survey CADD Drafter [125 h]; Survey Admin [50 h]; Principal Surveyor [9 h]; Project Coordinator [67 h]; Project Manager III [92 h]; Project Manager I [35 h]; Project Manager II [23 h]; Document Controls Specialist II [4 h]; Civil Designer I [24 h]; Civil Designer II [132 h]; Civil Designer III [92 h]; Electrical Designer I [86 h]; Electrical Designer II [165 h]; Electrical Designer III [161 h]; Engineer I [98 h]; Engineer II [219 h]; Engineer III [99 h]; Engineer IV [75 h]; Drafter I [99 h]; Drafter II [104 h]; Senior Designer [226 h]; Senior Engineer [50 h]; Principal Engineer [5 h]; Principal Program Manager [33 h]; Senior Planner [11 h]; Project Biologist [340 h]; Biologist II [499 h]; Biologist III [210 h]; Senior Biologist [7 h]; Project Planner [11 h]; Project Archaeologist [48 h]; Archaeologist I [593 h]; Project Environmental Scientist [35 h]; Program Manager [167 h]; Designer III [47 h]; Native American Monitor [746 h]; Archaeologist II [439 h]; QSP [180 h]; Administrative Requirements [25 h]; Subsurface Investigation [25 h]; Excavation Fill [25 h]; Base Courses [25 h]; Rigid Paving [25 h]; Equipment Cost [25 h]; Material Cost [25]; Electric Work [25 h]; Inspector [3520 h] | 54,082,787.9 | 2025-01-29 | 2027-04-08 | 2026 |  |
| CON1010 |  | Construction Start | milestone | 0d | 2025-03-05 | 2025-03-05 | PCON200, PCON210 | 692d |  |  |  |  |  |  |  |
| ISD1000 |  | ISD - Energize - Put in service |  | 1d | 2026-11-11 | 2026-11-11 | CON2000, CON3000, CON4000, CON5000, CON6000 | 251d |  | Mileage [25 h] |  |  |  | 2026 | 2026-11-11 |
| CON1020 |  | Construction Complete | milestone | 0d | 2027-05-13 | 2027-05-13 | CON2000, CON3000, CON4000, CON5000, CON6000, CON7000 | 0d |  |  |  |  |  |  |  |
|  | 1 | **Civil Construction** |  |  | 2025-03-05 | 2026-11-10 |  |  |  |  |  |  |  |  |  |
| CON2000 |  | Civil Construction (Trenching 300 feet/day) |  | 440d | 2025-03-05 | 2026-11-10 | PCON200 | 0d |  | Civil Crew [7040 h]; Mob/Demob [40 h]; Mob/Demob [80 h]; Potholing Crew [48 h]; Supervision [7040 h] |  |  |  |  |  |
|  | 2 | **Electrical Construction** |  |  | 2025-04-16 | 2026-11-10 |  |  |  |  |  |  |  |  |  |
| CON3000 |  | Electrical Construction |  | 410d | 2025-04-16 | 2026-11-10 | PCON210, CON2000 SS+30d | 0d |  | Electric Crew [1640 h] |  |  |  |  |  |
|  | 3 | **Service Cutover** |  |  | 2025-06-18 | 2026-11-10 |  |  |  |  |  |  |  |  |  |
| CON4000 |  | Service Cutover |  | 365d | 2025-06-18 | 2026-11-10 | DES1210, CON3000 SS+45d | 132d | 0d |  |  |  |  |  |  |
|  | 4 | **SCADA** |  |  | 2026-08-12 | 2026-11-10 |  |  |  |  |  |  |  |  |  |
| CON5000 |  | Scada Construction |  | 65d | 2026-08-12 | 2026-11-10 | CON2000 FF, CON3000 FF, DES1230 | 132d | 0d |  |  |  |  |  |  |
|  | 5 | **Substation** |  |  | 2026-08-12 | 2026-11-10 |  |  |  |  |  |  |  |  |  |
| CON6000 |  | Substation Construction |  | 65d | 2026-08-12 | 2026-11-10 | CON2000 FF, CON3000 FF | 132d | 0d |  |  |  |  |  |  |
|  | 6 | **OH RFS** |  |  | 2026-11-11 | 2027-05-13 |  |  |  |  |  |  |  |  |  |
| CON7000 |  | Overhead RFS (1000 feet per day) |  | 132d | 2026-11-11 | 2027-05-13 | CON3000 | 0d |  | RFS Crew [1056 h] |  |  |  |  |  |
|  | 7 | **(New WBS)** |  |  |  |  |  |  |  |  |  |  |  |  |  |
|  | 12 | **Closeout** |  |  | 2027-05-14 | 2027-10-28 |  |  |  |  |  |  |  |  |  |
| CLO1000 |  | Close Out Summary | level of effort | 120d | 2027-05-14 | 2027-10-28 | CON1020, CLO1010 FF | 0d |  | Project Surveyor [108 h]; Survey Project Manager [30 h]; Licensed Land Surveyor [24 h]; Survey Crew (2 FTE) [286 h]; Survey CADD Drafter [63 h]; Survey Admin [25 h]; Principal Surveyor [5 h]; Project Biologist [195 h]; Biologist II [82 h]; Biologist III [99 h]; Senior Biologist [12 h]; Project Archaeologist [22 h]; Project Environmental Scientist [39 h]; Program Manager [183 h]; Designer III [5 h]; Project Manager II [23 h]; Document Controls Specialist II [4 h]; Project Coordinator [67 h]; Project Manager III [92 h]; Project Manager I [35 h]; Senior Designer [338 h]; Senior Engineer [76 h]; Civil Designer I [35 h]; Civil Designer II [198 h]; Civil Designer III [138 h]; Electrical Designer I [129 h]; Electrical Designer II [248 h]; Electrical Designer III [241 h]; Engineer I [146 h]; Engineer II [328 h]; Engineer III [149 h]; Engineer IV [113 h]; Drafter I [148 h]; Drafter II [155 h]; Principal Engineer [8 h]; Principal Program Manager [4 h]; Senior Planner [1 h]; Project Biologist [38 h]; Biologist II [55 h]; Biologist III [23 h]; Senior Biologist [1 h]; Project Planner [1 h]; Project Archaeologist [5 h]; Archaeologist II [49 h]; Archaeologist I [66 h]; Project Environmental Scientist [4 h]; Program Manager [19 h]; Native American Monitor [83 h]; Archaeologist III [37 h]; Archaeologist II [185 h]; QSP [20 h]; Principal Program Manager [37 h] | 592,373.39 |  |  | 2026 |  |
| CLO1010 |  | Project Complete | milestone | 0d | 2027-10-28 | 2027-10-28 | CLO1020, CLO1030 | 0d |  |  |  |  |  |  |  |

| ID | WBS | Activity | Duration | Start | Finish | Predecessors | Total float |
| --- | --- | --- | --- | --- | --- | --- | --- |
|  | 1 | **Technical** |  | 2027-05-14 | 2027-08-05 |  |  |
| CLO1020 |  | GIS/As-Built and Records Complete | 60d | 2027-05-14 | 2027-08-05 | CON1020 | 60d |
|  | 2 | **Accounting** |  | 2027-05-14 | 2027-10-28 |  |  |
| CLO1030 |  | PO's complete, Work Order Reconcilled and Closed | 120d | 2027-05-14 | 2027-10-28 | CON1020 | 0d |

# P04-1

Schedule from Primavera P6, 2023-08-07 to 2027-11-04, data date 2023-05-01, costs in USD.

## Calendars

- Corporate - Standard Full Time: Mon-Fri 08:00-16:00; Sat-Sun off. Exceptions (off unless hours are given): 2023-11-23 to 2023-11-24, 2023-12-22, 2023-12-25, 2024-01-01.

## Resources

| Resource | Group | Rate |
| --- | --- | --- |
| Civil Crew | labor |  |
| Mob/Demob | labor |  |
| Potholing Crew | labor |  |
| Supervision | labor |  |
| Electric Crew | labor |  |
| RFS Crew | labor |  |
| Mileage | equipment |  |
| Project Surveyor | labor | 135 |
| Survey Project Manager | labor | 160 |
| Licensed Land Surveyor | labor | 180 |
| Survey Crew (2 FTE) | labor | 230 |
| Survey CADD Drafter | labor | 115 |
| Survey Admin | labor | 75 |
| Principal Surveyor | labor | 195 |
| Project Manager II | labor | 162.74 |
| Document Controls Specialist II | labor | 75.08 |
| Project Manager III | labor | 179.08 |
| Project Coordinator | labor | 90 |
| Project Manager I | labor | 114.05 |
| Senior Designer | labor | 166.21 |
| Senior Engineer | labor | 174.18 |
| Civil Designer I | labor | 99 |
| Civil Designer II | labor | 118 |
| Civil Designer III | labor | 135 |
| Electrical Designer I | labor | 99 |
| Electrical Designer II | labor | 118 |
| Electrical Designer III | labor | 135 |
| Engineer I | labor | 114 |
| Engineer II | labor | 132 |
| Engineer III | labor | 152 |
| Engineer IV | labor | 170 |
| Drafter I | labor | 75 |
| Drafter II | labor | 92 |
| Principal Engineer | labor | 208.7 |
| Project Manager II | labor | 165.99 |
| Document Controls Specialist II | labor | 78.08 |
| Principal Program Manager | labor | 271.57 |
| Senior Planner | labor | 165.14 |
| Project Biologist | labor | 131.2 |
| Biologist II | labor | 78 |
| Biologist III | labor | 107.33 |
| Senior Biologist | labor | 157.43 |
| Project Planner | labor | 132.12 |
| Project Archaeologist | labor | 101 |
| Archaeologist I | labor | 66.06 |
| Project Environmental Scientist | labor | 108.77 |
| Program Manager | labor | 172.55 |
| Designer III | labor | 112.71 |
| Native American Monitor | labor | 70 |
| Archaeologist II | labor | 71.79 |
| QSP | labor | 120.79 |
| Administrative Requirements | labor | 204000 |
| Subsurface Investigation | labor | 10200 |
| Excavation Fill | labor | 680106 |
| Base Courses | labor | 80135 |
| Rigid Paving | labor | 35243 |
| Equipment Cost | equipment | 327000 |
| Material Cost | material | 623000 |
| Electric Work | labor | 152561 |
| Inspector | labor | 150 |
| Archaeologist III | labor | 89.16 |

## Schedule

| ID | WBS | Activity | Type | Duration | Start | Finish | Predecessors | Total float | Free float | Constraint | Resources | Cost | ISD Year |
| --- | --- | --- | --- | --- | --- | --- | --- | --- | --- | --- | --- | --- | --- |
| PCON1000 |  | Pre-Construction Summary | level of effort | 412d | 2023-08-07 | 2025-03-11 | SCO1000 SS | 0d |  |  |  |  | 2026 |
|  | 1 | **Scoping** |  |  | 2023-08-07 | 2023-08-29 |  |  |  |  |  |  |  |
| SCO1000 |  | Bundling / Phasing of circuits for project sequencing |  | 10d | 2023-08-07 | 2023-08-18 |  | 0d |  | start on or after 2023-08-07 |  |  |  |
| SCO1010 |  | Constructability Review |  | 5d | 2023-08-21 | 2023-08-25 | SCO1000 | 0d |  |  |  |  |  |
| SCO1020 |  | SDG&E Review |  | 2d | 2023-08-28 | 2023-08-29 | SCO1010 | 0d |  |  |  |  |  |
|  | 2 | **Planning** |  |  | 2023-08-30 | 2023-11-14 |  |  |  |  |  |  |  |
| PLA1000 |  | Workorder Setup |  | 5d | 2023-08-30 | 2023-09-05 | SCO1020 | 0d |  |  |  |  |  |
| SUR1000 |  | Survey and LiDAR |  | 50d | 2023-09-06 | 2023-11-14 | PLA1000 | 0d |  |  | Project Surveyor [1830 h]; Survey Project Manager [512 h]; Licensed Land Surveyor [405 h]; Survey Crew (2 FTE) [4867 h]; Survey CADD Drafter [1065 h]; Survey Admin [426 h]; Principal Surveyor [77 h] | 1,690,720 | 2026 |
|  | 3 | **Design** |  |  | 2023-11-15 | 2025-03-04 |  |  |  |  |  |  |  |
| DES1000 |  | Design Summary | level of effort | 335d | 2023-11-15 | 2025-03-04 | DES1040 SS | 512d | 0d |  | Project Manager II [420 h]; Document Controls Specialist II [70 h]; Project Manager III [1657 h]; Project Coordinator [1199 h]; Project Manager I [631 h]; Senior Designer [1692 h]; Senior Engineer [378 h]; Civil Designer I [177 h]; Civil Designer II [988 h]; Civil Designer III [692 h]; Electrical Designer I [645 h]; Electrical Designer II [1241 h]; Electrical Designer III [1207 h]; Engineer I [732 h]; Engineer II [1639 h]; Engineer III [744 h]; Engineer IV [565 h]; Drafter I [739 h]; Drafter II [777 h]; Principal Engineer [40 h] | 2,142,240.87 | 2026 |
|  | 6 | **Geotech, Seismic and Potholing** |  |  | 2024-01-17 | 2024-05-14 |  |  |  |  |  |  |  |
| DES1010 |  | Seismic / Geotech Submittal |  | 25d | 2024-01-17 | 2024-02-20 | ENV1010 | 110d | 0d |  |  |  |  |
| DES1020 |  | Potholing Submittal |  | 25d | 2024-02-21 | 2024-03-26 | DES1010 | 110d | 5d |  |  |  |  |
| DES1030 |  | Potholing Release /Perform Potholing |  | 30d | 2024-04-03 | 2024-05-14 | DES1020, DES1130 FF | 105d | 0d |  |  |  |  |
|  | 1 | **Civil Design** |  |  | 2023-11-15 | 2025-03-04 |  |  |  |  |  |  |  |
| DES1040 |  | 10% Submittal |  | 25d | 2023-11-15 | 2023-12-21 | SUR1000 | 0d |  |  |  |  |  |
| DES1050 |  | 30% Submittal |  | 50d | 2023-12-26 | 2024-03-05 | DES1040 | 0d |  |  |  |  |  |
| DES1060 |  | 30% Review |  | 10d | 2024-03-06 | 2024-03-19 | DES1050 | 0d |  |  |  |  |  |
| DES1070 |  | 60% Submittal |  | 70d | 2024-03-20 | 2024-06-25 | DES1060, DES1200, DES1030 FF | 75d | 0d |  |  |  |  |
| DES1080 |  | 60% Review |  | 10d | 2024-06-26 | 2024-07-09 | DES1070 | 75d | 0d |  |  |  |  |
| DES1090 |  | 90% Submittal |  | 45d | 2024-07-10 | 2024-09-10 | DES1080 | 75d | 0d |  |  |  |  |
| DES1100 |  | 90% Review |  | 10d | 2024-09-11 | 2024-09-24 | DES1090 | 75d | 0d |  |  |  |  |
| DES1110 |  | 100% Submittal |  | 20d | 2024-09-25 | 2024-10-22 | DES1100 | 85d | 0d |  |  |  |  |
| DES1120 |  | Issue IFC Design Package |  | 10d | 2025-02-19 | 2025-03-04 | DES1110, DES1000 FF, PER1000 FF, PER1010 FF, PER1020 FF | 0d |  |  |  |  |  |

| ID | WBS | Activity | Duration | Start | Finish | Predecessors | Total float | Free float |
| --- | --- | --- | --- | --- | --- | --- | --- | --- |
|  | 2 | **Electrical Design** |  | 2024-02-21 | 2025-03-04 |  |  |  |
| DES1130 |  | 60% Submittal | 60d | 2024-02-21 | 2024-05-14 | DES1200 | 105d | 0d |
| DES1140 |  | 60% Review | 10d | 2024-05-15 | 2024-05-28 | DES1130 | 115d | 0d |
| DES1150 |  | 90% Submittal | 50d | 2024-05-29 | 2024-08-06 | DES1140 | 140d | 0d |
| DES1160 |  | 90% Review | 10d | 2024-08-07 | 2024-08-20 | DES1150 | 140d | 0d |
| DES1170 |  | 100% Submittal | 20d | 2024-08-21 | 2024-09-17 | DES1160 | 140d | 110d |
| DES1180 |  | Issue IFC Design Package | 10d | 2025-02-19 | 2025-03-04 | DES1170, DES1000 FF, PER1000 FF, PER1010 FF, PER1020 FF | 30d | 0d |
|  | 3 | **Service Cutover Design** |  | 2023-12-26 | 2024-11-05 |  |  |  |
| DES1190 |  | Issue Services Worksheet to Design Firms | 20d | 2023-12-26 | 2024-01-23 | DES1040 | 95d | 0d |
| DES1200 |  | Receive Services Worksheet and Cable Info from Design Firms | 20d | 2024-01-24 | 2024-02-20 | DES1190 | 95d | 0d |
| DES1210 |  | Issue to Trench Inspectors | 10d | 2024-10-23 | 2024-11-05 | DES1200, DES1110, DES1000 FF | 297d | 165d |
|  | 4 | **Substation Engineering Design** |  | 2023-11-15 | 2024-01-30 |  |  |  |
| DES1220 |  | SED Design | 30d | 2023-11-15 | 2024-01-02 | SUR1000 | 797d | 0d |
| DES1230 |  | Issue IFC Design Package | 20d | 2024-01-03 | 2024-01-30 | DES1220, DES1000 FF | 797d | 665d |
|  | 5 | **Remove from Service (Existing OH) Design** |  |  |  |  |  |  |
|  | 4 | **Procurement** |  | 2024-03-20 | 2024-11-19 |  |  |  |
| PRO1000 |  | Civil BOM - Long Lead @ 30% | 15d | 2024-03-20 | 2024-04-09 | DES1060 | 85d | 0d |
| PRO1010 |  | Order Long Lead Civil Material | 150d | 2024-04-10 | 2024-11-05 | PRO1000 | 85d |  |
| PRO1020 |  | Electrical BOM - Long Lead @ 60% | 15d | 2024-05-29 | 2024-06-18 | DES1140 | 115d | 0d |
| PRO1030 |  | Order Long Lead Electrical Materials | 100d | 2024-06-19 | 2024-11-05 | PRO1020 | 115d | 85d |
| PRO1040 |  | BOM - Short Lead @ 60% | 15d | 2024-09-25 | 2024-10-15 | DES1100 | 75d | 0d |
| PRO1050 |  | Order Short Lead Materials | 25d | 2024-10-16 | 2024-11-19 | PRO1040 | 75d |  |
|  | 5 | **Permitting** |  | 2024-03-20 | 2025-03-04 |  |  |  |
| PER1000 |  | CalTrans Permit | 250d | 2024-03-20 | 2025-03-04 | DES1060 | 0d |  |
| PER1010 |  | City & County Permits | 100d | 2024-03-20 | 2024-08-06 | DES1060 | 150d |  |
| PER1020 |  | Other Permit (TBD) | 100d | 2024-03-20 | 2024-08-06 | DES1060 | 150d |  |

| ID | WBS | Activity | Duration | Start | Finish | Predecessors | Total float | Free float |
| --- | --- | --- | --- | --- | --- | --- | --- | --- |
|  | 6 | **Public Affairs** |  | 2024-06-26 | 2024-11-12 |  |  |  |
| PUB1000 |  | Public Affairs / Community Outreach | 100d | 2024-06-26 | 2024-11-12 | DES1070 | 777d |  |
|  | 7 | **Land Services** |  | 2024-03-06 | 2024-10-01 |  |  |  |
| LAN1000 |  | Land Rights and Easement Acquisition | 150d | 2024-03-06 | 2024-10-01 | DES1050 | 110d |  |
| LAN1010 |  | Tribal Land Rights | 150d | 2024-03-06 | 2024-10-01 | DES1050 | 110d |  |
| LAN1020 |  | Laydown Yards | 150d | 2024-03-06 | 2024-10-01 | DES1050 | 110d |  |
|  | 8 | **Environmental** |  | 2023-11-15 | 2024-10-08 |  |  |  |
| ENV1000 |  | 10% Environmental Submittal | 25d | 2023-11-15 | 2023-12-21 | SUR1000 | 110d | 0d |
| ENV1010 |  | 10% Environmental Review | 15d | 2023-12-26 | 2024-01-16 | ENV1000 | 110d | 0d |
| ENV1020 |  | 30% Environmental Submittal | 25d | 2024-05-15 | 2024-06-18 | DES1030 | 105d | 0d |
| ENV1030 |  | 30% Environmental Review | 15d | 2024-06-19 | 2024-07-09 | ENV1020 | 105d | 0d |
| ENV1040 |  | 60% Environmental Submittal | 35d | 2024-07-10 | 2024-08-27 | ENV1030, DES1080, DES1140 | 105d | 0d |
| ENV1050 |  | 60% Environmental Release | 15d | 2024-08-28 | 2024-09-17 | ENV1040 | 120d |  |
| ENV1060 |  | BIA NEPA Submittal | 10d | 2024-08-28 | 2024-09-10 | ENV1040 | 105d | 0d |
| ENV1070 |  | BIA Received (Add 250 days, if needed) | 20d | 2024-09-11 | 2024-10-08 | ENV1060 | 105d |  |
|  | 9 | **Bid and Award - Contracting** |  | 2024-05-29 | 2024-09-10 |  |  |  |
|  | 1 | **Civil Contractor** |  | 2024-07-10 | 2024-09-10 |  |  |  |
| PCON100 |  | Initiate Performance Partnering Process @ 60% | 5d | 2024-07-10 | 2024-07-16 | DES1080 | 125d | 0d |
| PCON110 |  | Receive Estimate from Contractor | 15d | 2024-07-17 | 2024-08-06 | PCON100 | 125d | 0d |
| PCON120 |  | Bid Estimate Negotiations | 10d | 2024-08-07 | 2024-08-20 | PCON110 | 125d | 0d |
| PCON130 |  | Revise Estimate based on IFC | 5d | 2024-08-21 | 2024-08-27 | PCON120 | 125d | 0d |
| PCON140 |  | Issue Release | 10d | 2024-08-28 | 2024-09-10 | PCON130 | 125d |  |
|  | 2 | **Electrical Contractor** |  | 2024-05-29 | 2024-07-30 |  |  |  |
| PCON150 |  | Initiate Performance Partnering Process @ 60% | 5d | 2024-05-29 | 2024-06-04 | DES1140 | 185d | 0d |
| PCON160 |  | Receive Estimate from Contractor | 15d | 2024-06-05 | 2024-06-25 | PCON150 | 185d | 0d |
| PCON170 |  | Bid Estimate Negotiations | 10d | 2024-06-26 | 2024-07-09 | PCON160 | 185d | 0d |
| PCON180 |  | Revise Estimate based on IFC | 5d | 2024-07-10 | 2024-07-16 | PCON170 | 185d | 0d |
| PCON190 |  | Issue Release | 10d | 2024-07-17 | 2024-07-30 | PCON180 | 185d | 155d |

| ID | WBS | Activity | Type | Duration | Start | Finish | Predecessors | Total float | Free float | Resources | Cost | Construction Start | Construction Finish | ISD Year | ISD |
| --- | --- | --- | --- | --- | --- | --- | --- | --- | --- | --- | --- | --- | --- | --- | --- |
|  | 10 | **Pre-Construction** |  |  | 2025-03-05 | 2025-03-11 |  |  |  |  |  |  |  |  |  |
| PCON200 |  | Civil Pre-Construction Meeting (Civil Construction Ready) |  | 5d | 2025-03-05 | 2025-03-11 | PCON140, PER1000, PER1010, PER1020, PRO1010, PRO1050, LAN1020, LAN1010, LAN1000, ENV1050, ENV1070, DES1120, PCON1000 FF | 0d |  |  |  |  |  |  |  |
| PCON210 |  | Electrical - Pre-Construction Meeting (Electical Construction Ready) |  | 5d | 2025-03-05 | 2025-03-11 | PCON190, PRO1030, PER1000, PER1010, PER1020, LAN1020, LAN1010, LAN1000, ENV1050, ENV1070, DES1180 | 30d | 0d |  |  |  |  |  |  |
|  | 11 | **Construction** |  |  | 2025-03-12 | 2027-05-20 |  |  |  |  |  |  |  |  |  |
| CON1000 |  | Construction Summary | level of effort | 572d | 2025-03-12 | 2027-05-20 | CON1010 SS, CON1020 FF | 0d |  | Project Surveyor [215 h]; Survey Project Manager [60 h]; Licensed Land Surveyor [48 h]; Survey Crew (2 FTE) [573 h]; Survey CADD Drafter [125 h]; Survey Admin [50 h]; Principal Surveyor [9 h]; Project Coordinator [67 h]; Project Manager III [92 h]; Project Manager I [35 h]; Project Manager II [23 h]; Document Controls Specialist II [4 h]; Civil Designer I [24 h]; Civil Designer II [132 h]; Civil Designer III [92 h]; Electrical Designer I [86 h]; Electrical Designer II [165 h]; Electrical Designer III [161 h]; Engineer I [98 h]; Engineer II [219 h]; Engineer III [99 h]; Engineer IV [75 h]; Drafter I [99 h]; Drafter II [104 h]; Senior Designer [226 h]; Senior Engineer [50 h]; Principal Engineer [5 h]; Principal Program Manager [33 h]; Senior Planner [11 h]; Project Biologist [340 h]; Biologist II [499 h]; Biologist III [210 h]; Senior Biologist [7 h]; Project Planner [11 h]; Project Archaeologist [48 h]; Archaeologist I [593 h]; Project Environmental Scientist [35 h]; Program Manager [167 h]; Designer III [47 h]; Native American Monitor [746 h]; Archaeologist II [439 h]; QSP [180 h]; Administrative Requirements [25 h]; Subsurface Investigation [25 h]; Excavation Fill [25 h]; Base Courses [25 h]; Rigid Paving [25 h]; Equipment Cost [25 h]; Material Cost [25]; Electric Work [25 h]; Inspector [3520 h] | 54,082,787.9 | 2025-02-27 | 2027-05-07 | 2026 |  |
| CON1010 |  | Construction Start | milestone | 0d | 2025-03-12 | 2025-03-12 | PCON200, PCON210 | 692d |  |  |  |  |  |  |  |
| ISD1000 |  | ISD - Energize - Put in service |  | 1d | 2026-11-18 | 2026-11-18 | CON2000, CON3000, CON4000, CON5000, CON6000 | 251d |  | Mileage [25 h] |  |  |  | 2026 | 2026-11-18 |
| CON1020 |  | Construction Complete | milestone | 0d | 2027-05-20 | 2027-05-20 | CON2000, CON3000, CON4000, CON5000, CON6000, CON7000 | 0d |  |  |  |  |  |  |  |
|  | 1 | **Civil Construction** |  |  | 2025-03-12 | 2026-11-17 |  |  |  |  |  |  |  |  |  |
| CON2000 |  | Civil Construction (Trenching 300 feet/day) |  | 440d | 2025-03-12 | 2026-11-17 | PCON200 | 0d |  | Civil Crew [3520 h]; Mob/Demob [40 h]; Mob/Demob [80 h]; Potholing Crew [48 h]; Supervision [3520 h] |  |  |  |  |  |
|  | 2 | **Electrical Construction** |  |  | 2025-04-23 | 2026-11-17 |  |  |  |  |  |  |  |  |  |
| CON3000 |  | Electrical Construction |  | 410d | 2025-04-23 | 2026-11-17 | PCON210, CON2000 SS+30d | 0d |  | Electric Crew [1640 h] |  |  |  |  |  |
|  | 3 | **Service Cutover** |  |  | 2025-06-25 | 2026-11-17 |  |  |  |  |  |  |  |  |  |
| CON4000 |  | Service Cutover |  | 365d | 2025-06-25 | 2026-11-17 | DES1210, CON3000 SS+45d | 132d | 0d |  |  |  |  |  |  |
|  | 4 | **SCADA** |  |  | 2026-08-19 | 2026-11-17 |  |  |  |  |  |  |  |  |  |
| CON5000 |  | Scada Construction |  | 65d | 2026-08-19 | 2026-11-17 | CON2000 FF, CON3000 FF, DES1230 | 132d | 0d |  |  |  |  |  |  |
|  | 5 | **Substation** |  |  | 2026-08-19 | 2026-11-17 |  |  |  |  |  |  |  |  |  |
| CON6000 |  | Substation Construction |  | 65d | 2026-08-19 | 2026-11-17 | CON2000 FF, CON3000 FF | 132d | 0d |  |  |  |  |  |  |
|  | 6 | **OH RFS** |  |  | 2026-11-18 | 2027-05-20 |  |  |  |  |  |  |  |  |  |
| CON7000 |  | Overhead RFS (1000 feet per day) |  | 132d | 2026-11-18 | 2027-05-20 | CON3000 | 0d |  | RFS Crew [1056 h] |  |  |  |  |  |
|  | 7 | **(New WBS)** |  |  |  |  |  |  |  |  |  |  |  |  |  |
|  | 12 | **Closeout** |  |  | 2027-05-21 | 2027-11-04 |  |  |  |  |  |  |  |  |  |
| CLO1000 |  | Close Out Summary | level of effort | 120d | 2027-05-21 | 2027-11-04 | CON1020, CLO1010 FF | 0d |  | Project Surveyor [108 h]; Survey Project Manager [30 h]; Licensed Land Surveyor [24 h]; Survey Crew (2 FTE) [286 h]; Survey CADD Drafter [63 h]; Survey Admin [25 h]; Principal Surveyor [5 h]; Project Biologist [195 h]; Biologist II [82 h]; Biologist III [99 h]; Senior Biologist [12 h]; Project Archaeologist [22 h]; Project Environmental Scientist [39 h]; Program Manager [183 h]; Designer III [5 h]; Project Manager II [23 h]; Document Controls Specialist II [4 h]; Project Coordinator [67 h]; Project Manager III [92 h]; Project Manager I [35 h]; Senior Designer [338 h]; Senior Engineer [76 h]; Civil Designer I [35 h]; Civil Designer II [198 h]; Civil Designer III [138 h]; Electrical Designer I [129 h]; Electrical Designer II [248 h]; Electrical Designer III [241 h]; Engineer I [146 h]; Engineer II [328 h]; Engineer III [149 h]; Engineer IV [113 h]; Drafter I [148 h]; Drafter II [155 h]; Principal Engineer [8 h]; Principal Program Manager [4 h]; Senior Planner [1 h]; Project Biologist [38 h]; Biologist II [55 h]; Biologist III [23 h]; Senior Biologist [1 h]; Project Planner [1 h]; Project Archaeologist [5 h]; Archaeologist II [49 h]; Archaeologist I [66 h]; Project Environmental Scientist [4 h]; Program Manager [19 h]; Native American Monitor [83 h]; Archaeologist III [37 h]; Archaeologist II [185 h]; QSP [20 h]; Principal Program Manager [37 h] | 592,373.39 |  |  | 2026 |  |
| CLO1010 |  | Project Complete | milestone | 0d | 2027-11-04 | 2027-11-04 | CLO1020, CLO1030 | 0d |  |  |  |  |  |  |  |

| ID | WBS | Activity | Duration | Start | Finish | Predecessors | Total float |
| --- | --- | --- | --- | --- | --- | --- | --- |
|  | 1 | **Technical** |  | 2027-05-21 | 2027-08-12 |  |  |
| CLO1020 |  | GIS/As-Built and Records Complete | 60d | 2027-05-21 | 2027-08-12 | CON1020 | 60d |
|  | 2 | **Accounting** |  | 2027-05-21 | 2027-11-04 |  |  |
| CLO1030 |  | PO's complete, Work Order Reconcilled and Closed | 120d | 2027-05-21 | 2027-11-04 | CON1020 | 0d |

# P05-1

Schedule from Primavera P6, 2023-08-14 to 2027-11-11, data date 2023-05-01, costs in USD.

## Calendars

- Corporate - Standard Full Time: Mon-Fri 08:00-16:00; Sat-Sun off. Exceptions (off unless hours are given): 2023-11-23 to 2023-11-24, 2023-12-22, 2023-12-25, 2024-01-01.

## Resources

| Resource | Group | Rate |
| --- | --- | --- |
| Civil Crew | labor |  |
| Mob/Demob | labor |  |
| Potholing Crew | labor |  |
| Supervision | labor |  |
| Electric Crew | labor |  |
| RFS Crew | labor |  |
| Mileage | equipment |  |
| Project Surveyor | labor | 135 |
| Survey Project Manager | labor | 160 |
| Licensed Land Surveyor | labor | 180 |
| Survey Crew (2 FTE) | labor | 230 |
| Survey CADD Drafter | labor | 115 |
| Survey Admin | labor | 75 |
| Principal Surveyor | labor | 195 |
| Project Manager II | labor | 162.74 |
| Document Controls Specialist II | labor | 75.08 |
| Project Manager III | labor | 179.08 |
| Project Coordinator | labor | 90 |
| Project Manager I | labor | 114.05 |
| Senior Designer | labor | 166.21 |
| Senior Engineer | labor | 174.18 |
| Civil Designer I | labor | 99 |
| Civil Designer II | labor | 118 |
| Civil Designer III | labor | 135 |
| Electrical Designer I | labor | 99 |
| Electrical Designer II | labor | 118 |
| Electrical Designer III | labor | 135 |
| Engineer I | labor | 114 |
| Engineer II | labor | 132 |
| Engineer III | labor | 152 |
| Engineer IV | labor | 170 |
| Drafter I | labor | 75 |
| Drafter II | labor | 92 |
| Principal Engineer | labor | 208.7 |
| Project Manager II | labor | 165.99 |
| Document Controls Specialist II | labor | 78.08 |
| Principal Program Manager | labor | 271.57 |
| Senior Planner | labor | 165.14 |
| Project Biologist | labor | 131.2 |
| Biologist II | labor | 78 |
| Biologist III | labor | 107.33 |
| Senior Biologist | labor | 157.43 |
| Project Planner | labor | 132.12 |
| Project Archaeologist | labor | 101 |
| Archaeologist I | labor | 66.06 |
| Project Environmental Scientist | labor | 108.77 |
| Program Manager | labor | 172.55 |
| Designer III | labor | 112.71 |
| Native American Monitor | labor | 70 |
| Archaeologist II | labor | 71.79 |
| QSP | labor | 120.79 |
| Administrative Requirements | labor | 204000 |
| Subsurface Investigation | labor | 10200 |
| Excavation Fill | labor | 680106 |
| Base Courses | labor | 80135 |
| Rigid Paving | labor | 35243 |
| Equipment Cost | equipment | 327000 |
| Material Cost | material | 623000 |
| Electric Work | labor | 152561 |
| Inspector | labor | 150 |
| Archaeologist III | labor | 89.16 |

## Schedule

| ID | WBS | Activity | Type | Duration | Start | Finish | Predecessors | Total float | Free float | Constraint | Resources | Cost | ISD Year |
| --- | --- | --- | --- | --- | --- | --- | --- | --- | --- | --- | --- | --- | --- |
| PCON1000 |  | Pre-Construction Summary | level of effort | 412d | 2023-08-14 | 2025-03-18 | SCO1000 SS | 0d |  |  |  |  | 2026 |
|  | 1 | **Scoping** |  |  | 2023-08-14 | 2023-09-05 |  |  |  |  |  |  |  |
| SCO1000 |  | Bundling / Phasing of circuits for project sequencing |  | 10d | 2023-08-14 | 2023-08-25 |  | 0d |  | start on or after 2023-08-14 |  |  |  |
| SCO1010 |  | Constructability Review |  | 5d | 2023-08-28 | 2023-09-01 | SCO1000 | 0d |  |  |  |  |  |
| SCO1020 |  | SDG&E Review |  | 2d | 2023-09-04 | 2023-09-05 | SCO1010 | 0d |  |  |  |  |  |
|  | 2 | **Planning** |  |  | 2023-09-06 | 2023-11-21 |  |  |  |  |  |  |  |
| PLA1000 |  | Workorder Setup |  | 5d | 2023-09-06 | 2023-09-12 | SCO1020 | 0d |  |  |  |  |  |
| SUR1000 |  | Survey and LiDAR |  | 50d | 2023-09-13 | 2023-11-21 | PLA1000 | 0d |  |  | Project Surveyor [1830 h]; Survey Project Manager [512 h]; Licensed Land Surveyor [405 h]; Survey Crew (2 FTE) [4867 h]; Survey CADD Drafter [1065 h]; Survey Admin [426 h]; Principal Surveyor [77 h] | 1,690,720 | 2026 |
|  | 3 | **Design** |  |  | 2023-11-22 | 2025-03-11 |  |  |  |  |  |  |  |
| DES1000 |  | Design Summary | level of effort | 335d | 2023-11-22 | 2025-03-11 | DES1040 SS | 512d | 0d |  | Project Manager II [420 h]; Document Controls Specialist II [70 h]; Project Manager III [1657 h]; Project Coordinator [1199 h]; Project Manager I [631 h]; Senior Designer [1692 h]; Senior Engineer [378 h]; Civil Designer I [177 h]; Civil Designer II [988 h]; Civil Designer III [692 h]; Electrical Designer I [645 h]; Electrical Designer II [1241 h]; Electrical Designer III [1207 h]; Engineer I [732 h]; Engineer II [1639 h]; Engineer III [744 h]; Engineer IV [565 h]; Drafter I [739 h]; Drafter II [777 h]; Principal Engineer [40 h] | 2,142,240.87 | 2026 |
|  | 6 | **Geotech, Seismic and Potholing** |  |  | 2024-01-24 | 2024-05-21 |  |  |  |  |  |  |  |
| DES1010 |  | Seismic / Geotech Submittal |  | 25d | 2024-01-24 | 2024-02-27 | ENV1010 | 110d | 0d |  |  |  |  |
| DES1020 |  | Potholing Submittal |  | 25d | 2024-02-28 | 2024-04-02 | DES1010 | 110d | 5d |  |  |  |  |
| DES1030 |  | Potholing Release /Perform Potholing |  | 30d | 2024-04-10 | 2024-05-21 | DES1020, DES1130 FF | 105d | 0d |  |  |  |  |
|  | 1 | **Civil Design** |  |  | 2023-11-22 | 2025-03-11 |  |  |  |  |  |  |  |
| DES1040 |  | 10% Submittal |  | 25d | 2023-11-22 | 2024-01-02 | SUR1000 | 0d |  |  |  |  |  |
| DES1050 |  | 30% Submittal |  | 50d | 2024-01-03 | 2024-03-12 | DES1040 | 0d |  |  |  |  |  |
| DES1060 |  | 30% Review |  | 10d | 2024-03-13 | 2024-03-26 | DES1050 | 0d |  |  |  |  |  |
| DES1070 |  | 60% Submittal |  | 70d | 2024-03-27 | 2024-07-02 | DES1060, DES1200, DES1030 FF | 75d | 0d |  |  |  |  |
| DES1080 |  | 60% Review |  | 10d | 2024-07-03 | 2024-07-16 | DES1070 | 75d | 0d |  |  |  |  |
| DES1090 |  | 90% Submittal |  | 45d | 2024-07-17 | 2024-09-17 | DES1080 | 75d | 0d |  |  |  |  |
| DES1100 |  | 90% Review |  | 10d | 2024-09-18 | 2024-10-01 | DES1090 | 75d | 0d |  |  |  |  |
| DES1110 |  | 100% Submittal |  | 20d | 2024-10-02 | 2024-10-29 | DES1100 | 85d | 0d |  |  |  |  |
| DES1120 |  | Issue IFC Design Package |  | 10d | 2025-02-26 | 2025-03-11 | DES1110, DES1000 FF, PER1000 FF, PER1010 FF, PER1020 FF | 0d |  |  |  |  |  |

| ID | WBS | Activity | Duration | Start | Finish | Predecessors | Total float | Free float |
| --- | --- | --- | --- | --- | --- | --- | --- | --- |
|  | 2 | **Electrical Design** |  | 2024-02-28 | 2025-03-11 |  |  |  |
| DES1130 |  | 60% Submittal | 60d | 2024-02-28 | 2024-05-21 | DES1200 | 105d | 0d |
| DES1140 |  | 60% Review | 10d | 2024-05-22 | 2024-06-04 | DES1130 | 115d | 0d |
| DES1150 |  | 90% Submittal | 50d | 2024-06-05 | 2024-08-13 | DES1140 | 140d | 0d |
| DES1160 |  | 90% Review | 10d | 2024-08-14 | 2024-08-27 | DES1150 | 140d | 0d |
| DES1170 |  | 100% Submittal | 20d | 2024-08-28 | 2024-09-24 | DES1160 | 140d | 110d |
| DES1180 |  | Issue IFC Design Package | 10d | 2025-02-26 | 2025-03-11 | DES1170, DES1000 FF, PER1000 FF, PER1010 FF, PER1020 FF | 30d | 0d |
|  | 3 | **Service Cutover Design** |  | 2024-01-03 | 2024-11-12 |  |  |  |
| DES1190 |  | Issue Services Worksheet to Design Firms | 20d | 2024-01-03 | 2024-01-30 | DES1040 | 95d | 0d |
| DES1200 |  | Receive Services Worksheet and Cable Info from Design Firms | 20d | 2024-01-31 | 2024-02-27 | DES1190 | 95d | 0d |
| DES1210 |  | Issue to Trench Inspectors | 10d | 2024-10-30 | 2024-11-12 | DES1200, DES1110, DES1000 FF | 297d | 165d |
|  | 4 | **Substation Engineering Design** |  | 2023-11-22 | 2024-02-06 |  |  |  |
| DES1220 |  | SED Design | 30d | 2023-11-22 | 2024-01-09 | SUR1000 | 797d | 0d |
| DES1230 |  | Issue IFC Design Package | 20d | 2024-01-10 | 2024-02-06 | DES1220, DES1000 FF | 797d | 665d |
|  | 5 | **Remove from Service (Existing OH) Design** |  |  |  |  |  |  |
|  | 4 | **Procurement** |  | 2024-03-27 | 2024-11-26 |  |  |  |
| PRO1000 |  | Civil BOM - Long Lead @ 30% | 15d | 2024-03-27 | 2024-04-16 | DES1060 | 85d | 0d |
| PRO1010 |  | Order Long Lead Civil Material | 150d | 2024-04-17 | 2024-11-12 | PRO1000 | 85d |  |
| PRO1020 |  | Electrical BOM - Long Lead @ 60% | 15d | 2024-06-05 | 2024-06-25 | DES1140 | 115d | 0d |
| PRO1030 |  | Order Long Lead Electrical Materials | 100d | 2024-06-26 | 2024-11-12 | PRO1020 | 115d | 85d |
| PRO1040 |  | BOM - Short Lead @ 60% | 15d | 2024-10-02 | 2024-10-22 | DES1100 | 75d | 0d |
| PRO1050 |  | Order Short Lead Materials | 25d | 2024-10-23 | 2024-11-26 | PRO1040 | 75d |  |
|  | 5 | **Permitting** |  | 2024-03-27 | 2025-03-11 |  |  |  |
| PER1000 |  | CalTrans Permit | 250d | 2024-03-27 | 2025-03-11 | DES1060 | 0d |  |
| PER1010 |  | City & County Permits | 100d | 2024-03-27 | 2024-08-13 | DES1060 | 150d |  |
| PER1020 |  | Other Permit (TBD) | 100d | 2024-03-27 | 2024-08-13 | DES1060 | 150d |  |

| ID | WBS | Activity | Duration | Start | Finish | Predecessors | Total float | Free float |
| --- | --- | --- | --- | --- | --- | --- | --- | --- |
|  | 6 | **Public Affairs** |  | 2024-07-03 | 2024-11-19 |  |  |  |
| PUB1000 |  | Public Affairs / Community Outreach | 100d | 2024-07-03 | 2024-11-19 | DES1070 | 777d |  |
|  | 7 | **Land Services** |  | 2024-03-13 | 2024-10-08 |  |  |  |
| LAN1000 |  | Land Rights and Easement Acquisition | 150d | 2024-03-13 | 2024-10-08 | DES1050 | 110d |  |
| LAN1010 |  | Tribal Land Rights | 150d | 2024-03-13 | 2024-10-08 | DES1050 | 110d |  |
| LAN1020 |  | Laydown Yards | 150d | 2024-03-13 | 2024-10-08 | DES1050 | 110d |  |
|  | 8 | **Environmental** |  | 2023-11-22 | 2024-10-15 |  |  |  |
| ENV1000 |  | 10% Environmental Submittal | 25d | 2023-11-22 | 2024-01-02 | SUR1000 | 110d | 0d |
| ENV1010 |  | 10% Environmental Review | 15d | 2024-01-03 | 2024-01-23 | ENV1000 | 110d | 0d |
| ENV1020 |  | 30% Environmental Submittal | 25d | 2024-05-22 | 2024-06-25 | DES1030 | 105d | 0d |
| ENV1030 |  | 30% Environmental Review | 15d | 2024-06-26 | 2024-07-16 | ENV1020 | 105d | 0d |
| ENV1040 |  | 60% Environmental Submittal | 35d | 2024-07-17 | 2024-09-03 | ENV1030, DES1080, DES1140 | 105d | 0d |
| ENV1050 |  | 60% Environmental Release | 15d | 2024-09-04 | 2024-09-24 | ENV1040 | 120d |  |
| ENV1060 |  | BIA NEPA Submittal | 10d | 2024-09-04 | 2024-09-17 | ENV1040 | 105d | 0d |
| ENV1070 |  | BIA Received (Add 250 days, if needed) | 20d | 2024-09-18 | 2024-10-15 | ENV1060 | 105d |  |
|  | 9 | **Bid and Award - Contracting** |  | 2024-06-05 | 2024-09-17 |  |  |  |
|  | 1 | **Civil Contractor** |  | 2024-07-17 | 2024-09-17 |  |  |  |
| PCON100 |  | Initiate Performance Partnering Process @ 60% | 5d | 2024-07-17 | 2024-07-23 | DES1080 | 125d | 0d |
| PCON110 |  | Receive Estimate from Contractor | 15d | 2024-07-24 | 2024-08-13 | PCON100 | 125d | 0d |
| PCON120 |  | Bid Estimate Negotiations | 10d | 2024-08-14 | 2024-08-27 | PCON110 | 125d | 0d |
| PCON130 |  | Revise Estimate based on IFC | 5d | 2024-08-28 | 2024-09-03 | PCON120 | 125d | 0d |
| PCON140 |  | Issue Release | 10d | 2024-09-04 | 2024-09-17 | PCON130 | 125d |  |
|  | 2 | **Electrical Contractor** |  | 2024-06-05 | 2024-08-06 |  |  |  |
| PCON150 |  | Initiate Performance Partnering Process @ 60% | 5d | 2024-06-05 | 2024-06-11 | DES1140 | 185d | 0d |
| PCON160 |  | Receive Estimate from Contractor | 15d | 2024-06-12 | 2024-07-02 | PCON150 | 185d | 0d |
| PCON170 |  | Bid Estimate Negotiations | 10d | 2024-07-03 | 2024-07-16 | PCON160 | 185d | 0d |
| PCON180 |  | Revise Estimate based on IFC | 5d | 2024-07-17 | 2024-07-23 | PCON170 | 185d | 0d |
| PCON190 |  | Issue Release | 10d | 2024-07-24 | 2024-08-06 | PCON180 | 185d | 155d |

| ID | WBS | Activity | Type | Duration | Start | Finish | Predecessors | Total float | Free float | Resources | Cost | Construction Start | Construction Finish | ISD Year | ISD |
| --- | --- | --- | --- | --- | --- | --- | --- | --- | --- | --- | --- | --- | --- | --- | --- |
|  | 10 | **Pre-Construction** |  |  | 2025-03-12 | 2025-03-18 |  |  |  |  |  |  |  |  |  |
| PCON200 |  | Civil Pre-Construction Meeting (Civil Construction Ready) |  | 5d | 2025-03-12 | 2025-03-18 | PCON140, PER1000, PER1010, PER1020, PRO1010, PRO1050, LAN1020, LAN1010, LAN1000, ENV1050, ENV1070, DES1120, PCON1000 FF | 0d |  |  |  |  |  |  |  |
| PCON210 |  | Electrical - Pre-Construction Meeting (Electical Construction Ready) |  | 5d | 2025-03-12 | 2025-03-18 | PCON190, PRO1030, PER1000, PER1010, PER1020, LAN1020, LAN1010, LAN1000, ENV1050, ENV1070, DES1180 | 30d | 0d |  |  |  |  |  |  |
|  | 11 | **Construction** |  |  | 2025-03-19 | 2027-05-27 |  |  |  |  |  |  |  |  |  |
| CON1000 |  | Construction Summary | level of effort | 572d | 2025-03-19 | 2027-05-27 | CON1010 SS, CON1020 FF | 0d |  | Project Surveyor [215 h]; Survey Project Manager [60 h]; Licensed Land Surveyor [48 h]; Survey Crew (2 FTE) [573 h]; Survey CADD Drafter [125 h]; Survey Admin [50 h]; Principal Surveyor [9 h]; Project Coordinator [67 h]; Project Manager III [92 h]; Project Manager I [35 h]; Project Manager II [23 h]; Document Controls Specialist II [4 h]; Civil Designer I [24 h]; Civil Designer II [132 h]; Civil Designer III [92 h]; Electrical Designer I [86 h]; Electrical Designer II [165 h]; Electrical Designer III [161 h]; Engineer I [98 h]; Engineer II [219 h]; Engineer III [99 h]; Engineer IV [75 h]; Drafter I [99 h]; Drafter II [104 h]; Senior Designer [226 h]; Senior Engineer [50 h]; Principal Engineer [5 h]; Principal Program Manager [33 h]; Senior Planner [11 h]; Project Biologist [340 h]; Biologist II [499 h]; Biologist III [210 h]; Senior Biologist [7 h]; Project Planner [11 h]; Project Archaeologist [48 h]; Archaeologist I [593 h]; Project Environmental Scientist [35 h]; Program Manager [167 h]; Designer III [47 h]; Native American Monitor [746 h]; Archaeologist II [439 h]; QSP [180 h]; Administrative Requirements [25 h]; Subsurface Investigation [25 h]; Excavation Fill [25 h]; Base Courses [25 h]; Rigid Paving [25 h]; Equipment Cost [25 h]; Material Cost [25]; Electric Work [25 h]; Inspector [3520 h] | 54,082,787.9 | 2025-03-12 | 2027-05-20 | 2026 |  |
| CON1010 |  | Construction Start | milestone | 0d | 2025-03-19 | 2025-03-19 | PCON200, PCON210 | 692d |  |  |  |  |  |  |  |
| ISD1000 |  | ISD - Energize - Put in service |  | 1d | 2026-11-25 | 2026-11-25 | CON2000, CON3000, CON4000, CON5000, CON6000 | 251d |  | Mileage [25 h] |  |  |  | 2026 | 2026-11-25 |
| CON1020 |  | Construction Complete | milestone | 0d | 2027-05-27 | 2027-05-27 | CON2000, CON3000, CON4000, CON5000, CON6000, CON7000 | 0d |  |  |  |  |  |  |  |
|  | 1 | **Civil Construction** |  |  | 2025-03-19 | 2026-11-24 |  |  |  |  |  |  |  |  |  |
| CON2000 |  | Civil Construction (Trenching 300 feet/day) |  | 440d | 2025-03-19 | 2026-11-24 | PCON200 | 0d |  | Civil Crew [7040 h]; Mob/Demob [40 h]; Mob/Demob [80 h]; Potholing Crew [48 h]; Supervision [7040 h] |  |  |  |  |  |
|  | 2 | **Electrical Construction** |  |  | 2025-04-30 | 2026-11-24 |  |  |  |  |  |  |  |  |  |
| CON3000 |  | Electrical Construction |  | 410d | 2025-04-30 | 2026-11-24 | PCON210, CON2000 SS+30d | 0d |  | Electric Crew [1640 h] |  |  |  |  |  |
|  | 3 | **Service Cutover** |  |  | 2025-07-02 | 2026-11-24 |  |  |  |  |  |  |  |  |  |
| CON4000 |  | Service Cutover |  | 365d | 2025-07-02 | 2026-11-24 | DES1210, CON3000 SS+45d | 132d | 0d |  |  |  |  |  |  |
|  | 4 | **SCADA** |  |  | 2026-08-26 | 2026-11-24 |  |  |  |  |  |  |  |  |  |
| CON5000 |  | Scada Construction |  | 65d | 2026-08-26 | 2026-11-24 | CON2000 FF, CON3000 FF, DES1230 | 132d | 0d |  |  |  |  |  |  |
|  | 5 | **Substation** |  |  | 2026-08-26 | 2026-11-24 |  |  |  |  |  |  |  |  |  |
| CON6000 |  | Substation Construction |  | 65d | 2026-08-26 | 2026-11-24 | CON2000 FF, CON3000 FF | 132d | 0d |  |  |  |  |  |  |
|  | 6 | **OH RFS** |  |  | 2026-11-25 | 2027-05-27 |  |  |  |  |  |  |  |  |  |
| CON7000 |  | Overhead RFS (1000 feet per day) |  | 132d | 2026-11-25 | 2027-05-27 | CON3000 | 0d |  | RFS Crew [1056 h] |  |  |  |  |  |
|  | 7 | **(New WBS)** |  |  |  |  |  |  |  |  |  |  |  |  |  |
|  | 12 | **Closeout** |  |  | 2027-05-28 | 2027-11-11 |  |  |  |  |  |  |  |  |  |
| CLO1000 |  | Close Out Summary | level of effort | 120d | 2027-05-28 | 2027-11-11 | CON1020, CLO1010 FF | 0d |  | Project Surveyor [108 h]; Survey Project Manager [30 h]; Licensed Land Surveyor [24 h]; Survey Crew (2 FTE) [286 h]; Survey CADD Drafter [63 h]; Survey Admin [25 h]; Principal Surveyor [5 h]; Project Biologist [195 h]; Biologist II [82 h]; Biologist III [99 h]; Senior Biologist [12 h]; Project Archaeologist [22 h]; Project Environmental Scientist [39 h]; Program Manager [183 h]; Designer III [5 h]; Project Manager II [23 h]; Document Controls Specialist II [4 h]; Project Coordinator [67 h]; Project Manager III [92 h]; Project Manager I [35 h]; Senior Designer [338 h]; Senior Engineer [76 h]; Civil Designer I [35 h]; Civil Designer II [198 h]; Civil Designer III [138 h]; Electrical Designer I [129 h]; Electrical Designer II [248 h]; Electrical Designer III [241 h]; Engineer I [146 h]; Engineer II [328 h]; Engineer III [149 h]; Engineer IV [113 h]; Drafter I [148 h]; Drafter II [155 h]; Principal Engineer [8 h]; Principal Program Manager [4 h]; Senior Planner [1 h]; Project Biologist [38 h]; Biologist II [55 h]; Biologist III [23 h]; Senior Biologist [1 h]; Project Planner [1 h]; Project Archaeologist [5 h]; Archaeologist II [49 h]; Archaeologist I [66 h]; Project Environmental Scientist [4 h]; Program Manager [19 h]; Native American Monitor [83 h]; Archaeologist III [37 h]; Archaeologist II [185 h]; QSP [20 h]; Principal Program Manager [37 h] | 592,373.39 |  |  | 2026 |  |
| CLO1010 |  | Project Complete | milestone | 0d | 2027-11-11 | 2027-11-11 | CLO1020, CLO1030 | 0d |  |  |  |  |  |  |  |

| ID | WBS | Activity | Duration | Start | Finish | Predecessors | Total float |
| --- | --- | --- | --- | --- | --- | --- | --- |
|  | 1 | **Technical** |  | 2027-05-28 | 2027-08-19 |  |  |
| CLO1020 |  | GIS/As-Built and Records Complete | 60d | 2027-05-28 | 2027-08-19 | CON1020 | 60d |
|  | 2 | **Accounting** |  | 2027-05-28 | 2027-11-11 |  |  |
| CLO1030 |  | PO's complete, Work Order Reconcilled and Closed | 120d | 2027-05-28 | 2027-11-11 | CON1020 | 0d |
